# CART Template 06102015 RT

Schedule from MS Project, 2014-09-19 to 2018-04-01.

## Calendars

- Standard: Mon-Fri 08:00-12:00, 13:00-17:00; Sat-Sun off.

## Resources

| Resource |
| --- |
| David Mael |
| R. Alhadeff/M. Carbone |
| J. Smith/T. Ploetz |
| M. Murphy |
| D. Fabrizio |
| L. Madariaga |
| R. Leal |
| L. Diaz |
| Carreras/Cupril |
| L. Roig |
| W. Gonzalez |
| C. Melendez |
| M. Irurita |
| J. Caceres |
| R. Bonilla |
| A. Guzman |
| J. Villamil |
| M. Guiven |
| Diaz/Semidei |
| J. Jurado |
| Cardona/Ramirez |
| G. Cupril |
| E. Rodriguez |
| M. Bobonis |
| Castro/Bruno |
| Valdenbro/Moll/Alvarez |
| F. Gonzales-Rivera |
| M. Mancini |
| E. Franco-Espinosa |
| R. Bucaro |
| J. Villamil-Morel |
| P. Prado |
| F. Rivera |
| M. Galigarcia |
| R. Fahs |
| Rivera/Fernandez |
| D. Mael |
| A. de Castro |
| K. Martelon |
| S. Bhatti |
| J. Christie |
| C. Hunley |
| M. Lasso |
| R. Ballou |
| TBD |
| M. Tedesco |
| C. Letters |
| F. Papa |
| J. Murphy |
| M. Lee |
| W. Brundige |
| L. O'Hara |
| L. VanRoekel |
| D. Chaos |
| M. Ballenger |
| R. Alhadeff |
| D. Spector |
| M. Lima |
| C. Roberts |
| L. Fairweather |
| J. McClernan |
| M. Carbone |
| Grubb/Martin |
| G. Schmelzel |
| M. Whatley |
| J. Kulas |
| J. Fugitt |
| E. Burns |
| T. Ploetz |
| A. Chawla |
| C. Hicks |
| M. Rodgers |
| N. Rihman |
| M. Souza |
| S. Lew |
| J. Minuesa |
| I. Prada |
| J. Gomez |
| S. Fernandez |
| F. Sempere |
| J. Davila |
| J. Bathon |
| R. Waltz-Cuccioli |
| A. Schwartz |
| W. Delaney |
| J. Galan |

## Schedule

| ID | WBS | Task | Type | Duration | Start | Finish | Total slack | Constraint | Work | Tracking Status | Entity |
| --- | --- | --- | --- | --- | --- | --- | --- | --- | --- | --- | --- |
| 1 | 1 | **Capital and Risk Transformation SHUSA** |  | 921d? | 2014-09-19 | 2018-04-01 | 0d |  | 11488h |  |  |
| 2 | 1.1 | **Risk Transformation** |  | 921d? | 2014-09-19 | 2018-04-01 | 0d |  | 11488h |  |  |
| 3 | 1.1.1 | **Risk Appetite Statement(RAS)** |  | 740d? | 2015-06-01 | 2018-04-01 | 0d |  |  |  |  |
| 4 | 1.1.1.1 | **List of Deliverables for Sub Work-Stream** |  | 0d | 2015-12-31 | 2015-12-31 | 586d |  |  |  |  |
| 5 | 1.1.1.1.1 | example deliverable (linked to the detail below) | milestone | 0d | 2015-12-31 | 2015-12-31 | 586d | finish no earlier than 2015-12-31 |  | Late |  |
| 6 | 1.1.1.2 | **Re-designed SHUSA RAS framework** |  | 105d | 2015-06-08 | 2015-10-30 | 0d |  |  |  |  |
| 7 | 1.1.1.2.1 | **SHUSA-level RAS** |  | 60d | 2015-06-08 | 2015-08-28 | 0d |  |  |  |  |
| 8 | 1.1.1.2.1.1 | **Finalize project plan and communicate to CART stakeholders** |  | 10d | 2015-06-08 | 2015-06-19 | 1d |  |  |  |  |
| 9 | 1.1.1.2.1.1.1 | Finalize CART plan at task-level |  | 1d | 2015-06-08 | 2015-06-08 | 734d | finish no earlier than 2015-06-08 |  | Late | ܁ࢹ |
| 10 | 1.1.1.2.1.1.2 | Socialize plan with key stakeholders (SHUSA) |  | 9d | 2015-06-09 | 2015-06-19 | 725d | finish no earlier than 2015-06-19 |  | Late | ܁ࢹ |
| 11 | 1.1.1.2.1.1.3 | Socialize plan with key stakeholders (SBNA) | manual | 9d | 2015-06-09 | 2015-06-19 |  |  |  | Late | ܁ࢺ |
| 12 | 1.1.1.2.1.1.4 | Socialize plan with key stakeholders (SCUSA) | manual | 9d | 2015-06-09 | 2015-06-19 |  |  |  | Late | ܁ࢻ |
| 13 | 1.1.1.2.1.1.5 | Communicate plan to CART stakeholders |  | 5d | 2015-06-15 | 2015-06-19 | 725d | finish no earlier than 2015-06-19 |  | Late | ܁ࢹ |
| 14 | 1.1.1.2.1.1.6 | Plan submitted to CART / Leadership Committee | milestone | 0d | 2015-06-19 | 2015-06-19 | 725d | finish no earlier than 2015-06-19 |  | Late |  |
| 15 | 1.1.1.2.1.2 | **Define guidelines and approach for choosing metrics and setting limits** |  | 15d | 2015-06-08 | 2015-06-26 | 5d |  |  |  |  |
| 16 | 1.1.1.2.1.2.1 | Draft guidelines and approach for metrics and limits (no Finance metrics, risk profile, risk appetite, stressed metrics) |  | 5d | 2015-06-08 | 2015-06-12 | 730d | finish no earlier than 2015-06-12 |  | Late | ܁ࢹ |
| 17 | 1.1.1.2.1.2.2 | Socialize Risk Appetite guidelines to stakeholders (SHUSA) |  | 5d | 2015-06-15 | 2015-06-19 | 725d | finish no earlier than 2015-06-19 |  | Late | ܁ࢹ |
| 18 | 1.1.1.2.1.2.3 | Socialize plan with key stakeholders (SBNA) | manual | 5d | 2015-06-15 | 2015-06-19 |  |  |  | Late | ܁ࢺ |
| 19 | 1.1.1.2.1.2.4 | Socialize plan with key stakeholders (SCUSA) | manual | 5d | 2015-06-15 | 2015-06-19 |  |  |  | Late | ܁ࢻ |
| 20 | 1.1.1.2.1.2.5 | Update guidelines per stakeholder feedback |  | 5d | 2015-06-22 | 2015-06-26 | 720d | finish no earlier than 2015-06-26 |  | Late | ܁ࢹ |
| 21 | 1.1.1.2.1.2.6 | Finalized guidelines and approach for choosing metrics and setting limits | milestone | 0d | 2015-06-26 | 2015-06-26 | 720d | finish no earlier than 2015-06-26 |  | Late |  |
| 22 | 1.1.1.2.1.3 | **Articulate enterprise-wide core values, RAS principles and major risk categories** |  | 15d | 2015-06-08 | 2015-06-26 | 5d |  |  |  |  |
| 23 | 1.1.1.2.1.3.1 | Draft of enterprise-wide core values, RAS principles and major risk categories (e.g. credit) |  | 5d | 2015-06-08 | 2015-06-12 | 730d | finish no earlier than 2015-06-12 |  | Late | ܁ࢹ |
| 24 | 1.1.1.2.1.3.2 | Socialize Risk Appetite philosophy to stakeholders (SHUSA) |  | 5d | 2015-06-15 | 2015-06-19 | 725d | finish no earlier than 2015-06-19 |  | Late | ܁ࢹ |
| 25 | 1.1.1.2.1.3.3 | Socialize Risk Appetite philosophy to stakeholders (SBNA) | manual | 5d | 2015-06-15 | 2015-06-19 |  |  |  | Late | ܁ࢺ |
| 26 | 1.1.1.2.1.3.4 | Socialize Risk Appetite philosophy to stakeholders (SCUSA) | manual | 5d | 2015-06-15 | 2015-06-19 |  |  |  | Late | ܁ࢻ |
| 27 | 1.1.1.2.1.3.5 | Update values, principles and risk categories per stakeholder feedback |  | 5d | 2015-06-22 | 2015-06-26 | 720d | finish no earlier than 2015-06-26 |  | Late | ܁ࢹ |
| 28 | 1.1.1.2.1.3.6 | Finalized enterprise-wide RAS philosophy and major risk categories | milestone | 0d | 2015-06-26 | 2015-06-26 | 720d | finish no earlier than 2015-06-26 |  | Late |  |

| ID | WBS | Task | Type | Duration | Start | Finish | Total slack | Constraint | Entity | Tracking Status | Dependency |
| --- | --- | --- | --- | --- | --- | --- | --- | --- | --- | --- | --- |
| 29 | 1.1.1.2.1.4 | **Detail material risks and constraints for enterprise** |  | 15d | 2015-06-08 | 2015-06-26 | 0d |  |  |  |  |
| 30 | 1.1.1.2.1.4.1 | Identify and document material risks for enterprise, including input from stakeholders (SHUSA) |  | 5d | 2015-06-08 | 2015-06-12 | 730d | finish no earlier than 2015-06-12 | ܁ࢹ | Late |  |
| 31 | 1.1.1.2.1.4.2 | Identify and document material risks for enterprise, including input from stakeholders (SBNA) | manual | 5d | 2015-06-08 | 2015-06-12 |  |  | ܁ࢺ | Late |  |
| 32 | 1.1.1.2.1.4.3 | Identify and document material risks for enterprise, including input from stakeholders (SCUSA) | manual | 5d | 2015-06-08 | 2015-06-12 |  |  | ܁ࢻ | Late |  |
| 33 | 1.1.1.2.1.4.4 | Identify and document constraints from regulators and other stakeholders (i.e. ratings agencies) |  | 5d | 2015-06-15 | 2015-06-19 | 725d | finish no earlier than 2015-06-19 | ܁ࢹ | Late |  |
| 34 | 1.1.1.2.1.4.5 | Consolidate all requirements from Group, including updated corporate metrics (recalculated with April numbers) |  | 5d | 2015-06-15 | 2015-06-19 | 725d | finish no earlier than 2015-06-19 | ܁ࢹ | Late |  |
| 35 | 1.1.1.2.1.4.6 | Document owners and rationale for all corporate metrics |  | 5d | 2015-06-15 | 2015-06-19 | 725d | finish no earlier than 2015-06-19 | ܁ࢹ | Late |  |
| 36 | 1.1.1.2.1.4.7 | Facilitate review and challenge session for list of material risks with key stakeholders (SHUSA) |  | 3d | 2015-06-22 | 2015-06-24 | 722d | finish no earlier than 2015-06-24 | ܁ࢹ | Late |  |
| 37 | 1.1.1.2.1.4.8 | Facilitate review and challenge session for list of material risks with key stakeholders (SBNA) | manual | 3d | 2015-06-22 | 2015-06-24 |  |  | ܁ࢺ | Late |  |
| 38 | 1.1.1.2.1.4.9 | Facilitate review and challenge session for list of material risks with key stakeholders (SCUSA) | manual | 3d | 2015-06-22 | 2015-06-24 |  |  | ܁ࢻ | Late |  |
| 39 | 1.1.1.2.1.4.10 | Update documentation of material risks and constraints, given stakeholder input |  | 3d | 2015-06-24 | 2015-06-26 | 720d | finish no earlier than 2015-06-26 | ܁ࢹ | Late |  |
| 40 | 1.1.1.2.1.4.11 | Finalized documentation of material risks and constraints for enterprise | milestone | 0d | 2015-06-26 | 2015-06-26 | 720d | finish no earlier than 2015-06-26 |  | Late |  |
| 41 | 1.1.1.2.1.5 | **For each risk, determine a qualitative risk appetite statement** |  | 25d | 2015-06-08 | 2015-07-10 | 20d |  |  |  |  |
| 42 | 1.1.1.2.1.5.1 | Draft a qualitative risk appetite statement for all risks detailed in documentation of material risks for enterprise, considering documented constraints |  | 20d | 2015-06-08 | 2015-07-03 | 715d | finish no earlier than 2015-07-03 | ܁ࢹ | Late |  |
| 43 | 1.1.1.2.1.5.2 | Socialize SHUSA-level qualitative statements with stakeholders (SHUSA) |  | 5d | 2015-07-06 | 2015-07-10 | 710d | finish no earlier than 2015-07-10 | ܁ࢹ | Late |  |
| 44 | 1.1.1.2.1.5.3 | Socialize SHUSA-level qualitative statements with stakeholders (SBNA) | manual | 5d | 2015-07-06 | 2015-07-10 |  |  | ܁ࢺ | Late |  |
| 45 | 1.1.1.2.1.5.4 | Socialize SHUSA-level qualitative statements with stakeholders (SCUSA) | manual | 5d | 2015-07-06 | 2015-07-10 |  |  | ܁ࢻ | Late |  |
| 46 | 1.1.1.2.1.5.5 | Finalized qualitative risk appetite statements for material risks | milestone | 0d | 2015-07-10 | 2015-07-10 | 710d | finish no earlier than 2015-07-10 |  | Late |  |
| 47 | 1.1.1.2.1.6 | **For quantifiable statements, identify key metrics and calibrate limits** |  | 45d | 2015-06-15 | 2015-08-14 | 1d |  |  |  |  |
| 48 | 1.1.1.2.1.6.1 | Finalize list of proposed SHUSA metrics |  | 1d | 2015-06-15 | 2015-06-15 | 729d | finish no earlier than 2015-06-15 | ܁ࢹ | Late |  |
| 49 | 1.1.1.2.1.6.2 | Facilitate review and challenge session for proposed metrics, limits and thresholds with key stakeholders (SHUSA) |  | 1d | 2015-06-16 | 2015-06-16 | 728d | finish no earlier than 2015-06-16 | ܁ࢹ | Late |  |
| 50 | 1.1.1.2.1.6.3 | Facilitate review and challenge session for proposed metrics, limits and thresholds with key stakeholders (SBNA) | manual | 1d | 2015-06-16 | 2015-06-16 |  |  | ܁ࢺ | Late |  |
| 51 | 1.1.1.2.1.6.4 | Facilitate review and challenge session for proposed metrics, limits and thresholds with key stakeholders (SCUSA) | manual | 1d | 2015-06-16 | 2015-06-16 |  |  | ܁ࢻ | Late |  |
| 52 | 1.1.1.2.1.6.5 | Update list of SHUSA metrics, given stakeholder input, and identify and document owners for each metric |  | 3d | 2015-06-17 | 2015-06-19 | 725d | finish no earlier than 2015-06-19 | ܁ࢹ | Late |  |
| 53 | 1.1.1.2.1.6.6 | Detail limits and thresholds for list of SHUSA metrics |  | 5d | 2015-06-22 | 2015-06-26 | 720d | finish no earlier than 2015-06-26 | ܁ࢹ | Late |  |
| 54 | 1.1.1.2.1.6.7 | Calibrate limits based on analysis of historical data, industry benchmarking, etc. |  | 30d | 2015-06-29 | 2015-08-07 | 690d | finish no earlier than 2015-08-07 | ܁ࢹ | Late |  |
| 55 | 1.1.1.2.1.6.8 | Document rationale for SHUSA metrics |  | 5d | 2015-07-13 | 2015-07-17 | 705d | finish no earlier than 2015-07-17 | ܁ࢹ | Late |  |
| 56 | 1.1.1.2.1.6.9 | Document IT requirements for SHUSA metrics |  | 15d | 2015-07-13 | 2015-07-31 | 695d | finish no earlier than 2015-07-31 | ܁ࢹ | Late | ܁д |
| 57 | 1.1.1.2.1.6.10 | Consolidate metrics, limits and thresholds into quantifiable statements for material risks |  | 3d | 2015-08-10 | 2015-08-12 | 687d | finish no earlier than 2015-08-12 | ܁ࢹ | Late |  |
| 58 | 1.1.1.2.1.6.11 | Socialize quantitative statements with stakeholders (SHUSA) |  | 2d | 2015-08-13 | 2015-08-14 | 685d | finish no earlier than 2015-08-14 | ܁ࢹ | Late |  |
| 59 | 1.1.1.2.1.6.12 | Socialize quantitative statements with stakeholders (SBNA) | manual | 2d | 2015-08-13 | 2015-08-14 |  |  | ܁ࢺ | Late |  |
| 60 | 1.1.1.2.1.6.13 | Socialize quantitative statements with stakeholders (SCUSA) | manual | 2d | 2015-08-13 | 2015-08-14 |  |  | ܁ࢻ | Late |  |
| 61 | 1.1.1.2.1.6.14 | Finalized quantitative risk appetite statements for material risks | milestone | 0d | 2015-08-14 | 2015-08-14 | 685d | finish no earlier than 2015-08-14 |  | Late |  |

Notes:
- 56: Technology

| ID | WBS | Task | Type | Duration | Start | Finish | Total slack | Constraint | Entity | Tracking Status |
| --- | --- | --- | --- | --- | --- | --- | --- | --- | --- | --- |
| 62 | 1.1.1.2.1.7 | **Consolidate qualitative and quantitative statements into SHUSA-level RAS and socialize with stakeholders** |  | 10d | 2015-08-17 | 2015-08-28 | 5d |  |  |  |
| 63 | 1.1.1.2.1.7.1 | Draft SHUSA-level RAS |  | 5d | 2015-08-17 | 2015-08-21 | 680d | finish no earlier than 2015-08-21 | ܁ࢹ | Late |
| 64 | 1.1.1.2.1.7.2 | Socialize SHUSA-level RAS with stakeholders (SHUSA) |  | 5d | 2015-08-24 | 2015-08-28 | 675d | finish no earlier than 2015-08-28 | ܁ࢹ | Late |
| 65 | 1.1.1.2.1.7.3 | Socialize SHUSA-level RAS with stakeholders (SBNA) | manual | 5d | 2015-08-24 | 2015-08-28 |  |  | ܁ࢺ | Late |
| 66 | 1.1.1.2.1.7.4 | Socialize SHUSA-level RAS with stakeholders (SCUSA) | manual | 5d | 2015-08-24 | 2015-08-28 |  |  | ܁ࢻ | Late |
| 67 | 1.1.1.2.1.7.5 | Final draft of SHUSA-level RAS | milestone | 0d | 2015-08-28 | 2015-08-28 | 675d | finish no earlier than 2015-08-28 |  | Late |
| 68 | 1.1.1.2.2 | **SHUSA-level RAS supporting processes and documentation** |  | 30d | 2015-07-06 | 2015-08-14 | 15d |  |  |  |
| 69 | 1.1.1.2.2.1 | **Document SHUSA-level RAS reporting, monitoring and escalation processes** |  | 20d | 2015-07-06 | 2015-07-31 | 15d |  |  |  |
| 70 | 1.1.1.2.2.1.1 | Draft SHUSA-level RAS reporting and monitoring process |  | 15d | 2015-07-06 | 2015-07-24 | 700d | finish no earlier than 2015-07-24 | ܁ࢹ | Late |
| 71 | 1.1.1.2.2.1.2 | Draft SHUSA-level RAS breach escalation process and detail consequences |  | 15d | 2015-07-06 | 2015-07-24 | 700d | finish no earlier than 2015-07-24 | ܁ࢹ | Late |
| 72 | 1.1.1.2.2.1.3 | Socialize processes with stakeholders (SHUSA) | manual | 5d | 2015-07-27 | 2015-07-31 |  |  | ܁ࢹ | Late |
| 73 | 1.1.1.2.2.1.4 | Socialize processes with stakeholders (SBNA) | manual | 5d | 2015-07-27 | 2015-07-31 |  |  | ܁ࢺ | Late |
| 74 | 1.1.1.2.2.1.5 | Socialize processes with stakeholders (SCUSA) |  | 5d | 2015-07-27 | 2015-07-31 | 695d | finish no earlier than 2015-07-31 | ܁ࢻ | Late |
| 75 | 1.1.1.2.2.1.6 | Finalized SHUSA-level RAS reporting, monitoring and escalation processes | milestone | 0d | 2015-07-31 | 2015-07-31 | 695d | finish no earlier than 2015-07-31 |  | Late |
| 76 | 1.1.1.2.2.2 | **Document SHUSA-level RAS development and governance process** |  | 20d | 2015-07-20 | 2015-08-14 | 15d |  |  |  |
| 77 | 1.1.1.2.2.2.1 | Draft SHUSA-level RAS development documentation and governance process |  | 15d | 2015-07-20 | 2015-08-07 | 690d | finish no earlier than 2015-08-07 | ܁ࢹ | Late |
| 78 | 1.1.1.2.2.2.2 | Socialize documents with stakeholders (SHUSA) | manual | 5d | 2015-08-10 | 2015-08-14 |  |  | ܁ࢹ | Late |
| 79 | 1.1.1.2.2.2.3 | Socialize documents with stakeholders (SBNA) | manual | 5d | 2015-08-10 | 2015-08-14 |  |  | ܁ࢺ | Late |
| 80 | 1.1.1.2.2.2.4 | Socialize documents with stakeholders (SCUSA) |  | 5d | 2015-08-10 | 2015-08-14 | 685d | finish no earlier than 2015-08-14 | ܁ࢻ | Late |
| 81 | 1.1.1.2.2.2.5 | Finalized SHUSA-level RAS development documentation and governance process | milestone | 0d | 2015-08-14 | 2015-08-14 | 685d | finish no earlier than 2015-08-14 |  | Late |
| 82 | 1.1.1.2.3 | **SHUSA-level RAS framework approval process** |  | 45d | 2015-08-31 | 2015-10-30 | 630d |  |  |  |
| 83 | 1.1.1.2.3.1 | **Educate Board and senior committees on RAS and secure approval** |  | 45d | 2015-08-31 | 2015-10-30 | 630d |  |  |  |
| 84 | 1.1.1.2.3.1.1 | Create materials for Board training on RAS roles & responsibilities |  | 5d | 2015-08-31 | 2015-09-04 | 670d | finish no earlier than 2015-09-04 | ܁ࢹ | Late |
| 85 | 1.1.1.2.3.1.2 | Create materials for Board training on RAS structure and metrics |  | 5d | 2015-08-31 | 2015-09-04 | 670d | finish no earlier than 2015-09-04 | ܁ࢹ | Late |
| 86 | 1.1.1.2.3.1.3 | Deliver Board training session(s) |  | 5d | 2015-09-21 | 2015-09-25 | 655d | finish no earlier than 2015-09-25 | ܁ࢹ | Late |
| 87 | 1.1.1.2.3.1.4 | Present SHUSA-level RAS to ERMC/EMC |  | 10d | 2015-08-31 | 2015-09-11 | 665d | finish no earlier than 2015-09-11 | ܁ࢹ | Late |
| 88 | 1.1.1.2.3.1.5 | Present CDR presentation to Madrid for review |  | 10d | 2015-08-31 | 2015-09-11 | 665d | finish no earlier than 2015-09-11 | ܁ࢹ | Late |
| 89 | 1.1.1.2.3.1.6 | Update RAS given feedback from SHUSA and Madrid risk committees |  | 5d | 2015-09-14 | 2015-09-18 | 660d | finish no earlier than 2015-09-18 | ܁ࢹ | Late |
| 90 | 1.1.1.2.3.1.7 | Present to Board/BERC for review |  | 10d | 2015-09-21 | 2015-10-02 | 650d | finish no earlier than 2015-10-02 | ܁ࢹ | Late |
| 91 | 1.1.1.2.3.1.8 | Present SHUSA-level RAS to CDR |  | 5d | 2015-10-05 | 2015-10-09 | 645d | finish no earlier than 2015-10-09 | ܁ࢹ | Late |
| 92 | 1.1.1.2.3.1.9 | Update RAS given feedback from CDR |  | 10d | 2015-10-12 | 2015-10-23 | 635d | finish no earlier than 2015-10-23 | ܁ࢹ | Late |
| 93 | 1.1.1.2.3.1.10 | Submit SHUSA-level RAS for Board approval |  | 5d | 2015-10-26 | 2015-10-30 | 630d | finish no earlier than 2015-10-30 | ܁ࢹ | Late |
| 94 | 1.1.1.2.3.1.11 | Board-approved SHUSA-level RAS | milestone | 0d | 2015-10-30 | 2015-10-30 | 630d | finish no earlier than 2015-10-30 |  | Late |

| ID | WBS | Task | Type | Duration | Start | Finish | Total slack | Constraint | Entity | Tracking Status |
| --- | --- | --- | --- | --- | --- | --- | --- | --- | --- | --- |
| 95 | 1.1.1.3 | **Cascaded RAS across enterprise through creation of subsidiary-level and, where ncessary, BU-level statements** |  | 260d? | 2015-06-01 | 2016-05-27 | 50d |  |  |  |
| 96 | 1.1.1.3.1 | **Assessment of short-term SCUSA RAS** |  | 20d | 2015-06-01 | 2015-06-26 | 720d |  |  |  |
| 97 | 1.1.1.3.1.1 | **Assess SCUSA RAS and determine plan for short-term remediation** |  | 5d | 2015-06-01 | 2015-06-05 | 735d |  |  |  |
| 98 | 1.1.1.3.1.1.1 | Assess current state of SCUSA RAS, focusing on pre-determined "pain points" (not reviewing RAS in entirety) |  | 1d | 2015-06-01 | 2015-06-01 | 739d | finish no earlier than 2015-06-01 | ܁ࢻ | Late |
| 99 | 1.1.1.3.1.1.2 | Determine plan for short-term remediation |  | 5d | 2015-06-01 | 2015-06-05 | 735d | finish no earlier than 2015-06-05 | ܁ࢻ | Late |
| 100 | 1.1.1.3.1.1.3 | Finalized plan for SCUSA RAS short-term remediation | milestone | 0d | 2015-06-05 | 2015-06-05 | 735d | finish no earlier than 2015-06-05 |  | Late |
| 101 | 1.1.1.3.1.2 | **Implement remediations in the form of updated key limits** |  | 15d | 2015-06-08 | 2015-06-26 | 720d |  |  |  |
| 102 | 1.1.1.3.1.2.1 | Redefine SCUSA liquidity limit |  | 5d | 2015-06-08 | 2015-06-12 | 730d | finish no earlier than 2015-06-12 | ܁ࢻ | Late |
| 103 | 1.1.1.3.1.2.2 | Redefine SCUSA RWA limit |  | 5d | 2015-06-08 | 2015-06-12 | 730d | finish no earlier than 2015-06-12 | ܁ࢻ | Late |
| 104 | 1.1.1.3.1.2.3 | Redefine SCUSA total asset limit |  | 5d | 2015-06-08 | 2015-06-12 | 730d | finish no earlier than 2015-06-12 | ܁ࢻ | Late |
| 105 | 1.1.1.3.1.2.4 | Socialize updated limits and all proposed remediations to SCUSA RAS |  | 5d | 2015-06-15 | 2015-06-19 | 725d | finish no earlier than 2015-06-19 | ܁ࢻ | Late |
| 106 | 1.1.1.3.1.2.5 | Update SCUSA RAS based on agreed upon remediations |  | 5d | 2015-06-22 | 2015-06-26 | 720d | finish no earlier than 2015-06-26 | ܁ࢻ | Late |
| 107 | 1.1.1.3.1.2.6 | Finalized SCUSA RAS (for short-term use) | milestone | 0d | 2015-06-26 | 2015-06-26 | 720d | finish no earlier than 2015-06-26 |  | Late |
| 108 | 1.1.1.3.2 | **Definition of approach for cascading SHUSA-level RAS to subsidiaries and levels below** |  | 10d | 2015-08-03 | 2015-08-14 | 5d |  |  |  |
| 109 | 1.1.1.3.2.1 | **Document approach for cascading SHUSA-level RAS to subsidiaries and levels below** |  | 10d | 2015-08-03 | 2015-08-14 | 5d |  |  |  |
| 110 | 1.1.1.3.2.1.1 | Determine organizational levels to which cascading is appropriate and draft planned approach |  | 5d | 2015-08-03 | 2015-08-07 | 690d | finish no earlier than 2015-08-07 | ܁ࢹ | Late |
| 111 | 1.1.1.3.2.1.2 | Facilitate review and challenge sessions for cascading approach with stakeholders (SHUSA) |  | 3d | 2015-08-10 | 2015-08-12 | 687d | finish no earlier than 2015-08-12 | ܁ࢹ | Late |
| 112 | 1.1.1.3.2.1.3 | Facilitate review and challenge sessions for cascading approach with stakeholders (SBNA) | manual | 3d | 2015-08-10 | 2015-08-12 |  |  | ܁ࢺ | Late |
| 113 | 1.1.1.3.2.1.4 | Facilitate review and challenge sessions for cascading approach with stakeholders (SCUSA) | manual | 3d | 2015-08-10 | 2015-08-12 |  |  | ܁ࢻ | Late |
| 114 | 1.1.1.3.2.1.5 | Update documentation for cascading approach, given stakeholder input |  | 3d | 2015-08-12 | 2015-08-14 | 685d | finish no earlier than 2015-08-14 | ܁ࢹ | Late |
| 115 | 1.1.1.3.2.1.6 | Finalized plan for cascading SHUSA-level RAS to subsidiaries and levels below | milestone | 0d | 2015-08-14 | 2015-08-14 | 685d | finish no earlier than 2015-08-14 |  | Late |
| 116 | 1.1.1.3.3 | **RAS for priority subsidiaries SBNA & SCUSA – follow similar process as SHUSA** |  | 138d? | 2015-08-17 | 2016-02-24 | 0d |  |  |  |
| 117 | 1.1.1.3.3.1 | **Detail material risks specific to SBNA and SCUSA (leveraging SHUSA-level list, but making additions as necessary)** |  | 10d | 2015-08-17 | 2015-08-28 | 0d |  |  |  |
| 118 | 1.1.1.3.3.1.1 | Identify and document subsidiary-specific risks and constraints, including those not captured in SHUSA-level RAS(SBNA) |  | 5d | 2015-08-17 | 2015-08-21 | 680d | finish no earlier than 2015-08-21 | ܁ࢺ | Late |
| 119 | 1.1.1.3.3.1.2 | Identify and document subsidiary-specific risks and constraints, including those not captured in SHUSA-level RAS(SCUSA) | manual | 5d | 2015-08-17 | 2015-08-21 |  |  | ܁ࢻ | Late |
| 120 | 1.1.1.3.3.1.3 | Identify and document constraints from Group, regulators and other stakeholders (i.e. ratings agencies) |  | 5d | 2015-08-17 | 2015-08-21 | 680d | finish no earlier than 2015-08-21 |  | Late |
| 121 | 1.1.1.3.3.1.4 | Facilitate review and challenge session for list of material risks with key stakeholders (SHUSA) |  | 3d | 2015-08-24 | 2015-08-26 | 677d | finish no earlier than 2015-08-26 | ܁ࢹ | Late |
| 122 | 1.1.1.3.3.1.5 | Facilitate review and challenge session for list of material risks with key stakeholders (SBNA) | manual | 3d | 2015-08-24 | 2015-08-26 |  |  | ܁ࢺ | Late |
| 123 | 1.1.1.3.3.1.6 | Facilitate review and challenge session for list of material risks with key stakeholders (SCUSA) | manual | 3d | 2015-08-24 | 2015-08-26 |  |  | ܁ࢻ | Late |
| 124 | 1.1.1.3.3.1.7 | Update documentation of subsidiary-specific risks and constraints, given stakeholder input(SBNA) |  | 2d | 2015-08-27 | 2015-08-28 | 675d | finish no earlier than 2015-08-28 | ܁ࢺ | Late |
| 125 | 1.1.1.3.3.1.8 | Update documentation of subsidiary-specific risks and constraints, given stakeholder input(SCUSA) | manual | 2d | 2015-08-27 | 2015-08-28 |  |  | ܁ࢻ | Late |
| 126 | 1.1.1.3.3.1.9 | Finalized documentation of material risks and constraints specific to priority subsidiaries | milestone | 0d | 2015-08-17 | 2015-08-17 | 684d | finish no earlier than 2015-08-17 |  | Late |

| ID | WBS | Task | Type | Duration | Start | Finish | Total slack | Constraint | Entity | Tracking Status | Dependency |
| --- | --- | --- | --- | --- | --- | --- | --- | --- | --- | --- | --- |
| 127 | 1.1.1.3.3.2 | **For each risk, determine a qualitative risk appetite statement (leveraging SHUSA-level RAS)** |  | 15d? | 2015-08-31 | 2015-09-18 | 0d |  |  |  |  |
| 128 | 1.1.1.3.3.2.1 | Determine SHUSA-level RAS statements relevant to subsidiaries(SBNA) |  | 3d | 2015-08-31 | 2015-09-02 | 672d | finish no earlier than 2015-09-02 | ܁ࢺ | Late |  |
| 129 | 1.1.1.3.3.2.2 | Determine SHUSA-level RAS statements relevant to subsidiaries(SCUSA) | manual | 1d? | 2015-08-31 | 2015-08-31 |  |  | ܁ࢻ |  |  |
| 130 | 1.1.1.3.3.2.3 | Detail statements for material risks specific to the subsidiary, not captured in SHUSA-level RAS(SBNA) |  | 7d | 2015-09-03 | 2015-09-11 | 665d | finish no earlier than 2015-09-11 | ܁ࢺ | Late |  |
| 131 | 1.1.1.3.3.2.4 | Detail statements for material risks specific to the subsidiary, not captured in SHUSA-level RAS(SCUSA) | manual | 7d | 2015-09-03 | 2015-09-11 |  |  | ܁ࢻ | Late |  |
| 132 | 1.1.1.3.3.2.5 | Consolidate into subsidiary specific-list of statements (leverage existing work) (SBNA) |  | 3d | 2015-09-14 | 2015-09-16 | 662d | finish no earlier than 2015-09-16 | ܁ࢺ | Late |  |
| 133 | 1.1.1.3.3.2.6 | Consolidate into subsidiary specific-list of statements (leverage existing work) (SCUSA) | manual | 3d | 2015-09-14 | 2015-09-16 |  |  | ܁ࢻ | Late |  |
| 134 | 1.1.1.3.3.2.7 | Socialize SBNA and SCUSA qualitative statements with key stakeholders (SHUSA) |  | 2d | 2015-09-17 | 2015-09-18 | 660d | finish no earlier than 2015-09-18 | ܁ࢹ | Late |  |
| 135 | 1.1.1.3.3.2.8 | Socialize SBNA and SCUSA qualitative statements with key stakeholders (SBNA) | manual | 2d | 2015-09-17 | 2015-09-18 |  |  | ܁ࢺ | Late |  |
| 136 | 1.1.1.3.3.2.9 | Socialize SBNA and SCUSA qualitative statements with key stakeholders (SCUSA) | manual | 2d | 2015-09-17 | 2015-09-18 |  |  | ܁ࢻ | Late |  |
| 137 | 1.1.1.3.3.2.10 | Finalized qualitative risk appetite statements for subsidiary-specific risks | milestone | 0d | 2015-09-18 | 2015-09-18 | 660d | finish no earlier than 2015-09-18 |  | Late |  |
| 138 | 1.1.1.3.3.3 | **For quantifiable statements, identify key metrics and calibrate limits (leveraging SHUSA-level RAS)** |  | 40d | 2015-09-14 | 2015-11-06 | 0d |  |  |  |  |
| 139 | 1.1.1.3.3.3.1 | Determine SHUSA-level RAS metrics relevant to subsidiaries(SBNA) | manual | 3d | 2015-09-14 | 2015-09-16 |  |  | ܁ࢺ | Late |  |
| 140 | 1.1.1.3.3.3.2 | Determine SHUSA-level RAS metrics relevant to subsidiaries(SCUSA) |  | 3d | 2015-09-14 | 2015-09-16 | 662d | finish no earlier than 2015-09-16 | ܁ࢻ | Late |  |
| 141 | 1.1.1.3.3.3.3 | Identify metrics for material risks specific to the subsidiary, not captured in SHUSA-level RAS, and compile in list with relevant metrics from SHUSA-level RAS(SBNA) | manual | 2d | 2015-09-17 | 2015-09-18 |  |  | ܁ࢺ | Late |  |
| 142 | 1.1.1.3.3.3.4 | Identify metrics for material risks specific to the subsidiary, not captured in SHUSA-level RAS, and compile in list with relevant metrics from SHUSA-level RAS(SCUSA) |  | 2d | 2015-09-17 | 2015-09-18 | 660d | finish no earlier than 2015-09-18 | ܁ࢻ | Late |  |
| 143 | 1.1.1.3.3.3.5 | Facilitate review and challenge session for proposed metrics, limits and thresholds with key stakeholders (SHUSA) |  | 1d | 2015-09-28 | 2015-09-28 | 654d | finish no earlier than 2015-09-28 | ܁ࢹ | Late |  |
| 144 | 1.1.1.3.3.3.6 | Facilitate review and challenge session for proposed metrics, limits and thresholds with key stakeholders (SBNA) | manual | 1d | 2015-09-28 | 2015-09-28 |  |  | ܁ࢺ | Late |  |
| 145 | 1.1.1.3.3.3.7 | Facilitate review and challenge session for proposed metrics, limits and thresholds with key stakeholders (SCUSA) | manual | 1d | 2015-09-28 | 2015-09-28 |  |  | ܁ࢻ | Late |  |
| 146 | 1.1.1.3.3.3.8 | Update list of subsidiary-specific metrics, given stakeholder input, and identify and document owners for each metric(SBNA) |  | 4d | 2015-09-29 | 2015-10-02 | 650d | finish no earlier than 2015-10-02 | ܁ࢺ | Late |  |
| 147 | 1.1.1.3.3.3.9 | Update list of subsidiary-specific metrics, given stakeholder input, and identify and document owners for each metric(SCUSA) | manual | 4d | 2015-09-29 | 2015-10-02 |  |  | ܁ࢻ | Late |  |
| 148 | 1.1.1.3.3.3.10 | Detail limits and thresholds for list of subsidiary-specific metrics(SBNA) |  | 5d | 2015-09-21 | 2015-09-25 | 655d | finish no earlier than 2015-09-25 | ܁ࢺ | Late |  |
| 149 | 1.1.1.3.3.3.11 | Detail limits and thresholds for list of subsidiary-specific metrics(SCUSA) | manual | 5d | 2015-09-21 | 2015-09-25 |  |  | ܁ࢻ | Late |  |
| 150 | 1.1.1.3.3.3.12 | Calibrate limits for subsidiary risks, ensure subsidiary-level limits align to SHUSA-level limits(SBNA) |  | 30d | 2015-09-21 | 2015-10-30 | 630d | finish no earlier than 2015-10-30 | ܁ࢺ | Late |  |
| 151 | 1.1.1.3.3.3.13 | Calibrate limits for subsidiary risks, ensure subsidiary-level limits align to SHUSA-level limits(SCUSA) | manual | 30d | 2015-09-21 | 2015-10-30 |  |  | ܁ࢻ | Late |  |
| 152 | 1.1.1.3.3.3.14 | Document rationale for SHUSA metrics |  | 5d | 2015-09-21 | 2015-09-25 | 655d | finish no earlier than 2015-09-25 | ܁ࢹ | Late |  |
| 153 | 1.1.1.3.3.3.15 | Document IT requirements for SHUSA metrics |  | 15d | 2015-09-14 | 2015-10-02 | 650d | finish no earlier than 2015-10-02 | ܁ࢹ | Late | ܁д |
| 154 | 1.1.1.3.3.3.16 | Consolidate metrics, limits and thresholds into quantifiable statements for subsidiary-specific risks(SBNA) |  | 3d | 2015-11-02 | 2015-11-04 | 627d | finish no earlier than 2015-11-04 | ܁ࢺ | Late |  |
| 155 | 1.1.1.3.3.3.17 | Consolidate metrics, limits and thresholds into quantifiable statements for subsidiary-specific risks(SCUSA) | manual | 3d | 2015-11-02 | 2015-11-04 |  |  | ܁ࢻ | Late |  |
| 156 | 1.1.1.3.3.3.18 | Socialize SBNA and SCUSA quantitative statements with stakeholders (SHUSA) |  | 2d | 2015-11-05 | 2015-11-06 | 625d | finish no earlier than 2015-11-06 | ܁ࢹ | Late |  |
| 157 | 1.1.1.3.3.3.19 | Socialize SBNA and SCUSA quantitative statements with stakeholders (SBNA) | manual | 2d | 2015-11-05 | 2015-11-06 |  |  | ܁ࢺ | Late |  |
| 158 | 1.1.1.3.3.3.20 | Socialize SBNA and SCUSA quantitative statements with stakeholders (SCUSA) | manual | 2d | 2015-11-05 | 2015-11-06 |  |  | ܁ࢻ | Late |  |
| 159 | 1.1.1.3.3.3.21 | Finalized quantitative risk appetite statements for subsidiary-specific risks | milestone | 0d | 2015-11-06 | 2015-11-06 | 625d | finish no earlier than 2015-11-06 |  | Late |  |

Notes:
- 153: Technology / Open Question: Should we have IT requirements for each entity or does SHUSA requirement cover entities as well?

| ID | WBS | Task | Type | Duration | Start | Finish | Total slack | Constraint | Entity | Tracking Status |
| --- | --- | --- | --- | --- | --- | --- | --- | --- | --- | --- |
| 160 | 1.1.1.3.3.4 | **Consolidate qualitative and quantitative statements into SBNA RAS and SCUSA RAS and socialize with stakeholders** |  | 10d | 2015-11-09 | 2015-11-20 | 0d |  |  |  |
| 161 | 1.1.1.3.3.4.1 | Draft SBNA RAS |  | 5d | 2015-11-09 | 2015-11-13 | 620d | finish no earlier than 2015-11-13 | ܁ࢺ | Late |
| 162 | 1.1.1.3.3.4.2 | Draft SCUSA RAS | manual | 5d | 2015-11-09 | 2015-11-13 |  |  | ܁ࢻ | Late |
| 163 | 1.1.1.3.3.4.3 | Socialize SBNA RAS and SCUSA RAS with stakeholders (SHUSA) | manual | 5d | 2015-11-16 | 2015-11-20 |  |  | ܁ࢹ | Late |
| 164 | 1.1.1.3.3.4.4 | Socialize SBNA RAS and SCUSA RAS with stakeholders (SBNA) | manual | 5d | 2015-11-16 | 2015-11-20 |  |  | ܁ࢺ | Late |
| 165 | 1.1.1.3.3.4.5 | Socialize SBNA RAS and SCUSA RAS with stakeholders (SCUSA) |  | 5d | 2015-11-16 | 2015-11-20 | 615d | finish no earlier than 2015-11-20 | ܁ࢻ | Late |
| 166 | 1.1.1.3.3.4.6 | Final drafts of SBNA RAS and SCUSA RAS | milestone | 0d | 2015-11-20 | 2015-11-20 | 615d | finish no earlier than 2015-11-20 |  | Late |
| 167 | 1.1.1.3.3.5 | **Secure Board approval of RAS for priority subsidiaries** |  | 30d | 2015-11-20 | 2015-12-31 | 0d |  |  |  |
| 168 | 1.1.1.3.3.5.1 | 6-week buffer for governance process(SHUSA) |  | 30d | 2015-11-20 | 2015-12-31 | 586d | finish no earlier than 2015-12-31 | ܁ࢹ | Late |
| 169 | 1.1.1.3.3.5.2 | 6-week buffer for governance process(SBNA) | manual | 30d | 2015-11-20 | 2015-12-31 |  |  | ܁ࢺ | Late |
| 170 | 1.1.1.3.3.5.3 | 6-week buffer for governance process(SCUSA) | manual | 30d | 2015-11-20 | 2015-12-31 |  |  | ܁ࢻ | Late |
| 171 | 1.1.1.3.3.5.4 | Board-approved SHUSA-level RAS | milestone | 0d | 2015-12-31 | 2015-12-31 | 586d | finish no earlier than 2015-12-31 |  | Late |
| 172 | 1.1.1.3.3.6 | **Communicate SHUSA, SBNA, and SCUSA RAS to enterprise** |  | 40d | 2015-12-31 | 2016-02-24 | 0d |  |  |  |
| 173 | 1.1.1.3.3.6.1 | Create communication materials to aid in socialization process(SHUSA) |  | 10d | 2015-12-31 | 2016-01-13 | 577d | finish no earlier than 2016-01-13 | ܁ࢹ | Late |
| 174 | 1.1.1.3.3.6.2 | Create communication materials to aid in socialization process(SBNA) | manual | 10d | 2015-12-31 | 2016-01-13 |  |  | ܁ࢺ | Late |
| 175 | 1.1.1.3.3.6.3 | Create communication materials to aid in socialization process(SCUSA) | manual | 10d | 2015-12-31 | 2016-01-13 |  |  | ܁ࢻ | Late |
| 176 | 1.1.1.3.3.6.4 | Facilitate training, town halls, etc. to communicate RAS to enterprise(SHUSA) |  | 30d | 2016-01-14 | 2016-02-24 | 547d | finish no earlier than 2016-02-24 | ܁ࢹ | Late |
| 177 | 1.1.1.3.3.6.5 | Facilitate training, town halls, etc. to communicate RAS to enterprise(SBNA) | manual | 30d | 2016-01-14 | 2016-02-24 |  |  | ܁ࢺ | Late |
| 178 | 1.1.1.3.3.6.6 | Facilitate training, town halls, etc. to communicate RAS to enterprise(SCUSA) | manual | 30d | 2016-01-14 | 2016-02-24 |  |  | ܁ࢻ | Late |
| 179 | 1.1.1.3.3.6.7 | Completed formal communication process to enterprise | milestone | 0d | 2016-02-24 | 2016-02-24 | 547d | finish no earlier than 2016-02-24 |  | Late |
| 180 | 1.1.1.3.4 | **RAS for remainder of subsidiaries and select Bus (SIS NY, Puerto Rico, Miami)** |  | 85d | 2016-02-01 | 2016-05-27 |  |  |  | Late |
| 181 | 1.1.1.3.4.1 | **Definition of approach for cascading SHUSA-level RAS to subsidiaries and levels below** |  | 85d | 2016-02-01 | 2016-05-27 |  |  |  |  |
| 182 | 1.1.1.3.4.1.1 | **Document approach for cascading SHUSA-level RAS to subsidiaries and levels below** |  | 1d? | 2016-02-01 | 2016-02-01 |  |  |  |  |
| 183 | 1.1.1.3.4.1.1.1 | Determine organizational levels to which cascading is appropriate and draft planned approach | manual | 1d? | 2016-02-01 | 2016-02-01 |  |  | ܁ࢹ |  |
| 184 | 1.1.1.3.4.1.1.2 | Facilitate review and challenge sessions for cascading approach with stakeholders (SIS NY) | manual | 1d? | 2016-02-01 | 2016-02-01 |  |  | ܁ࣅ |  |
| 185 | 1.1.1.3.4.1.1.3 | Facilitate review and challenge sessions for cascading approach with stakeholders (Puerto Rico) | manual | 1d? | 2016-02-01 | 2016-02-01 |  |  | ܁ࢾ |  |
| 186 | 1.1.1.3.4.1.1.4 | Facilitate review and challenge sessions for cascading approach with stakeholders (Miami) | manual | 1d? | 2016-02-01 | 2016-02-01 |  |  | ܁ࣄ |  |
| 187 | 1.1.1.3.4.1.1.5 | Update documentation for cascading approach, given stakeholder input | manual | 1d? | 2016-02-01 | 2016-02-01 |  |  |  |  |
| 188 | 1.1.1.3.4.1.1.6 | Finalized plan for cascading SHUSA-level RAS to subsidiaries and levels below | manual | 1d? | 2016-02-01 | 2016-02-01 |  |  |  |  |

| ID | WBS | Task | Type | Duration | Start | Finish | Entity |
| --- | --- | --- | --- | --- | --- | --- | --- |
| 189 | 1.1.1.3.4.2 | **RAS for SIS NY, Puerto Rico, Miami – follow similar process as SHUSA** |  | 85d? | 2016-02-01 | 2016-05-27 |  |
| 190 | 1.1.1.3.4.2.1 | **Detail material risks specific to SIS NY, Puerto Rico, Miami (leveraging SHUSA-level list, but making additions as necessary)** |  | 85d | 2016-02-01 | 2016-05-27 |  |
| 191 | 1.1.1.3.4.2.1.1 | Identify and document subsidiary-specific risks and constraints, including those not captured in SHUSA-level RAS(SIS NY) | manual | 1d? | 2016-02-01 | 2016-02-01 | ܁ࣅ |
| 192 | 1.1.1.3.4.2.1.2 | Identify and document subsidiary-specific risks and constraints, including those not captured in SHUSA-level RAS(Puerto Rico) | manual | 1d? | 2016-02-01 | 2016-02-01 | ܁ࢾ |
| 193 | 1.1.1.3.4.2.1.3 | Identify and document subsidiary-specific risks and constraints, including those not captured in SHUSA-level RAS(Miami) | manual | 1d? | 2016-02-01 | 2016-02-01 | ܁ࣄ |
| 194 | 1.1.1.3.4.2.1.4 | Identify and document constraints from Group, regulators and other stakeholders (i.e. ratings agencies) | manual | 1d? | 2016-02-01 | 2016-02-01 |  |
| 195 | 1.1.1.3.4.2.1.5 | Facilitate review and challenge session for list of material risks with key stakeholders (SHUSA) | manual | 1d? | 2016-02-01 | 2016-02-01 | ܁ࢹ |
| 196 | 1.1.1.3.4.2.1.6 | Facilitate review and challenge session for list of material risks with key stakeholders (SIS NY) | manual | 1d? | 2016-02-01 | 2016-02-01 | ܁ࣅ |
| 197 | 1.1.1.3.4.2.1.7 | Facilitate review and challenge session for list of material risks with key stakeholders (Puerto Rico) | manual | 1d? | 2016-02-01 | 2016-02-01 | ܁ࢾ |
| 198 | 1.1.1.3.4.2.1.8 | Facilitate review and challenge session for list of material risks with key stakeholders (Miami) | manual | 1d? | 2016-02-01 | 2016-02-01 | ܁ࣄ |
| 199 | 1.1.1.3.4.2.1.9 | Update documentation of subsidiary-specific risks and constraints, given stakeholder input(SIS NY) | manual | 1d? | 2016-02-01 | 2016-02-01 | ܁ࣅ |
| 200 | 1.1.1.3.4.2.1.10 | Update documentation of subsidiary-specific risks and constraints, given stakeholder input(Puerto Rico) | manual | 1d? | 2016-02-01 | 2016-02-01 | ܁ࢾ |
| 201 | 1.1.1.3.4.2.1.11 | Update documentation of subsidiary-specific risks and constraints, given stakeholder input(Miami) | manual | 1d? | 2016-02-01 | 2016-02-01 | ܁ࣄ |
| 202 | 1.1.1.3.4.2.1.12 | Finalized documentation of material risks and constraints specific to priority subsidiaries | manual | 1d? | 2016-02-01 | 2016-02-01 |  |
| 203 | 1.1.1.3.4.2.2 | **For each risk, determine a qualitative risk appetite statement (leveraging SHUSA-level RAS)** |  | 85d | 2016-02-01 | 2016-05-27 |  |
| 204 | 1.1.1.3.4.2.2.1 | Determine SHUSA-level RAS statements relevant to subsidiaries(SIS NY) | manual | 1d? | 2016-02-01 | 2016-02-01 | ܁ࣅ |
| 205 | 1.1.1.3.4.2.2.2 | Determine SHUSA-level RAS statements relevant to subsidiaries(Puerto Rico) | manual | 1d? | 2016-02-01 | 2016-02-01 | ܁ࢾ |
| 206 | 1.1.1.3.4.2.2.3 | Determine SHUSA-level RAS statements relevant to subsidiaries(Miami) | manual | 1d? | 2016-02-01 | 2016-02-01 | ܁ࣄ |
| 207 | 1.1.1.3.4.2.2.4 | Detail statements for material risks specific to the subsidiary, not captured in SHUSA-level RAS(SIS NY) | manual | 1d? | 2016-02-01 | 2016-02-01 | ܁ࣅ |
| 208 | 1.1.1.3.4.2.2.5 | Detail statements for material risks specific to the subsidiary, not captured in SHUSA-level RAS(Puerto Rico) | manual | 1d? | 2016-02-01 | 2016-02-01 | ܁ࢾ |
| 209 | 1.1.1.3.4.2.2.6 | Detail statements for material risks specific to the subsidiary, not captured in SHUSA-level RAS(Miami) | manual | 1d? | 2016-02-01 | 2016-02-01 | ܁ࣄ |
| 210 | 1.1.1.3.4.2.2.7 | Consolidate into subsidiary specific-list of statements (leverage existing work) (SIS NY) | manual | 1d? | 2016-02-01 | 2016-02-01 | ܁ࣅ |
| 211 | 1.1.1.3.4.2.2.8 | Consolidate into subsidiary specific-list of statements (leverage existing work) (Puerto Rico) | manual | 1d? | 2016-02-01 | 2016-02-01 | ܁ࢾ |
| 212 | 1.1.1.3.4.2.2.9 | Consolidate into subsidiary specific-list of statements (leverage existing work) (Miami) | manual | 1d? | 2016-02-01 | 2016-02-01 | ܁ࣄ |
| 213 | 1.1.1.3.4.2.2.10 | Socialize SIS NY, Puerto Rico, Miami qualitative statements with key stakeholders (SHUSA) | manual | 1d? | 2016-02-01 | 2016-02-01 | ܁ࢹ |
| 214 | 1.1.1.3.4.2.2.11 | Socialize SIS NY, Puerto Rico, Miami qualitative statements with key stakeholders (SIS NY) | manual | 1d? | 2016-02-01 | 2016-02-01 | ܁ࣅ |
| 215 | 1.1.1.3.4.2.2.12 | Socialize SIS NY, Puerto Rico, Miami qualitative statements with key stakeholders (Puerto Rico) | manual | 1d? | 2016-02-01 | 2016-02-01 | ܁ࢾ |
| 216 | 1.1.1.3.4.2.2.13 | Socialize SIS NY, Puerto Rico, Miami qualitative statements with key stakeholders (Miami) | manual | 1d? | 2016-02-01 | 2016-02-01 | ܁ࣄ |
| 217 | 1.1.1.3.4.2.2.14 | Finalized qualitative risk appetite statements for subsidiary-specific risks | manual | 1d? | 2016-02-01 | 2016-02-01 |  |

| ID | WBS | Task | Type | Duration | Start | Finish | Entity |
| --- | --- | --- | --- | --- | --- | --- | --- |
| 218 | 1.1.1.3.4.2.3 | **For quantifiable statements, identify key metrics and calibrate limits (leveraging SHUSA-level RAS)** |  | 85d | 2016-02-01 | 2016-05-27 |  |
| 219 | 1.1.1.3.4.2.3.1 | Determine SHUSA-level RAS metrics relevant to subsidiaries(SIS NY) | manual | 1d? | 2016-02-01 | 2016-02-01 | ܁ࣅ |
| 220 | 1.1.1.3.4.2.3.2 | Determine SHUSA-level RAS metrics relevant to subsidiaries(Puerto Rico) | manual | 1d? | 2016-02-01 | 2016-02-01 | ܁ࢾ |
| 221 | 1.1.1.3.4.2.3.3 | Determine SHUSA-level RAS metrics relevant to subsidiaries(Miami) | manual | 1d? | 2016-02-01 | 2016-02-01 | ܁ࣄ |
| 222 | 1.1.1.3.4.2.3.4 | Identify metrics for material risks specific to the subsidiary, not captured in SHUSA-level RAS, and compile in list with relevant metrics from SHUSA-level RAS(SIS NY) | manual | 1d? | 2016-02-01 | 2016-02-01 | ܁ࣅ |
| 223 | 1.1.1.3.4.2.3.5 | Identify metrics for material risks specific to the subsidiary, not captured in SHUSA-level RAS, and compile in list with relevant metrics from SHUSA-level RAS(Puerto Rico) | manual | 1d? | 2016-02-01 | 2016-02-01 | ܁ࢾ |
| 224 | 1.1.1.3.4.2.3.6 | Identify metrics for material risks specific to the subsidiary, not captured in SHUSA-level RAS, and compile in list with relevant metrics from SHUSA-level RAS(Miami) | manual | 1d? | 2016-02-01 | 2016-02-01 | ܁ࣄ |
| 225 | 1.1.1.3.4.2.3.7 | Facilitate review and challenge session for proposed metrics, limits and thresholds with key stakeholders (SHUSA) | manual | 1d? | 2016-02-01 | 2016-02-01 | ܁ࢹ |
| 226 | 1.1.1.3.4.2.3.8 | Facilitate review and challenge session for proposed metrics, limits and thresholds with key stakeholders (SIS NY) | manual | 1d? | 2016-02-01 | 2016-02-01 | ܁ࣅ |
| 227 | 1.1.1.3.4.2.3.9 | Facilitate review and challenge session for proposed metrics, limits and thresholds with key stakeholders (Puerto Rico) | manual | 1d? | 2016-02-01 | 2016-02-01 | ܁ࢾ |
| 228 | 1.1.1.3.4.2.3.10 | Facilitate review and challenge session for proposed metrics, limits and thresholds with key stakeholders (Miami) | manual | 1d? | 2016-02-01 | 2016-02-01 | ܁ࣄ |
| 229 | 1.1.1.3.4.2.3.11 | Update list of subsidiary-specific metrics, given stakeholder input, and identify and document owners for each metric(SIS NY) | manual | 1d? | 2016-02-01 | 2016-02-01 | ܁ࣅ |
| 230 | 1.1.1.3.4.2.3.12 | Update list of subsidiary-specific metrics, given stakeholder input, and identify and document owners for each metric(Puerto Rico) | manual | 1d? | 2016-02-01 | 2016-02-01 | ܁ࢾ |
| 231 | 1.1.1.3.4.2.3.13 | Update list of subsidiary-specific metrics, given stakeholder input, and identify and document owners for each metric(Miami) | manual | 1d? | 2016-02-01 | 2016-02-01 | ܁ࣄ |
| 232 | 1.1.1.3.4.2.3.14 | Detail limits and thresholds for list of subsidiary-specific metrics(SIS NY) | manual | 1d? | 2016-02-01 | 2016-02-01 | ܁ࣅ |
| 233 | 1.1.1.3.4.2.3.15 | Detail limits and thresholds for list of subsidiary-specific metrics(Puerto Rico) | manual | 1d? | 2016-02-01 | 2016-02-01 | ܁ࢾ |
| 234 | 1.1.1.3.4.2.3.16 | Detail limits and thresholds for list of subsidiary-specific metrics(Miami) | manual | 1d? | 2016-02-01 | 2016-02-01 | ܁ࣄ |
| 235 | 1.1.1.3.4.2.3.17 | Calibrate limits for subsidiary risks, ensure subsidiary-level limits align to SHUSA-level limits(SIS NY) | manual | 1d? | 2016-02-01 | 2016-02-01 | ܁ࣅ |
| 236 | 1.1.1.3.4.2.3.18 | Calibrate limits for subsidiary risks, ensure subsidiary-level limits align to SHUSA-level limits(Puerto Rico) | manual | 1d? | 2016-02-01 | 2016-02-01 | ܁ࢾ |
| 237 | 1.1.1.3.4.2.3.19 | Calibrate limits for subsidiary risks, ensure subsidiary-level limits align to SHUSA-level limits(Miami) | manual | 1d? | 2016-02-01 | 2016-02-01 | ܁ࣄ |
| 238 | 1.1.1.3.4.2.3.20 | Document rationale for SHUSA metrics | manual | 1d? | 2016-02-01 | 2016-02-01 | ܁ࢹ |
| 239 | 1.1.1.3.4.2.3.21 | Document IT requirements for SHUSA metrics | manual | 1d? | 2016-02-01 | 2016-02-01 | ܁ࢹ |
| 240 | 1.1.1.3.4.2.3.22 | Consolidate metrics, limits and thresholds into quantifiable statements for subsidiary-specific risks(SIS NY) | manual | 1d? | 2016-02-01 | 2016-02-01 | ܁ࣅ |
| 241 | 1.1.1.3.4.2.3.23 | Consolidate metrics, limits and thresholds into quantifiable statements for subsidiary-specific risks(Puerto Rico) | manual | 1d? | 2016-02-01 | 2016-02-01 | ܁ࢾ |
| 242 | 1.1.1.3.4.2.3.24 | Consolidate metrics, limits and thresholds into quantifiable statements for subsidiary-specific risks(Miami) | manual | 1d? | 2016-02-01 | 2016-02-01 | ܁ࣄ |
| 243 | 1.1.1.3.4.2.3.25 | Socialize SBNA and SCUSA quantitative statements with stakeholders (SHUSA) | manual | 1d? | 2016-02-01 | 2016-02-01 | ܁ࢹ |
| 244 | 1.1.1.3.4.2.3.26 | Socialize SBNA and SCUSA quantitative statements with stakeholders (SIS NY) | manual | 1d? | 2016-02-01 | 2016-02-01 | ܁ࣅ |
| 245 | 1.1.1.3.4.2.3.27 | Socialize SBNA and SCUSA quantitative statements with stakeholders (Puerto Rico) | manual | 1d? | 2016-02-01 | 2016-02-01 | ܁ࢾ |
| 246 | 1.1.1.3.4.2.3.28 | Socialize SBNA and SCUSA quantitative statements with stakeholders (Miami) | manual | 1d? | 2016-02-01 | 2016-02-01 | ܁ࣄ |
| 247 | 1.1.1.3.4.2.3.29 | Finalized quantitative risk appetite statements for subsidiary-specific risks | manual | 1d? | 2016-02-01 | 2016-02-01 |  |

| ID | WBS | Task | Type | Duration | Start | Finish | Total slack | Constraint | Entity | Tracking Status |
| --- | --- | --- | --- | --- | --- | --- | --- | --- | --- | --- |
| 248 | 1.1.1.3.4.2.4 | **Consolidate qualitative and quantitative statements into SIS NY RAS, Puerto Rico RAS and Miami RAS socialize with stakeholders** |  | 85d | 2016-02-01 | 2016-05-27 |  |  |  |  |
| 249 | 1.1.1.3.4.2.4.1 | Draft SIS NY RAS | manual | 1d? | 2016-02-01 | 2016-02-01 |  |  | ܁ࣅ |  |
| 250 | 1.1.1.3.4.2.4.2 | Draft Puerto Rico RAS | manual | 1d? | 2016-02-01 | 2016-02-01 |  |  | ܁ࢾ |  |
| 251 | 1.1.1.3.4.2.4.3 | Draft Miami RAS | manual | 1d? | 2016-02-01 | 2016-02-01 |  |  | ܁ࣄ |  |
| 252 | 1.1.1.3.4.2.4.4 | Socialize SIS NY RAS, Puerto Rico RAS and Miami RAS with stakeholders (SHUSA) | manual | 1d? | 2016-02-01 | 2016-02-01 |  |  | ܁ࢹ |  |
| 253 | 1.1.1.3.4.2.4.5 | Socialize SIS NY RAS, Puerto Rico RAS and Miami RAS with stakeholders (SIS NY RAS) | manual | 1d? | 2016-02-01 | 2016-02-01 |  |  | ܁ࣅ |  |
| 254 | 1.1.1.3.4.2.4.6 | Socialize SIS NY RAS, Puerto Rico RAS and Miami RAS with stakeholders (Puerto Rico RAS) | manual | 1d? | 2016-02-01 | 2016-02-01 |  |  | ܁ࢾ |  |
| 255 | 1.1.1.3.4.2.4.7 | Socialize SIS NY RAS, Puerto Rico RAS and Miami RAS with stakeholders (Miami RAS) | manual | 1d? | 2016-02-01 | 2016-02-01 |  |  | ܁ࣄ |  |
| 256 | 1.1.1.3.4.2.4.8 | Final drafts of SBNA RAS and SCUSA RAS | manual | 1d? | 2016-02-01 | 2016-02-01 |  |  |  |  |
| 257 | 1.1.1.3.4.2.5 | **Secure Board approval of RAS for other subsidiaries** |  | 85d | 2016-02-01 | 2016-05-27 |  |  |  |  |
| 258 | 1.1.1.3.4.2.5.1 | 6-week buffer for governance process(SHUSA) | manual | 1d? | 2016-02-01 | 2016-02-01 |  |  | ܁ࢹ |  |
| 259 | 1.1.1.3.4.2.5.2 | 6-week buffer for governance process(SIS NY RAS) | manual | 1d? | 2016-02-01 | 2016-02-01 |  |  | ܁ࣅ |  |
| 260 | 1.1.1.3.4.2.5.3 | 6-week buffer for governance process(Puerto Rico RAS) | manual | 1d? | 2016-02-01 | 2016-02-01 |  |  | ܁ࢾ |  |
| 261 | 1.1.1.3.4.2.5.4 | 6-week buffer for governance process(Miami RAS) | manual | 1d? | 2016-02-01 | 2016-02-01 |  |  | ܁ࣄ |  |
| 262 | 1.1.1.3.4.2.5.5 | Board-approved SHUSA-level RAS | manual | 1d? | 2016-02-01 | 2016-02-01 |  |  |  |  |
| 263 | 1.1.1.3.4.2.6 | **Communicate SIS NY RAS, Puerto Rico RAS and Miami RAS to enterprise** |  | 85d | 2016-02-01 | 2016-05-27 |  |  |  |  |
| 264 | 1.1.1.3.4.2.6.1 | Create communication materials to aid in socialization process(SIS NY) | manual | 1d? | 2016-02-01 | 2016-02-01 |  |  | ܁ࣅ |  |
| 265 | 1.1.1.3.4.2.6.2 | Create communication materials to aid in socialization process(Puerto Rico) | manual | 1d? | 2016-02-01 | 2016-02-01 |  |  | ܁ࢾ |  |
| 266 | 1.1.1.3.4.2.6.3 | Create communication materials to aid in socialization process(Miami) | manual | 1d? | 2016-02-01 | 2016-02-01 |  |  | ܁ࣄ |  |
| 267 | 1.1.1.3.4.2.6.4 | Facilitate training, town halls, etc. to communicate RAS to enterprise(SIS NY) | manual | 1d? | 2016-02-01 | 2016-02-01 |  |  | ܁ࣅ |  |
| 268 | 1.1.1.3.4.2.6.5 | Facilitate training, town halls, etc. to communicate RAS to enterprise(Puerto Rico) | manual | 1d? | 2016-02-01 | 2016-02-01 |  |  | ܁ࢾ |  |
| 269 | 1.1.1.3.4.2.6.6 | Facilitate training, town halls, etc. to communicate RAS to enterprise(Miami) | manual | 1d? | 2016-02-01 | 2016-02-01 |  |  | ܁ࣄ |  |
| 270 | 1.1.1.3.4.2.6.7 | Completed formal communication process to enterprise | manual | 1d? | 2016-02-01 | 2016-02-01 |  |  |  |  |
| 271 | 1.1.1.4 | **Embedded RAS in material processes across the enterprise** |  | 106d | 2015-08-17 | 2016-01-11 | 10d |  |  |  |
| 272 | 1.1.1.4.1 | **Initialized embedding of RAS in material processes** |  | 75d | 2015-08-17 | 2015-11-27 | 10d |  |  |  |
| 273 | 1.1.1.4.1.1 | **Test strategic plan against SHUSA-level RAS** |  | 15d | 2015-08-17 | 2015-09-04 | 10d |  |  |  |
| 274 | 1.1.1.4.1.1.1 | Compare draft of SHUSA-level RAS against draft of strategic plan |  | 5d | 2015-08-17 | 2015-08-21 | 680d | finish no earlier than 2015-08-21 | ܁ࢹ | Late |
| 275 | 1.1.1.4.1.1.2 | Identify gaps and adjust strategic plan as necessary |  | 5d | 2015-08-24 | 2015-08-28 | 675d | finish no earlier than 2015-08-28 | ܁ࢹ | Late |
| 276 | 1.1.1.4.1.1.3 | Socialize with key stakeholders (SHUSA) | manual | 5d | 2015-08-31 | 2015-09-04 |  |  | ܁ࢹ | Late |
| 277 | 1.1.1.4.1.1.4 | Socialize with key stakeholders (SBNA) | manual | 5d | 2015-08-31 | 2015-09-04 |  |  | ܁ࢺ | Late |
| 278 | 1.1.1.4.1.1.5 | Socialize with key stakeholders (SCUSA) | manual | 5d | 2015-08-31 | 2015-09-04 |  | finish no earlier than 2015-09-04 | ܁ࢻ | Late |
| 279 | 1.1.1.4.1.1.6 | Updated strategic plan, aligned with SHUSA-level RAS | milestone | 0d | 2015-09-04 | 2015-09-04 | 670d | finish no earlier than 2015-09-04 |  | Late |

| ID | WBS | Task | Type | Duration | Start | Finish | Predecessors | Total slack | Constraint | Entity | Tracking Status |
| --- | --- | --- | --- | --- | --- | --- | --- | --- | --- | --- | --- |
| 280 | 1.1.1.4.1.2 | **Update process maps for key processes with explicit RAS links** |  | 20d | 2015-11-02 | 2015-11-27 |  | 610d |  |  |  |
| 281 | 1.1.1.4.1.2.1 | Identify processes that should be explicitly linked to RAS (e.g. strategic planning, capital planning) |  | 5d | 2015-11-02 | 2015-11-06 |  | 625d | finish no earlier than 2015-11-06 | ܁ࢹ | Late |
| 282 | 1.1.1.4.1.2.2 | Detail nature of process linkage, including alignment to statements, metrics and limits described in the RAS |  | 5d | 2015-11-02 | 2015-11-06 |  | 625d | finish no earlier than 2015-11-06 | ܁ࢹ | Late |
| 283 | 1.1.1.4.1.2.3 | Assess degree to which RAS considerations are already embedded in key processes |  | 5d | 2015-11-02 | 2015-11-06 |  | 625d | finish no earlier than 2015-11-06 | ܁ࢹ | Late |
| 284 | 1.1.1.4.1.2.4 | Identify gaps and update key process maps accordingly |  | 15d | 2015-11-09 | 2015-11-27 |  | 610d | finish no earlier than 2015-11-27 | ܁ࢹ | Late |
| 285 | 1.1.1.4.1.2.5 | Updated process maps for key processes | milestone | 0d | 2015-11-27 | 2015-11-27 |  | 610d | finish no earlier than 2015-11-27 |  | Late |
| 286 | 1.1.1.4.2 | **Plan implementation of RAS in all material processes** |  | 31d | 2015-11-30 | 2016-01-11 |  | 579d |  |  |  |
| 287 | 1.1.1.4.2.1 | Detail plan for implementation of RAS in material processes (e.g. new product and business activity approval process) |  | 20d | 2015-11-30 | 2015-12-25 |  | 590d | finish no earlier than 2015-12-25 | ܁ࢹ | Late |
| 288 | 1.1.1.4.2.2 | Detail processes/controls to ensure that RAS is being further integrated into all processes until BAU |  | 10d | 2015-12-28 | 2016-01-08 |  | 580d | finish no earlier than 2016-01-08 | ܁ࢹ | Late |
| 289 | 1.1.1.4.2.3 | Completed plan for implementation in material processes | milestone | 0d | 2016-01-11 | 2016-01-11 |  | 579d | finish no earlier than 2016-01-11 |  | Late |
| 290 | 1.1.1.5 | **Year 2 and Year 3 Priorities** |  | 522d | 2016-04-01 | 2018-04-01 |  |  |  |  |  |
| 291 | 1.1.1.5.1 | Continue to cascade the risk appetite statement for the remainder of subsidiaries and business units and ensure alignment with overall SHUSA risk appetite statement | manual | 130d | 2016-01-01 | 2016-06-30 |  |  |  |  | Late |
| 292 | 1.1.1.5.2 | Embed risk appetite statement in key processes at lower levels of the organization | manual | 130d | 2016-01-01 | 2016-06-30 |  |  |  |  | Late |
| 293 | 1.1.1.5.3 | Continue to communicate risk appetite statement throughout the enterprise, including training in the new escalation and remediation process | manual | 131d | 2016-04-01 | 2016-09-30 |  |  |  |  | Late |
| 294 | 1.1.1.5.4 | **Periodically enhance risk appetite statement based on the latest results of material risk identification and improved risk measurement across the enterprise** |  | 195d | 2016-10-03 | 2017-06-30 |  | 0d |  |  |  |
| 295 | 1.1.1.5.4.1 | Round 1 (including incorporation of risk-based capital metrics) | manual | 65d | 2016-10-03 | 2016-12-30 |  |  |  |  | Late |
| 296 | 1.1.1.5.4.2 | Round 2 | manual | 65d | 2017-04-03 | 2017-06-30 |  |  |  |  | Late |
| 297 | 1.1.2 | **Risk Governance & Organization** |  | 456d | 2014-09-19 | 2016-06-17 |  |  |  |  | Late |
| 298 | 1.1.2.1 | **List of Deliverables for Sub Work-Stream** |  | 0d | 2015-06-22 | 2015-06-22 |  |  |  | ܁ࢹ |  |
| 299 | 1.1.2.1.1 | example deliverable (linked to the detail below) | milestone, manual | 0d | 2015-06-23 | 2015-06-23 |  |  | finish no earlier than 2015-06-22 | ܁ࢹ | Late |
| 300 | 1.1.2.2 | **Strengthen Board and Management Committee Oversight** |  | 115d | 2015-06-22 | 2015-11-27 |  |  |  | ܁ࢹ |  |
| 301 | 1.1.2.2.1 | **Deliverables Detail for Sub Work-Stream** |  | 115d | 2015-06-22 | 2015-11-27 |  |  |  | ܁ࢹ |  |
| 302 | 1.1.2.2.1.1 | Diagnostic of Risk Mgmt. Committee effectiveness | manual | 15d | 2015-06-22 | 2015-07-10 |  |  | finish no earlier than 2015-07-10 | ܁ࢹ | Late |
| 303 | 1.1.2.2.1.2 | Diagnostic of Risk Mgmt. Committee Complete | milestone, manual | 0d | 2015-07-13 | 2015-07-13 |  |  | finish no earlier than 2015-07-10 |  | Late |
| 304 | 1.1.2.2.1.3 | Delivery of Board Training (session 1) | manual | 20d | 2015-06-22 | 2015-07-17 |  |  | finish no earlier than 2015-07-17 | ܁ࢹ | Late |
| 305 | 1.1.2.2.1.4 | Board risk training curriculum and schedule | manual | 25d | 2015-07-07 | 2015-08-10 | 306SF |  | finish no earlier than 2015-08-10 | ܁ࢹ | Late |
| 306 | 1.1.2.2.1.5 | Delivery of Board Training (session 2) | manual | 15d | 2015-08-10 | 2015-08-28 |  |  | finish no earlier than 2015-08-28 | ܁ࢹ | Late |
| 307 | 1.1.2.2.1.6 | Board Training Complete | milestone, manual | 0d | 2015-08-31 | 2015-08-31 |  |  | finish no earlier than 2015-08-28 |  | Late |
| 308 | 1.1.2.2.1.7 | Governance and coordination mechanisms between SHUSA and parent | manual | 20d | 2015-07-13 | 2015-08-07 | 302 |  | finish no earlier than 2015-08-07 | ܁ࢹ | Late |
| 309 | 1.1.2.2.1.8 | Definition of composition / mandates / charters for BERC and Level 1 Risk Committees | manual | 45d | 2015-07-20 | 2015-09-18 | 304 |  | finish no earlier than 2015-09-18 | ܁ࢹ | Late |
| 310 | 1.1.2.2.1.9 | Definition of composition / mandates / charters for Level 2 Risk Committees | manual | 45d | 2015-08-31 | 2015-10-30 | 309FS-15d |  | finish no earlier than 2015-10-30 | ܁ࢹ | Late |
| 311 | 1.1.2.2.1.10 | Composition / Mandates / Charters Definitions for BERC and Risk Committees Complete | milestone, manual | 0d | 2015-11-02 | 2015-11-02 |  |  | finish no earlier than 2015-10-30 |  | Late |
| 312 | 1.1.2.2.1.11 | High level assessment and remediation of performance scorecards | manual | 20d | 2015-11-02 | 2015-11-27 | 310 |  | finish no earlier than 2015-11-27 | ܁ࢹ | Late |
| 313 | 1.1.2.2.1.12 | Assessment and Remediation of Performance Scorecards Complete | milestone, manual | 0d | 2015-11-30 | 2015-11-30 |  |  | finish no earlier than 2015-11-27 |  | Late |

Notes:
- 299: Description of Deliverable

| ID | WBS | Task | Type | Duration | Start | Finish | Predecessors | Constraint | Entity | Tracking Status |
| --- | --- | --- | --- | --- | --- | --- | --- | --- | --- | --- |
| 314 | 1.1.2.3 | **Target Operating Model** |  | 456d | 2014-09-19 | 2016-06-17 |  |  | ܁ࢹ |  |
| 315 | 1.1.2.3.1 | List of Deliverables for Sub Work-Stream | milestone, manual | 0d | 2014-09-19 | 2014-09-19 |  |  | ܁ࢹ | Late |
| 316 | 1.1.2.3.2 | **Deliverables Detail for Sub Work-Stream** |  | 260d | 2015-06-22 | 2016-06-17 |  |  | ܁ࢹ |  |
| 317 | 1.1.2.3.2.1 | **Strengthen the structure of risk leadership (SHUSA and subsidiary CROs, Risk Control Officers)** |  | 25d | 2015-06-22 | 2015-07-24 |  |  | ܁ࢹ |  |
| 318 | 1.1.2.3.2.1.1 | Formalize subsidiary CRO reporting lines, socialize and refine solution (SHUSA) | manual | 10d | 2015-06-22 | 2015-07-03 |  | finish no earlier than 2015-07-03 | ܁ࢹ | Late |
| 319 | 1.1.2.3.2.1.2 | Define implications of reporting lines (for Performance assessment and hiring/firing authority) (SHUSA) | manual | 10d | 2015-06-29 | 2015-07-10 | 318FS-5d | finish no earlier than 2015-07-10 | ܁ࢹ | Late |
| 320 | 1.1.2.3.2.1.3 | Design 1st LoD risk organization leadership structure including the role of RCO (SHUSA) | manual | 25d | 2015-06-22 | 2015-07-24 |  | finish no earlier than 2015-07-24 | ܁ࢹ | Late |
| 321 | 1.1.2.3.2.1.4 | Formalize subsidiary CRO reporting lines, socialize and refine solution (SBNA) | manual | 10d | 2015-06-22 | 2015-07-03 |  |  | ܁ࢺ | Late |
| 322 | 1.1.2.3.2.1.5 | Define implications of reporting lines (for Performance assessment and hiring/firing authority) (SBNA) | manual | 10d | 2015-06-29 | 2015-07-10 |  |  | ܁ࢺ | Late |
| 323 | 1.1.2.3.2.1.6 | Design 1st LoD risk organization leadership structure including the role of RCO (SBNA) | manual | 25d | 2015-06-22 | 2015-07-24 |  |  | ܁ࢺ | Late |
| 324 | 1.1.2.3.2.1.7 | Formalize subsidiary CRO reporting lines, socialize and refine solution (SCUSA) | manual | 10d | 2015-06-22 | 2015-07-03 |  |  | ܁ࢻ | Late |
| 325 | 1.1.2.3.2.1.8 | Define implications of reporting lines (for Performance assessment and hiring/firing authority) (SCUSA) | manual | 10d | 2015-06-29 | 2015-07-10 |  |  | ܁ࢻ | Late |
| 326 | 1.1.2.3.2.1.9 | Design 1st LoD risk organization leadership structure including the role of RCO (SCUSA) | manual | 25d | 2015-06-22 | 2015-07-24 |  |  | ܁ࢻ | Late |
| 327 | 1.1.2.3.2.2 | **Design Target Operating Model aligned with 3LoD principles - by risk type** |  | 180d | 2015-06-22 | 2016-02-26 |  |  | ܁ࢹ |  |
| 328 | 1.1.2.3.2.2.1 | Review of existing 1st LoD structure and capabilities | manual | 20d | 2015-06-22 | 2015-07-17 |  | finish no earlier than 2015-07-17 | ܁ࢹ | Late |
| 329 | 1.1.2.3.2.2.2 | **Risk type A (Most likely Credit)** |  | 60d | 2015-06-22 | 2015-09-11 |  |  | ܁ࢹ |  |
| 330 | 1.1.2.3.2.2.2.1 | Framework update with refined Roles and Responsibilities splits | manual | 10d | 2015-06-22 | 2015-07-03 |  | finish no earlier than 2015-07-03 | ܁ࢹ | Late |
| 331 | 1.1.2.3.2.2.2.2 | Formalized Risk group Org. Structure and Talent Assessment | manual | 25d | 2015-07-06 | 2015-08-07 | 330 | finish no earlier than 2015-08-07 | ܁ࢹ | Late |
| 332 | 1.1.2.3.2.2.2.3 | Implementation Planning, specification of interrelationships | manual | 25d | 2015-08-10 | 2015-09-11 | 331 | finish no earlier than 2015-09-11 | ܁ࢹ | Late |
| 333 | 1.1.2.3.2.2.2.4 | MILESTONE | milestone, manual | 0d | 2015-09-14 | 2015-09-14 | 332 | finish no earlier than 2015-09-11 | ܁ࢹ | Late |
| 334 | 1.1.2.3.2.2.3 | **Risk type B (Most likely ERM + RAS + Strategic)** |  | 60d | 2015-06-22 | 2015-09-11 |  |  | ܁ࢹ |  |
| 335 | 1.1.2.3.2.2.3.1 | Framework update with refined Roles and Responsibilities splits | manual | 10d | 2015-06-22 | 2015-07-03 |  | finish no earlier than 2015-07-03 | ܁ࢹ | Late |
| 336 | 1.1.2.3.2.2.3.2 | Formalized Risk group Org. Structure and Talent Assessment | manual | 25d | 2015-07-06 | 2015-08-07 | 335 | finish no earlier than 2015-08-07 | ܁ࢹ | Late |
| 337 | 1.1.2.3.2.2.3.3 | Implementation Planning, specification of interrelationships | manual | 25d | 2015-08-10 | 2015-09-11 | 336 | finish no earlier than 2015-09-11 | ܁ࢹ | Late |
| 338 | 1.1.2.3.2.2.3.4 | MILESTONE | milestone, manual | 0d | 2015-09-14 | 2015-09-14 | 337 | finish no earlier than 2015-09-11 | ܁ࢹ | Late |

| ID | WBS | Task | Type | Duration | Start | Finish | Predecessors | Constraint | Entity | Tracking Status |
| --- | --- | --- | --- | --- | --- | --- | --- | --- | --- | --- |
| 339 | 1.1.2.3.2.2.4 | **Risk type C (Most likely Market & Liquidity)** |  | 60d | 2015-09-14 | 2015-12-04 |  |  | ܁ࢹ |  |
| 340 | 1.1.2.3.2.2.4.1 | Framework update with refined Roles and Responsibilities splits | manual | 10d | 2015-09-14 | 2015-09-25 | 332 | finish no earlier than 2015-09-25 | ܁ࢹ | Late |
| 341 | 1.1.2.3.2.2.4.2 | Formalized Risk group Org. Structure and Talent Assessment | manual | 25d | 2015-09-28 | 2015-10-30 | 340 | finish no earlier than 2015-10-30 | ܁ࢹ | Late |
| 342 | 1.1.2.3.2.2.4.3 | Implementation Planning, specification of interrelationships | manual | 25d | 2015-11-02 | 2015-12-04 | 341 | finish no earlier than 2015-12-04 | ܁ࢹ | Late |
| 343 | 1.1.2.3.2.2.4.4 | MILESTONE | milestone, manual | 0d | 2015-12-07 | 2015-12-07 | 342 | finish no earlier than 2015-12-04 | ܁ࢹ | Late |
| 344 | 1.1.2.3.2.2.5 | **Risk type D (Most likely Compliance)** |  | 60d | 2015-09-14 | 2015-12-04 |  |  | ܁ࢹ |  |
| 345 | 1.1.2.3.2.2.5.1 | Framework update with refined Roles and Responsibilities splits | manual | 10d | 2015-09-14 | 2015-09-25 | 337 | finish no earlier than 2015-09-25 | ܁ࢹ | Late |
| 346 | 1.1.2.3.2.2.5.2 | Formalized Risk group Org. Structure and Talent Assessment | manual | 25d | 2015-09-28 | 2015-10-30 | 345 | finish no earlier than 2015-10-30 | ܁ࢹ | Late |
| 347 | 1.1.2.3.2.2.5.3 | Implementation Planning, specification of interrelationships | manual | 25d | 2015-11-02 | 2015-12-04 | 346 | finish no earlier than 2015-12-04 | ܁ࢹ | Late |
| 348 | 1.1.2.3.2.2.5.4 | MILESTONE | milestone, manual | 0d | 2015-12-07 | 2015-12-07 | 347 | finish no earlier than 2015-12-04 | ܁ࢹ | Late |
| 349 | 1.1.2.3.2.2.6 | **Risk type E (Most likely Risk Management Information)** |  | 60d | 2015-12-07 | 2016-02-26 |  |  | ܁ࢹ |  |
| 350 | 1.1.2.3.2.2.6.1 | Framework update with refined Roles and Responsibilities splits | manual | 10d | 2015-12-07 | 2015-12-18 | 342 | finish no earlier than 2015-12-18 | ܁ࢹ | Late |
| 351 | 1.1.2.3.2.2.6.2 | Formalized Risk group Org. Structure and Talent Assessment | manual | 25d | 2015-12-21 | 2016-01-22 | 350 | finish no earlier than 2016-01-22 | ܁ࢹ | Late |
| 352 | 1.1.2.3.2.2.6.3 | Implementation Planning, specification of interrelationships | manual | 25d | 2016-01-25 | 2016-02-26 | 351 | finish no earlier than 2016-02-26 | ܁ࢹ | Late |
| 353 | 1.1.2.3.2.2.6.4 | MILESTONE | milestone, manual | 0d | 2016-02-29 | 2016-02-29 | 352 | finish no earlier than 2016-02-26 | ܁ࢹ | Late |
| 354 | 1.1.2.3.2.2.7 | **Risk type F (Most likely Capital Risk)** |  | 60d | 2015-12-07 | 2016-02-26 |  |  | ܁ࢹ |  |
| 355 | 1.1.2.3.2.2.7.1 | Framework update with refined Roles and Responsibilities splits | manual | 10d | 2015-12-07 | 2015-12-18 | 347 | finish no earlier than 2015-12-18 | ܁ࢹ | Late |
| 356 | 1.1.2.3.2.2.7.2 | Formalized Risk group Org. Structure and Talent Assessment | manual | 25d | 2015-12-21 | 2016-01-22 | 355 | finish no earlier than 2016-01-22 | ܁ࢹ | Late |
| 357 | 1.1.2.3.2.2.7.3 | Implementation Planning, specification of interrelationships | manual | 25d | 2016-01-25 | 2016-02-26 | 356 | finish no earlier than 2016-02-26 | ܁ࢹ | Late |
| 358 | 1.1.2.3.2.2.7.4 | MILESTONE | milestone, manual | 0d | 2016-02-29 | 2016-02-29 | 357 | finish no earlier than 2016-02-26 | ܁ࢹ | Late |
| 359 | 1.1.2.3.2.3 | Post Implementation Review (First Round) | manual | 20d | 2015-12-07 | 2016-01-01 | 332FS+60d | finish no earlier than 2016-01-01 | ܁ࢹ | Late |
| 360 | 1.1.2.3.2.4 | Post Implementation Review (Second Round) | manual | 20d | 2016-02-29 | 2016-03-25 | 359SS+60d | finish no earlier than 2016-03-25 | ܁ࢹ | Late |
| 361 | 1.1.2.3.2.5 | Post Implementation Review (Third Round) | manual | 20d | 2016-05-23 | 2016-06-17 | 360SS+60d | finish no earlier than 2016-06-17 | ܁ࢹ | Late |
| 362 | 1.1.2.3.2.6 | Strong and desired culture | manual | 35d | 2016-02-29 | 2016-04-15 | 357 |  | ܁ࢹ | Late |

| ID | WBS | Task | Type | Duration | Start | Finish | Predecessors | Total slack | Work | Tracking Status | Entity |
| --- | --- | --- | --- | --- | --- | --- | --- | --- | --- | --- | --- |
| 363 | 1.1.2.4 | **Years 2-3 Plans** |  | 522d | 2016-04-01 | 2018-04-01 |  |  |  | Late |  |
| 364 | 1.1.2.4.1 | **Rollout Performance Assessment and Compensation Frameworks across the Organization** |  | 1d | 2016-04-01 | 2016-04-01 |  |  |  | Late |  |
| 365 | 1.1.2.4.1.1 | Authority to set compensation/benefits based on performance and aligned with peers | manual | 1d? | 2016-04-01 | 2016-04-01 |  |  |  |  |  |
| 366 | 1.1.2.4.1.2 | Communication and stakeholder engagement | manual | 1d? | 2016-04-01 | 2016-04-01 |  |  |  |  |  |
| 367 | 1.1.2.4.1.3 | Updates to performance assessment templates | manual | 1d? | 2016-04-01 | 2016-04-01 |  |  |  |  |  |
| 368 | 1.1.2.4.1.4 | Compensation impact analysis | manual | 1d? | 2016-04-01 | 2016-04-01 |  |  |  |  |  |
| 369 | 1.1.2.4.2 | **Complete Roll-Out of New Target Operating Model** |  | 1d? | 2016-04-01 | 2016-04-01 |  |  |  | Late |  |
| 370 | 1.1.2.4.2.1 | Communications | manual | 1d? | 2016-04-01 | 2016-04-01 |  |  |  |  |  |
| 371 | 1.1.2.4.2.2 | Development and delivery of materials to convey organizational changes to the enterprise | manual | 1d? | 2016-04-01 | 2016-04-01 |  |  |  |  |  |
| 372 | 1.1.2.4.2.3 | Enterprise-wide training and development of job descriptions with explicit focus on three lines of defense | manual | 1d? | 2016-04-01 | 2016-04-01 |  |  |  |  |  |
| 373 | 1.1.2.4.3 | **Develop Talent Management Mechanisms** |  | 1d? | 2016-04-01 | 2016-04-01 |  |  |  | Late |  |
| 374 | 1.1.2.4.3.1 | Recruitment and retention mechanisms | manual | 1d? | 2016-04-01 | 2016-04-01 |  |  |  |  |  |
| 375 | 1.1.2.4.3.2 | Professional development and job rotation programs, job satisfaction assessments, and compensation structure | manual | 1d? | 2016-04-01 | 2016-04-01 |  |  |  |  |  |
| 376 | 1.1.2.4.3.3 | Action plans for necessary remediation efforts | manual | 1d? | 2016-04-01 | 2016-04-01 |  |  |  |  |  |
| 377 | 1.1.2.4.4 | **Assess Risk Culture across the Organization** |  | 1d? | 2016-04-01 | 2016-04-01 |  |  |  | Late |  |
| 378 | 1.1.2.4.4.1 | Diagnostic of risk culture | manual | 1d? | 2016-04-01 | 2016-04-01 |  |  |  |  |  |
| 379 | 1.1.2.4.4.2 | Definition of a multi-year plan to achieve a sound, well-respected risk culture | manual | 1d? | 2016-04-01 | 2016-04-01 |  |  |  |  |  |
| 380 | 1.1.3 | **Risk Measurement** |  | 742d | 2015-05-28 | 2018-04-01 |  | 0d | 11488h |  |  |
| 381 | 1.1.3.1 | **Risk Measurement Deliverables** |  | 97d | 2015-07-28 | 2015-12-10 |  | 602d |  |  |  |
| 382 | 1.1.3.1.1 | Business Entity Material Risk Program Established for SHUSA | milestone | 0d | 2015-12-10 | 2015-12-10 | 458 | 602d |  | Late | ܁ࢹ |
| 383 | 1.1.3.1.2 | Business Entity Material Risk Program Established for SBNA | milestone | 0d | 2015-07-28 | 2015-07-28 | 580 | 699d |  | Late | ܁ࢺ |
| 384 | 1.1.3.1.3 | Business Entity Material Risk Program Established for SCUSA | milestone | 0d | 2015-07-28 | 2015-07-28 | 638 | 699d |  | Late | ܁ࢻ |
| 385 | 1.1.3.1.4 | Business Entity Material Risk Program Established for New York(SIS) | milestone | 0d | 2015-07-28 | 2015-07-28 | 712 | 699d |  | Late | ܁ࣅ |
| 386 | 1.1.3.1.5 | Business Entity Material Risk Program Established for Puerto Rico | milestone | 0d | 2015-07-28 | 2015-07-28 | 829 | 699d |  | Late | ܁ࢾ |
| 387 | 1.1.3.1.6 | Business Entity Material Risk Program Established for Miami | milestone | 0d | 2015-07-28 | 2015-07-28 | 888 | 699d |  | Late | ܁ࣄ |

| ID | WBS | Task | Type | Duration | Start | Finish | Total slack | Constraint | Resources | Work | Entity | Tracking Status | Dependency |
| --- | --- | --- | --- | --- | --- | --- | --- | --- | --- | --- | --- | --- | --- |
| 388 | 1.1.3.2 | **SHUSA - Business Entity Material Risk Program** |  | 45d | 2015-09-01 | 2015-10-31 |  |  |  | 1440h | ܁ࢹ |  |  |
| 389 | 1.1.3.2.1 | **Preparation for Aggregation to Create SHUSA Material Risk Inventory** |  | 11d | 2015-09-01 | 2015-09-15 |  |  |  | 160h | ܁ࢹ |  |  |
| 390 | 1.1.3.2.1.1 | ERM Collects Risk Inventories from Entity Risk Managers |  | 6d? | 2015-09-01 | 2015-09-08 | 668d | finish no earlier than 2015-09-08 | D. Mael | 48h | ܁ࢹ | Late |  |
| 391 | 1.1.3.2.1.2 | ERM Sorts risks and groups by Risk Type |  | 6d? | 2015-09-01 | 2015-09-08 | 668d | finish no earlier than 2015-09-08 | D. Mael | 48h | ܁ࢹ | Late |  |
| 392 | 1.1.3.2.1.3 | ERM Creates pre-Workshop, pre-read Materials and instructions for SHUSA Risk Managers |  | 6d? | 2015-09-01 | 2015-09-08 | 668d | finish no earlier than 2015-09-08 | D. Mael | 48h | ܁ࢹ | Late |  |
| 393 | 1.1.3.2.1.4 | ERM Distributes Workshop Materials to Responsible parties |  | 2d? | 2015-09-08 | 2015-09-09 | 667d | finish no earlier than 2015-09-09 | D. Mael | 16h | ܁ࢹ | Late |  |
| 394 | 1.1.3.2.1.5 | Aggregation to Create SHUSA Material Risk Inventory Prepared | milestone | 0d | 2015-09-15 | 2015-09-15 | 664d | start no earlier than 2015-09-15 |  |  | ܁ࢹ | Late | ܁д |
| 395 | 1.1.3.2.2 | **SHUSA Aggregation Workshops** |  | 13d | 2015-09-09 | 2015-09-25 |  |  |  | 1280h | ܁ࢹ |  |  |
| 396 | 1.1.3.2.2.1 | **Credit Risk Material Risk Aggregation** |  | 13d | 2015-09-09 | 2015-09-25 |  |  |  | 160h | ܁ࢹ |  |  |
| 397 | 1.1.3.2.2.1.1 | Credit Risk performs pre-Read and analysis |  | 5d? | 2015-09-09 | 2015-09-15 | 663d | finish no earlier than 2015-09-15 | A. de Castro | 40h | ܁ࢹ | Late |  |
| 398 | 1.1.3.2.2.1.2 | Risk Managers Conduct Credit pre-Workshop Enrichment and Aggregation Activites |  | 5d? | 2015-09-09 | 2015-09-15 | 663d | finish no earlier than 2015-09-15 | A. de Castro | 40h | ܁ࢹ | Late |  |
| 399 | 1.1.3.2.2.1.3 | ERM facilitates Credit Aggregation and Enrichment Workshop |  | 7d? | 2015-09-15 | 2015-09-23 | 657d | finish no earlier than 2015-09-23 | K. Martelon | 56h | ܁ࢹ | Late |  |
| 400 | 1.1.3.2.2.1.4 | Present to Level II Subcommittees |  | 3d? | 2015-09-23 | 2015-09-25 | 655d | finish no earlier than 2015-09-25 | A. de Castro | 24h | ܁ࢹ | Late |  |
| 401 | 1.1.3.2.2.1.5 | Credit Risk Material Risk Aggregation Prepared | milestone | 0d | 2015-09-25 | 2015-09-25 | 656d | start no earlier than 2015-09-25 |  |  | ܁ࢹ | Late |  |
| 402 | 1.1.3.2.2.2 | **Operational Risk Material Risk Aggregation** |  | 13d | 2015-09-09 | 2015-09-25 |  |  |  | 160h | ܁ࢹ |  |  |
| 403 | 1.1.3.2.2.2.1 | Operational Risk performs pre-Read and analysis |  | 5d? | 2015-09-09 | 2015-09-15 | 663d | finish no earlier than 2015-09-15 | S. Bhatti | 40h | ܁ࢹ | Late |  |
| 404 | 1.1.3.2.2.2.2 | Risk Managers Conduct Operational Risk pre-Workshop Enrichment and Aggregation Activites |  | 5d? | 2015-09-09 | 2015-09-15 | 663d | finish no earlier than 2015-09-15 | S. Bhatti | 40h | ܁ࢹ | Late |  |
| 405 | 1.1.3.2.2.2.3 | ERM facilitates Operational Risk Aggregation and Enrichment Workshop |  | 7d? | 2015-09-15 | 2015-09-23 | 657d | finish no earlier than 2015-09-23 | J. Christie | 56h | ܁ࢹ | Late |  |
| 406 | 1.1.3.2.2.2.4 | Present to Level II Subcommittees |  | 3d? | 2015-09-23 | 2015-09-25 | 655d | finish no earlier than 2015-09-25 | S. Bhatti | 24h | ܁ࢹ | Late |  |
| 407 | 1.1.3.2.2.2.5 | Operational Risk Material Risk Aggregation Prepared | milestone | 0d | 2015-09-25 | 2015-09-25 | 656d | start no earlier than 2015-09-25 |  |  | ܁ࢹ | Late |  |
| 408 | 1.1.3.2.2.3 | **Compliance Material Risk Aggregation** |  | 13d | 2015-09-09 | 2015-09-25 |  |  |  | 160h | ܁ࢹ |  |  |
| 409 | 1.1.3.2.2.3.1 | Compliance performs pre-Read and analysis |  | 5d? | 2015-09-09 | 2015-09-15 | 663d | finish no earlier than 2015-09-15 | C. Hunley | 40h | ܁ࢹ | Late |  |
| 410 | 1.1.3.2.2.3.2 | Risk Managers Conduct Compliance pre-Workshop Enrichment and Aggregation Activites |  | 5d? | 2015-09-09 | 2015-09-15 | 663d | finish no earlier than 2015-09-15 | C. Hunley | 40h | ܁ࢹ | Late |  |
| 411 | 1.1.3.2.2.3.3 | ERM facilitates Compliance Aggregation and Enrichment Workshop |  | 7d? | 2015-09-15 | 2015-09-23 | 657d | finish no earlier than 2015-09-23 | J. Christie | 56h | ܁ࢹ | Late |  |
| 412 | 1.1.3.2.2.3.4 | Present to Level II Subcommittees |  | 3d? | 2015-09-23 | 2015-09-25 | 655d | finish no earlier than 2015-09-25 | C. Hunley | 24h | ܁ࢹ | Late |  |
| 413 | 1.1.3.2.2.3.5 | Compliance Material Risk Aggregation Prepared | milestone | 0d | 2015-09-25 | 2015-09-25 | 656d | start no earlier than 2015-09-25 |  |  | ܁ࢹ | Late |  |

Notes:
- 394: Technology

| ID | WBS | Task | Type | Duration | Start | Finish | Total slack | Constraint | Resources | Work | Entity | Tracking Status |
| --- | --- | --- | --- | --- | --- | --- | --- | --- | --- | --- | --- | --- |
| 414 | 1.1.3.2.2.4 | **Model Material Risk Aggregation** |  | 13d | 2015-09-09 | 2015-09-25 |  |  |  | 160h | ܁ࢹ |  |
| 415 | 1.1.3.2.2.4.1 | Model Risk performs pre-Read and analysis |  | 5d? | 2015-09-09 | 2015-09-15 | 663d | finish no earlier than 2015-09-15 | R. Fahs | 40h | ܁ࢹ | Late |
| 416 | 1.1.3.2.2.4.2 | Risk Managers Conduct Model pre-Workshop Enrichment and Aggregation Activites |  | 5d? | 2015-09-09 | 2015-09-15 | 663d | finish no earlier than 2015-09-15 | R. Fahs | 40h | ܁ࢹ | Late |
| 417 | 1.1.3.2.2.4.3 | ERM facilitates Model Aggregation and Enrichment Workshop |  | 7d? | 2015-09-15 | 2015-09-23 | 657d | finish no earlier than 2015-09-23 | D. Mael | 56h | ܁ࢹ | Late |
| 418 | 1.1.3.2.2.4.4 | Present to Level II Subcommittees |  | 3d? | 2015-09-23 | 2015-09-25 | 655d | finish no earlier than 2015-09-25 | R. Fahs | 24h | ܁ࢹ | Late |
| 419 | 1.1.3.2.2.4.5 | Model Material Risk Aggregation Prepared | milestone | 0d | 2015-09-25 | 2015-09-25 | 656d | start no earlier than 2015-09-25 |  |  | ܁ࢹ | Late |
| 420 | 1.1.3.2.2.5 | **Market Material Risk Aggregation** |  | 13d | 2015-09-09 | 2015-09-25 |  |  |  | 160h | ܁ࢹ |  |
| 421 | 1.1.3.2.2.5.1 | Market Risk performs pre-Read and analysis |  | 5d? | 2015-09-09 | 2015-09-15 | 663d | finish no earlier than 2015-09-15 | M. Lasso | 40h | ܁ࢹ | Late |
| 422 | 1.1.3.2.2.5.2 | Risk Managers Conduct Market pre-Workshop Enrichment and Aggregation Activites |  | 5d? | 2015-09-09 | 2015-09-15 | 663d | finish no earlier than 2015-09-15 | M. Lasso | 40h | ܁ࢹ | Late |
| 423 | 1.1.3.2.2.5.3 | ERM facilitates Market Aggregation and Enrichment Workshop |  | 7d? | 2015-09-15 | 2015-09-23 | 657d | finish no earlier than 2015-09-23 | R. Ballou | 56h | ܁ࢹ | Late |
| 424 | 1.1.3.2.2.5.4 | Present to Level II Subcommittees |  | 3d? | 2015-09-23 | 2015-09-25 | 655d | finish no earlier than 2015-09-25 | M. Lasso | 24h | ܁ࢹ | Late |
| 425 | 1.1.3.2.2.5.5 | Market Material Risk Aggregation Prepared | milestone | 0d | 2015-09-25 | 2015-09-25 | 656d | start no earlier than 2015-09-25 |  |  | ܁ࢹ | Late |
| 426 | 1.1.3.2.2.6 | **Liquidity Material Risk Aggregation** |  | 13d | 2015-09-09 | 2015-09-25 |  |  |  | 160h | ܁ࢹ |  |
| 427 | 1.1.3.2.2.6.1 | Liquidity Risk performs pre-Read and analysis |  | 5d? | 2015-09-09 | 2015-09-15 | 663d | finish no earlier than 2015-09-15 | M. Lasso | 40h | ܁ࢹ | Late |
| 428 | 1.1.3.2.2.6.2 | Risk Managers Conduct Liquidity pre-Workshop Enrichment and Aggregation Activites |  | 5d? | 2015-09-09 | 2015-09-15 | 663d | finish no earlier than 2015-09-15 | M. Lasso | 40h | ܁ࢹ | Late |
| 429 | 1.1.3.2.2.6.3 | ERM facilitates Liquidity Aggregation and Enrichment Workshop |  | 7d? | 2015-09-15 | 2015-09-23 | 657d | finish no earlier than 2015-09-23 | R. Ballou | 56h | ܁ࢹ | Late |
| 430 | 1.1.3.2.2.6.4 | Present to Level II Subcommittees |  | 3d? | 2015-09-23 | 2015-09-25 | 655d | finish no earlier than 2015-09-25 | M. Lasso | 24h | ܁ࢹ | Late |
| 431 | 1.1.3.2.2.6.5 | Liquidity Material Risk Aggregation Prepared | milestone | 0d | 2015-09-25 | 2015-09-25 | 656d | start no earlier than 2015-09-25 |  |  | ܁ࢹ | Late |
| 432 | 1.1.3.2.2.7 | **Strategic Material Risk Aggregation** |  | 13d | 2015-09-09 | 2015-09-25 |  |  |  | 160h | ܁ࢹ |  |
| 433 | 1.1.3.2.2.7.1 | Strategic Risk performs pre-Read and analysis |  | 5d? | 2015-09-09 | 2015-09-15 | 663d | finish no earlier than 2015-09-15 | TBD | 40h | ܁ࢹ | Late |
| 434 | 1.1.3.2.2.7.2 | Risk Managers Conduct Strategic pre-Workshop Enrichment and Aggregation Activites |  | 5d? | 2015-09-09 | 2015-09-15 | 663d | finish no earlier than 2015-09-15 | TBD | 40h | ܁ࢹ | Late |
| 435 | 1.1.3.2.2.7.3 | ERM facilitates Strategic Aggregation and Enrichment Workshop |  | 7d? | 2015-09-15 | 2015-09-23 | 657d | finish no earlier than 2015-09-23 | TBD | 56h | ܁ࢹ | Late |
| 436 | 1.1.3.2.2.7.4 | Present to Level II Subcommittees |  | 3d? | 2015-09-23 | 2015-09-25 | 655d | finish no earlier than 2015-09-25 | TBD | 24h | ܁ࢹ | Late |
| 437 | 1.1.3.2.2.7.5 | Strategic Material Risk Aggregation Prepared | milestone | 0d | 2015-09-25 | 2015-09-25 | 656d | start no earlier than 2015-09-25 |  |  | ܁ࢹ | Late |

| ID | WBS | Task | Type | Duration | Start | Finish | Total slack | Free slack | Constraint | Resources | Work | Entity | Tracking Status | Dependency |
| --- | --- | --- | --- | --- | --- | --- | --- | --- | --- | --- | --- | --- | --- | --- |
| 438 | 1.1.3.2.2.8 | **Reputational Material Risk Aggregation** |  | 13d | 2015-09-09 | 2015-09-25 |  |  |  |  | 160h | ܁ࢹ |  |  |
| 439 | 1.1.3.2.2.8.1 | Reputational Risk performs pre-Read and analysis |  | 5d? | 2015-09-09 | 2015-09-15 | 663d |  | finish no earlier than 2015-09-15 | TBD | 40h | ܁ࢹ | Late |  |
| 440 | 1.1.3.2.2.8.2 | Risk Managers Conduct Reputational pre-Workshop Enrichment and Aggregation Activites |  | 5d? | 2015-09-09 | 2015-09-15 | 663d |  | finish no earlier than 2015-09-15 | TBD | 40h | ܁ࢹ | Late |  |
| 441 | 1.1.3.2.2.8.3 | ERM facilitates Reputational Aggregation and Enrichment Workshop |  | 7d? | 2015-09-15 | 2015-09-23 | 657d |  | finish no earlier than 2015-09-23 | TBD | 56h | ܁ࢹ | Late |  |
| 442 | 1.1.3.2.2.8.4 | Present to Level II Subcommittees |  | 3d? | 2015-09-23 | 2015-09-25 | 655d |  | finish no earlier than 2015-09-25 | TBD | 24h | ܁ࢹ | Late |  |
| 443 | 1.1.3.2.2.8.5 | Reputational Material Risk Aggregation Prepared | milestone | 0d | 2015-09-25 | 2015-09-25 | 656d |  | start no earlier than 2015-09-25 |  |  | ܁ࢹ | Late |  |
| 444 | 1.1.3.2.3 | **SHUSA Top Down Aggregation** |  | 11d | 2015-09-25 | 2015-10-09 |  |  |  |  |  | ܁ࢹ |  |  |
| 445 | 1.1.3.2.3.1 | ERM consolidates risks into SHUSA Inventory |  | 2d? | 2015-09-25 | 2015-09-28 | 654d |  | finish no earlier than 2015-09-28 |  |  | ܁ࢹ | Late |  |
| 446 | 1.1.3.2.3.2 | ERM distributes inventory to SHUSA Business and Risk executives |  | 3d? | 2015-09-28 | 2015-09-30 | 652d |  | finish no earlier than 2015-09-30 |  |  | ܁ࢹ | Late |  |
| 447 | 1.1.3.2.3.3 | ERM incorporates final risks into SHUSA Inventory |  | 5d? | 2015-10-05 | 2015-10-09 | 645d |  | start no earlier than 2015-10-05 |  |  | ܁ࢹ | Late |  |
| 448 | 1.1.3.2.3.4 | SHUSA Top Down Aggregation Prepared | milestone | 0d | 2015-10-09 | 2015-10-09 | 646d |  | start no earlier than 2015-10-09 |  |  | ܁ࢹ | Late |  |
| 449 | 1.1.3.2.4 | **Material Risk SHUSA Approval** |  | 16d | 2015-10-09 | 2015-10-30 |  |  |  |  |  | ܁ࢹ |  |  |
| 450 | 1.1.3.2.4.1 | Present SHUSA Material Risks to BERC |  | 6d? | 2015-10-09 | 2015-10-16 | 640d |  | finish no earlier than 2015-10-16 |  |  | ܁ࢹ | Late |  |
| 451 | 1.1.3.2.4.2 | Present SHUSA Material Risks to ERMC |  | 11d? | 2015-10-16 | 2015-10-30 | 630d |  | finish no earlier than 2015-10-30 |  |  | ܁ࢹ | Late |  |
| 452 | 1.1.3.2.4.3 | Present SHUSA Material Risks to CCAR |  | 1d? | 2015-10-30 | 2015-10-30 | 630d |  | start no earlier than 2015-10-30 |  |  | ܁ࢹ | Late |  |
| 453 | 1.1.3.2.4.4 | Material Risk SHUSA Approval | milestone | 0d | 2015-10-30 | 2015-10-30 | 631d |  | start no earlier than 2015-10-30 |  |  | ܁ࢹ | Late |  |
| 454 | 1.1.3.2.5 | **Risk ID and Assessment Policy** |  | 55d? | 2015-09-25 | 2015-12-10 | -29d | 0d |  |  |  | ܁ࢹ |  | ܁д |
| 455 | 1.1.3.2.5.1 | Risk ID and Assessment group drafts policy |  | 26d? | 2015-09-25 | 2015-10-30 | 0d |  | finish no earlier than 2015-10-30 |  |  | ܁ࢹ | Late |  |
| 456 | 1.1.3.2.5.2 | Risk ID and Assessment group presents draft to ERMC for approval |  | 6d? | 2015-10-30 | 2015-11-08 | -5d | 0d | finish no earlier than 2015-11-08 |  |  | ܁ࢹ | Late |  |
| 457 | 1.1.3.2.5.3 | Risk ID and Assessment group presents to Risk Committee (BERC) |  | 29d? | 2015-11-02 | 2015-12-10 | -29d | 0d | finish no earlier than 2015-12-10 |  |  | ܁ࢹ | Late |  |
| 458 | 1.1.3.2.5.4 | Risk ID and Assessment Policy | milestone | 0d | 2015-12-10 | 2015-12-10 | -28d | 0d | start no earlier than 2015-12-10 |  |  | ܁ࢹ | Late |  |
| 459 | 1.1.3.3 | **SBNA - Business Entity Material Risk Program** |  | 68d | 2015-05-28 | 2015-08-31 | 0d |  |  |  | 2240h | ܁ࢺ | Late |  |
| 460 | 1.1.3.3.1 | **Retail Banking Material Risk Inventory** |  | 2d | 2015-06-29 | 2015-06-30 | 0d |  |  |  | 96h | ܁ࢺ | Late |  |
| 461 | 1.1.3.3.1.1 | **Small Business Banking Material Risk Inventory** |  | 2d | 2015-06-29 | 2015-06-30 | 0d |  |  |  | 16h | ܁ࢺ |  |  |
| 462 | 1.1.3.3.1.1.1 | Deliver Final Inventory to SBNA and SHUSA ERM | manual | 2d | 2015-06-29 | 2015-06-30 |  |  |  | M. Tedesco | 16h | ܁ࢺ | Late |  |
| 463 | 1.1.3.3.1.1.2 | Small Business Banking Material Risk Inventory Prepared | milestone, manual | 0d | 2015-06-30 | 2015-06-30 |  |  |  |  |  | ܁ࢺ | Late |  |

Notes:
- 454: Technology

| ID | WBS | Task | Type | Duration | Start | Finish | Total slack | Resources | Work | Entity | Tracking Status |
| --- | --- | --- | --- | --- | --- | --- | --- | --- | --- | --- | --- |
| 464 | 1.1.3.3.1.2 | **Cards Material Risk Inventory** |  | 2d | 2015-06-29 | 2015-06-30 | 0d |  | 16h | ܁ࢺ |  |
| 465 | 1.1.3.3.1.2.1 | Deliver Final Inventory to SBNA and SHUSA ERM | manual | 2d | 2015-06-29 | 2015-06-30 |  | M. Tedesco | 16h | ܁ࢺ | Late |
| 466 | 1.1.3.3.1.2.2 | Cards Material Risk Inventory Prepared | milestone, manual | 0d | 2015-06-30 | 2015-06-30 |  |  |  | ܁ࢺ | Late |
| 467 | 1.1.3.3.1.3 | **Mortgages Material Risk Inventory** |  | 2d | 2015-06-29 | 2015-06-30 | 0d |  | 16h | ܁ࢺ |  |
| 468 | 1.1.3.3.1.3.1 | Deliver Final Inventory to SBNA and SHUSA ERM | manual | 2d | 2015-06-29 | 2015-06-30 |  | M. Tedesco | 16h | ܁ࢺ | Late |
| 469 | 1.1.3.3.1.3.2 | Mortgages Material Risk Inventory Prepared | milestone, manual | 0d | 2015-06-30 | 2015-06-30 |  |  |  | ܁ࢺ | Late |
| 470 | 1.1.3.3.1.4 | **Purchased Portfolios (RV/Marine) Material Risk Inventory** |  | 2d | 2015-06-29 | 2015-06-30 | 0d |  | 16h | ܁ࢺ |  |
| 471 | 1.1.3.3.1.4.1 | Deliver Final Inventory to SBNA and SHUSA ERM | manual | 2d | 2015-06-29 | 2015-06-30 |  | M. Tedesco | 16h | ܁ࢺ | Late |
| 472 | 1.1.3.3.1.4.2 | Purchased Portfolios (RV/Marine) Material Risk Inventory Prepared | milestone, manual | 0d | 2015-06-30 | 2015-06-30 |  |  |  | ܁ࢺ | Late |
| 473 | 1.1.3.3.1.5 | **Individual Material Risk Inventory** |  | 2d | 2015-06-29 | 2015-06-30 | 0d |  | 16h | ܁ࢺ |  |
| 474 | 1.1.3.3.1.5.1 | Deliver Final Inventory to SBNA and SHUSA ERM | manual | 2d | 2015-06-29 | 2015-06-30 |  | M. Tedesco | 16h | ܁ࢺ | Late |
| 475 | 1.1.3.3.1.5.2 | Individual Material Risk Inventory Prepared | milestone, manual | 0d | 2015-06-30 | 2015-06-30 |  |  |  | ܁ࢺ | Late |
| 476 | 1.1.3.3.1.6 | **Wealth Management Material Risk Inventory** |  | 2d | 2015-06-29 | 2015-06-30 | 0d |  | 16h | ܁ࢺ |  |
| 477 | 1.1.3.3.1.6.1 | Deliver Final Inventory to SBNA and SHUSA ERM | manual | 2d | 2015-06-29 | 2015-06-30 |  | M. Tedesco | 16h | ܁ࢺ | Late |
| 478 | 1.1.3.3.1.6.2 | Wealth Management Material Risk Inventory Prepared | milestone, manual | 0d | 2015-06-30 | 2015-06-30 |  |  |  | ܁ࢺ | Late |
| 479 | 1.1.3.3.2 | **Retail: Create Retail Banking Material Risk Inventory** |  | 24d | 2015-05-28 | 2015-06-30 | 0d |  | 208h | ܁ࢺ |  |
| 480 | 1.1.3.3.2.1 | Create Segment Material Risk Inventory (Aggregation) | manual | 24d | 2015-05-28 | 2015-06-30 |  | M. Tedesco | 192h | ܁ࢺ | Late |
| 481 | 1.1.3.3.2.2 | Segment head presents inventory to ERMC | manual | 2d | 2015-06-29 | 2015-06-30 |  | M. Tedesco | 16h | ܁ࢺ | Late |
| 482 | 1.1.3.3.2.3 | Retail: Create Retail Banking Material Risk Inventory Prepared | milestone, manual | 0d | 2015-06-30 | 2015-06-30 |  |  |  | ܁ࢺ | Late |
| 483 | 1.1.3.3.3 | **Commercial Banking Material Risk Inventory** |  | 2d | 2015-06-29 | 2015-06-30 | 0d |  | 48h | ܁ࢺ |  |
| 484 | 1.1.3.3.3.1 | **Commercial and Industrial Material Risk Inventory** |  | 2d | 2015-06-29 | 2015-06-30 | 0d |  | 16h | ܁ࢺ |  |
| 485 | 1.1.3.3.3.1.1 | Deliver Final Inventory to SBNA and SHUSA ERM | manual | 2d | 2015-06-29 | 2015-06-30 |  | C. Letters | 16h | ܁ࢺ | Late |
| 486 | 1.1.3.3.3.1.2 | Commercial and Industrial Material Risk Inventory Prepared | milestone, manual | 0d | 2015-06-30 | 2015-06-30 |  |  |  | ܁ࢺ | Late |
| 487 | 1.1.3.3.3.2 | **Specialties Material Risk Inventory** |  | 2d | 2015-06-29 | 2015-06-30 | 0d |  | 16h | ܁ࢺ |  |
| 488 | 1.1.3.3.3.2.1 | Deliver Final Inventory to SBNA and SHUSA ERM | manual | 2d | 2015-06-29 | 2015-06-30 |  | C. Letters | 16h | ܁ࢺ | Late |
| 489 | 1.1.3.3.3.2.2 | Specialties Material Risk Inventory Prepared | milestone, manual | 0d | 2015-06-30 | 2015-06-30 |  |  |  | ܁ࢺ | Late |

| ID | WBS | Task | Type | Duration | Start | Finish | Total slack | Resources | Work | Entity | Tracking Status |
| --- | --- | --- | --- | --- | --- | --- | --- | --- | --- | --- | --- |
| 490 | 1.1.3.3.3.3 | **Government Banking Material Risk Inventory** |  | 2d | 2015-06-29 | 2015-06-30 | 0d |  | 16h | ܁ࢺ |  |
| 491 | 1.1.3.3.3.3.1 | Deliver Final Inventory to SBNA and SHUSA ERM | manual | 2d | 2015-06-29 | 2015-06-30 |  | C. Letters | 16h | ܁ࢺ | Late |
| 492 | 1.1.3.3.3.3.2 | Government Banking Material Risk Inventory Prepared | milestone, manual | 0d | 2015-06-30 | 2015-06-30 |  |  |  | ܁ࢺ | Late |
| 493 | 1.1.3.3.4 | **Commercial: Create Commercial Banking Material Risk Inventory** |  | 24d | 2015-05-28 | 2015-06-30 | 0d |  | 208h | ܁ࢺ |  |
| 494 | 1.1.3.3.4.1 | Create Segment Material Risk Inventory (Aggregation) | manual | 24d | 2015-05-28 | 2015-06-30 |  | C. Letters | 192h | ܁ࢺ | Late |
| 495 | 1.1.3.3.4.2 | Segment head presents inventory to ERMC | manual | 2d | 2015-06-29 | 2015-06-30 |  | C. Letters | 16h | ܁ࢺ | Late |
| 496 | 1.1.3.3.4.3 | Create Commercial Banking Material Risk Inventory Prepared | milestone, manual | 0d | 2015-06-30 | 2015-06-30 |  |  |  | ܁ࢺ | Late |
| 497 | 1.1.3.3.5 | **Global Banking Material Risk Inventory** |  | 2d | 2015-06-29 | 2015-06-30 | 0d |  | 32h | ܁ࢺ |  |
| 498 | 1.1.3.3.5.1 | **MRG Material Risk Inventory** |  | 2d | 2015-06-29 | 2015-06-30 | 0d |  | 16h | ܁ࢺ |  |
| 499 | 1.1.3.3.5.1.1 | Deliver Final Inventory to SBNA and SHUSA ERM | manual | 2d | 2015-06-29 | 2015-06-30 |  | F. Papa | 16h | ܁ࢺ | Late |
| 500 | 1.1.3.3.5.1.2 | MRG Material Risk Inventory Prepared | milestone, manual | 0d | 2015-06-30 | 2015-06-30 |  |  |  | ܁ࢺ | Late |
| 501 | 1.1.3.3.5.2 | **Large Corporates Material Risk Inventory** |  | 2d | 2015-06-29 | 2015-06-30 | 0d |  | 16h | ܁ࢺ |  |
| 502 | 1.1.3.3.5.2.1 | Deliver Final Inventory to SBNA and SHUSA ERM | manual | 2d | 2015-06-29 | 2015-06-30 |  | F. Papa | 16h | ܁ࢺ | Late |
| 503 | 1.1.3.3.5.2.2 | Large Corporates Material Risk Inventory Prepared | milestone, manual | 0d | 2015-06-30 | 2015-06-30 |  |  |  | ܁ࢺ | Late |
| 504 | 1.1.3.3.6 | **Global: Create Global Banking Material Risk Inventory** |  | 24d | 2015-05-28 | 2015-06-30 |  |  | 208h | ܁ࢺ |  |
| 505 | 1.1.3.3.6.1 | Create Segment Material Risk Inventory (Aggregation) | manual | 24d | 2015-05-28 | 2015-06-30 |  | F. Papa | 192h | ܁ࢺ | Late |
| 506 | 1.1.3.3.6.2 | Segment head presents inventory to ERMC | manual | 2d | 2015-06-29 | 2015-06-30 |  | F. Papa | 16h | ܁ࢺ | Late |
| 507 | 1.1.3.3.6.3 | Global: Create Global Banking Material Risk Inventory Prepared | milestone, manual | 0d | 2015-06-30 | 2015-06-30 |  |  |  | ܁ࢺ | Late |
| 508 | 1.1.3.3.7 | **Automotive Finance Material Risk Inventory** |  | 2d | 2015-06-29 | 2015-06-30 | 0d |  | 48h | ܁ࢺ |  |
| 509 | 1.1.3.3.7.1 | **CEVF Material Risk Inventory** |  | 2d | 2015-06-29 | 2015-06-30 | 0d |  | 16h | ܁ࢺ |  |
| 510 | 1.1.3.3.7.1.1 | Deliver Final Inventory to SBNA and SHUSA ERM | manual | 2d | 2015-06-29 | 2015-06-30 |  | J. Murphy | 16h | ܁ࢺ | Late |
| 511 | 1.1.3.3.7.1.2 | CEVF Material Risk Inventory Prepared | milestone, manual | 0d | 2015-06-30 | 2015-06-30 |  |  |  | ܁ࢺ | Late |
| 512 | 1.1.3.3.7.2 | **Leasing Material Risk Inventory** |  | 2d | 2015-06-29 | 2015-06-30 | 0d |  | 16h | ܁ࢺ |  |
| 513 | 1.1.3.3.7.2.1 | Deliver Final Inventory to SBNA and SHUSA ERM | manual | 2d | 2015-06-29 | 2015-06-30 |  | J. Murphy | 16h | ܁ࢺ | Late |
| 514 | 1.1.3.3.7.2.2 | Leasing Material Risk Inventory Prepared | milestone, manual | 0d | 2015-06-30 | 2015-06-30 |  |  |  | ܁ࢺ | Late |

| ID | WBS | Task | Type | Duration | Start | Finish | Total slack | Resources | Work | Entity | Tracking Status |
| --- | --- | --- | --- | --- | --- | --- | --- | --- | --- | --- | --- |
| 515 | 1.1.3.3.7.3 | **Dealer Floor Plan Material Risk Inventory** |  | 2d | 2015-06-29 | 2015-06-30 | 0d |  | 16h | ܁ࢺ |  |
| 516 | 1.1.3.3.7.3.1 | Deliver Final Inventory to SBNA and SHUSA ERM | manual | 2d | 2015-06-29 | 2015-06-30 |  | J. Murphy | 16h | ܁ࢺ | Late |
| 517 | 1.1.3.3.7.3.2 | Dealer Floor Plan Material Risk Inventory Prepared | milestone, manual | 0d | 2015-06-30 | 2015-06-30 |  |  |  | ܁ࢺ | Late |
| 518 | 1.1.3.3.8 | **Automotive: Create Automotive Finance Material Risk Inventory** |  | 24d | 2015-05-28 | 2015-06-30 | 0d |  | 208h | ܁ࢺ |  |
| 519 | 1.1.3.3.8.1 | Create Segment Material Risk Inventory (Aggregation) | manual | 24d | 2015-05-28 | 2015-06-30 |  | J. Murphy | 192h | ܁ࢺ | Late |
| 520 | 1.1.3.3.8.2 | Segment head presents inventory to ERMC | manual | 2d | 2015-06-29 | 2015-06-30 |  | J. Murphy | 16h | ܁ࢺ | Late |
| 521 | 1.1.3.3.8.3 | Automotive Finance Material Risk Inventory Prepared | milestone, manual | 0d | 2015-06-30 | 2015-06-30 |  |  |  | ܁ࢺ | Late |
| 522 | 1.1.3.3.9 | **Commerical Real Estate Material Risk Inventory** |  | 3d | 2015-06-26 | 2015-06-30 | 0d |  | 32h | ܁ࢺ |  |
| 523 | 1.1.3.3.9.1 | Deliver Final Inventory to SBNA and SHUSA ERM | manual | 2d | 2015-06-26 | 2015-06-29 |  | M. Lee | 16h | ܁ࢺ | Late |
| 524 | 1.1.3.3.9.2 | Present inventory to ERMC | manual | 2d | 2015-06-29 | 2015-06-30 |  | M. Lee | 16h | ܁ࢺ | Late |
| 525 | 1.1.3.3.9.3 | Commerical Real Estate Material Risk Inventory Prepared | milestone, manual | 0d | 2015-06-30 | 2015-06-30 |  |  |  | ܁ࢺ | Late |
| 526 | 1.1.3.3.10 | **Financial Management Material Risk Inventory** |  | 3d | 2015-06-26 | 2015-06-30 | 0d |  | 32h | ܁ࢺ |  |
| 527 | 1.1.3.3.10.1 | Deliver Final Inventory to SBNA and SHUSA ERM | manual | 2d | 2015-06-26 | 2015-06-29 |  | W. Brundige | 16h | ܁ࢺ | Late |
| 528 | 1.1.3.3.10.2 | Present inventory to ERMC | manual | 2d | 2015-06-29 | 2015-06-30 |  | W. Brundige | 16h | ܁ࢺ | Late |
| 529 | 1.1.3.3.10.3 | Financial Management Material Risk Inventory Prepared | milestone, manual | 0d | 2015-06-30 | 2015-06-30 |  |  |  | ܁ࢺ | Late |
| 530 | 1.1.3.3.11 | **Corporate Center Material Risk Inventory** |  | 3d | 2015-06-26 | 2015-06-30 | 0d |  | 32h | ܁ࢺ |  |
| 531 | 1.1.3.3.11.1 | Deliver Final Inventory to SBNA and SHUSA ERM | manual | 2d | 2015-06-26 | 2015-06-29 |  | TBD | 16h | ܁ࢺ | Late |
| 532 | 1.1.3.3.11.2 | Present inventory to ERMC | manual | 2d | 2015-06-29 | 2015-06-30 |  | TBD | 16h | ܁ࢺ | Late |
| 533 | 1.1.3.3.11.3 | Corporate Center Material Risk Inventory Prepared | milestone, manual | 0d | 2015-06-30 | 2015-06-30 |  |  |  | ܁ࢺ | Late |
| 534 | 1.1.3.3.12 | **Legal Material Risk Inventory** |  | 3d | 2015-06-26 | 2015-06-30 | 0d |  | 32h | ܁ࢺ |  |
| 535 | 1.1.3.3.12.1 | Deliver Final Inventory to SBNA and SHUSA ERM | manual | 2d | 2015-06-26 | 2015-06-29 |  | L. O'Hara | 16h | ܁ࢺ | Late |
| 536 | 1.1.3.3.12.2 | Present inventory to ERMC | manual | 2d | 2015-06-29 | 2015-06-30 |  | L. O'Hara | 16h | ܁ࢺ | Late |
| 537 | 1.1.3.3.12.3 | Legal Material Risk Inventory Prepared | milestone, manual | 0d | 2015-06-30 | 2015-06-30 |  |  |  | ܁ࢺ | Late |
| 538 | 1.1.3.3.13 | **HR Material Risk Inventory** |  | 3d | 2015-06-26 | 2015-06-30 | 0d |  | 32h | ܁ࢺ |  |
| 539 | 1.1.3.3.13.1 | Deliver Final Inventory to SBNA and SHUSA ERM | manual | 2d | 2015-06-26 | 2015-06-29 |  | L. VanRoekel | 16h | ܁ࢺ | Late |
| 540 | 1.1.3.3.13.2 | Present inventory to ERMC | manual | 2d | 2015-06-29 | 2015-06-30 |  | L. VanRoekel | 16h | ܁ࢺ | Late |
| 541 | 1.1.3.3.13.3 | HR Material Risk Inventory Prepared | milestone, manual | 0d | 2015-06-30 | 2015-06-30 |  |  |  | ܁ࢺ | Late |

| ID | WBS | Task | Type | Duration | Start | Finish | Predecessors | Total slack | Free slack | Constraint | Resources | Work | Entity | Tracking Status |
| --- | --- | --- | --- | --- | --- | --- | --- | --- | --- | --- | --- | --- | --- | --- |
| 542 | 1.1.3.3.14 | **Tech and Operations Material Risk Inventory** |  | 3d | 2015-06-26 | 2015-06-30 |  | 0d |  |  |  | 32h | ܁ࢺ |  |
| 543 | 1.1.3.3.14.1 | Deliver Final Inventory to SBNA and SHUSA ERM | manual | 2d | 2015-06-26 | 2015-06-29 |  |  |  |  | D. Chaos | 16h | ܁ࢺ | Late |
| 544 | 1.1.3.3.14.2 | Present inventory to ERMC | manual | 2d | 2015-06-29 | 2015-06-30 |  |  |  |  | D. Chaos | 16h | ܁ࢺ | Late |
| 545 | 1.1.3.3.14.3 | Tech and Operations Material Risk Inventory Prepared | milestone, manual | 0d | 2015-06-30 | 2015-06-30 |  |  |  |  |  |  | ܁ࢺ | Late |
| 546 | 1.1.3.3.15 | **Finance Material Risk Inventory** |  | 3d | 2015-06-26 | 2015-06-30 |  | 0d |  |  |  | 32h | ܁ࢺ |  |
| 547 | 1.1.3.3.15.1 | Deliver Final Inventory to SBNA and SHUSA ERM | manual | 2d | 2015-06-26 | 2015-06-29 |  |  |  |  | M. Ballenger | 16h | ܁ࢺ | Late |
| 548 | 1.1.3.3.15.2 | Present inventory to ERMC | manual | 2d | 2015-06-29 | 2015-06-30 |  |  |  |  | M. Ballenger | 16h | ܁ࢺ | Late |
| 549 | 1.1.3.3.15.3 | Finance Material Risk Inventory Prepared | milestone, manual | 0d | 2015-06-30 | 2015-06-30 |  |  |  |  |  |  | ܁ࢺ | Late |
| 550 | 1.1.3.3.16 | **SBNA Aggregation Workshops** |  | 20d | 2015-07-01 | 2015-07-28 |  |  |  |  |  | 960h | ܁ࢺ |  |
| 551 | 1.1.3.3.16.1 | **Credit Risk Aggregation** |  | 20d? | 2015-07-01 | 2015-07-28 |  |  |  |  |  | 160h | ܁ࢺ |  |
| 552 | 1.1.3.3.16.1.1 | ERM disseminates Workshop Pre-Read Materials to Risk Managers |  | 8d? | 2015-07-01 | 2015-07-10 |  | 2d | 0d | finish no earlier than 2015-07-10 | R. Alhadeff | 64h | ܁ࢺ | Late |
| 553 | 1.1.3.3.16.1.2 | ERM facilitates Aggregation and Enrichment Activities |  | 10d? | 2015-07-13 | 2015-07-24 | 552 | 2d |  |  | R. Alhadeff | 80h | ܁ࢺ | Late |
| 554 | 1.1.3.3.16.1.3 | Risk Manager presents inventory to level II subcommittee |  | 2d? | 2015-07-27 | 2015-07-28 |  | 698d |  | finish no earlier than 2015-07-28 | D. Spector | 16h | ܁ࢺ | Late |
| 555 | 1.1.3.3.16.1.4 | Credit Risk Aggregation Prepared | milestone | 0d | 2015-07-28 | 2015-07-28 |  | 699d |  | start no earlier than 2015-07-28 |  |  | ܁ࢺ | Late |
| 556 | 1.1.3.3.16.2 | **Operational Risk Material Risk Aggregation** |  | 20d | 2015-07-01 | 2015-07-28 |  |  |  |  |  | 160h | ܁ࢺ |  |
| 557 | 1.1.3.3.16.2.1 | ERM disseminates Workshop Pre-Read Materials to Risk Managers |  | 8d? | 2015-07-01 | 2015-07-10 |  | 2d | 0d | finish no earlier than 2015-07-10 | R. Alhadeff | 64h | ܁ࢺ | Late |
| 558 | 1.1.3.3.16.2.2 | ERM facilitates Aggregation and Enrichment Activities |  | 10d? | 2015-07-13 | 2015-07-24 | 557 | 2d |  |  | R. Alhadeff | 80h | ܁ࢺ | Late |
| 559 | 1.1.3.3.16.2.3 | Risk Manager presents inventory to level II subcommittee |  | 2d? | 2015-07-27 | 2015-07-28 |  | 698d |  | finish no earlier than 2015-07-28 | M. Lima | 16h | ܁ࢺ | Late |
| 560 | 1.1.3.3.16.2.4 | Operational Risk Material Risk Aggregation Prepared | milestone | 0d | 2015-07-28 | 2015-07-28 |  | 699d |  | start no earlier than 2015-07-28 |  |  | ܁ࢺ | Late |
| 561 | 1.1.3.3.16.3 | **Compliance Material Risk Aggregation** |  | 20d | 2015-07-01 | 2015-07-28 |  |  |  |  |  | 160h | ܁ࢺ |  |
| 562 | 1.1.3.3.16.3.1 | ERM disseminates Workshop Pre-Read Materials to Risk Managers |  | 8d? | 2015-07-01 | 2015-07-10 |  | 2d | 0d | finish no earlier than 2015-07-10 | R. Alhadeff | 64h | ܁ࢺ | Late |
| 563 | 1.1.3.3.16.3.2 | ERM facilitates Aggregation and Enrichment Activities |  | 10d? | 2015-07-13 | 2015-07-24 | 562 | 2d |  |  | R. Alhadeff | 80h | ܁ࢺ | Late |
| 564 | 1.1.3.3.16.3.3 | Risk Manager presents inventory to level II subcommittee |  | 2d? | 2015-07-27 | 2015-07-28 |  | 698d |  | finish no earlier than 2015-07-28 | C. Roberts | 16h | ܁ࢺ | Late |
| 565 | 1.1.3.3.16.3.4 | Compliance Material Risk Aggregation Prepared | milestone | 0d | 2015-07-28 | 2015-07-28 |  | 699d |  | start no earlier than 2015-07-28 |  |  | ܁ࢺ | Late |

| ID | WBS | Task | Type | Duration | Start | Finish | Predecessors | Total slack | Free slack | Constraint | Resources | Work | Entity | Tracking Status | Text13 |
| --- | --- | --- | --- | --- | --- | --- | --- | --- | --- | --- | --- | --- | --- | --- | --- |
| 566 | 1.1.3.3.16.4 | **Model Material Risk Aggregation** |  | 20d | 2015-07-01 | 2015-07-28 |  |  |  |  |  | 160h | ܁ࢺ |  |  |
| 567 | 1.1.3.3.16.4.1 | ERM disseminates Workshop Pre-Read Materials to Risk Managers |  | 8d? | 2015-07-01 | 2015-07-10 |  | 2d | 0d | finish no earlier than 2015-07-10 | R. Alhadeff | 64h | ܁ࢺ | Late |  |
| 568 | 1.1.3.3.16.4.2 | ERM facilitates Aggregation and Enrichment Activities |  | 10d? | 2015-07-13 | 2015-07-24 | 567 | 2d |  |  | R. Alhadeff | 80h | ܁ࢺ | Late |  |
| 569 | 1.1.3.3.16.4.3 | Risk Manager presents inventory to level II subcommittee |  | 2d? | 2015-07-27 | 2015-07-28 |  | 698d |  | finish no earlier than 2015-07-28 | L. Fairweather | 16h | ܁ࢺ | Late |  |
| 570 | 1.1.3.3.16.4.4 | Model Material Risk Aggregation Prepared | milestone | 0d | 2015-07-28 | 2015-07-28 |  | 699d |  | start no earlier than 2015-07-28 |  |  | ܁ࢺ | Late |  |
| 571 | 1.1.3.3.16.5 | **Liquidity/Market Material Risk Aggregation** |  | 20d | 2015-07-01 | 2015-07-28 |  |  |  |  |  | 160h | ܁ࢺ |  |  |
| 572 | 1.1.3.3.16.5.1 | ERM disseminates Workshop Pre-Read Materials to Risk Managers |  | 8d? | 2015-07-01 | 2015-07-10 |  | 2d | 0d | finish no earlier than 2015-07-10 | R. Alhadeff | 64h | ܁ࢺ | Late |  |
| 573 | 1.1.3.3.16.5.2 | ERM facilitates Aggregation and Enrichment Activities |  | 10d? | 2015-07-13 | 2015-07-24 | 572 | 2d |  |  | R. Alhadeff | 80h | ܁ࢺ | Late |  |
| 574 | 1.1.3.3.16.5.3 | Risk Manager presents inventory to level II subcommittee |  | 2d? | 2015-07-27 | 2015-07-28 |  | 698d |  | finish no earlier than 2015-07-28 | J. McClernan | 16h | ܁ࢺ | Late |  |
| 575 | 1.1.3.3.16.5.4 | Liquidity/Market Material Risk Aggregation Prepared | milestone | 0d | 2015-07-28 | 2015-07-28 |  | 699d |  | start no earlier than 2015-07-28 |  |  | ܁ࢺ | Late |  |
| 576 | 1.1.3.3.16.6 | **Reputational/Strategic Material Risk Aggregation** |  | 20d | 2015-07-01 | 2015-07-28 |  |  |  |  |  | 160h | ܁ࢺ |  |  |
| 577 | 1.1.3.3.16.6.1 | ERM disseminates Workshop Pre-Read Materials to Risk Managers |  | 8d? | 2015-07-01 | 2015-07-10 |  | 2d | 0d | finish no earlier than 2015-07-10 | R. Alhadeff | 64h | ܁ࢺ | Late |  |
| 578 | 1.1.3.3.16.6.2 | ERM facilitates Aggregation and Enrichment Workshop |  | 10d? | 2015-07-13 | 2015-07-24 | 577 | 2d |  |  | R. Alhadeff | 80h | ܁ࢺ | Late |  |
| 579 | 1.1.3.3.16.6.3 | Risk Manager presents inventory to level II subcommittee |  | 2d? | 2015-07-27 | 2015-07-28 |  | 698d |  | finish no earlier than 2015-07-28 | M. Carbone | 16h | ܁ࢺ | Late |  |
| 580 | 1.1.3.3.16.6.4 | Reputational/Strategic Material Risk Aggregation Prepared | milestone | 0d | 2015-07-28 | 2015-07-28 |  | 699d | 0d | start no earlier than 2015-07-28 |  |  | ܁ࢺ | Late |  |
| 581 | 1.1.3.3.16.7 | Present Results to SBNA ERMC |  | 25d | 2015-07-28 | 2015-08-31 |  | 674d |  | start no earlier than 2015-07-28 |  |  | ܁ࢺ | Late |  |
| 582 | 1.1.3.3.16.8 | Present Results to SBNA BERC |  | 25d | 2015-07-28 | 2015-08-31 |  | 674d |  | start no earlier than 2015-07-28 |  |  | ܁ࢺ | Late |  |
| 583 | 1.1.3.4 | **SCUSA - Business Entity Material Risk Program** |  | 68d | 2015-05-28 | 2015-08-31 |  |  |  |  |  | 1512h | ܁ࢻ |  | J. Smith |
| 584 | 1.1.3.4.1 | **Automotive Finance Material Risk Inventory** |  | 2d | 2015-06-29 | 2015-06-30 |  | 44d |  |  |  | 32h | ܁ࢻ |  |  |
| 585 | 1.1.3.4.1.1 | Deliver Final Inventory to SCUSA SHUSA ERM |  | 2d | 2015-06-29 | 2015-06-30 |  | 44d |  | start no earlier than 2015-06-29 | Grubb/Martin | 16h | ܁ࢻ | Late |  |
| 586 | 1.1.3.4.1.2 | Present inventory to ERMC |  | 2d | 2015-06-29 | 2015-06-30 |  | 44d |  | start no earlier than 2015-06-29 | Grubb/Martin | 16h | ܁ࢻ | Late |  |
| 587 | 1.1.3.4.1.3 | Automotive Finance Material Risk Inventory Prepared | milestone | 0d | 2015-06-30 | 2015-06-30 |  | 45d |  | start no earlier than 2015-06-30 |  |  | ܁ࢻ | Late |  |
| 588 | 1.1.3.4.2 | **Personal Lending Material Risk Inventory** |  | 2d | 2015-06-29 | 2015-06-30 |  | 44d |  |  |  | 32h | ܁ࢻ |  |  |
| 589 | 1.1.3.4.2.1 | Deliver Final Inventory to SCUSA SHUSA ERM |  | 2d | 2015-06-29 | 2015-06-30 |  | 44d |  | start no earlier than 2015-06-29 | G. Schmelzel | 16h | ܁ࢻ | Late |  |
| 590 | 1.1.3.4.2.2 | Present inventory to ERMC |  | 2d | 2015-06-29 | 2015-06-30 |  | 44d |  | start no earlier than 2015-06-29 | G. Schmelzel | 16h | ܁ࢻ | Late |  |
| 591 | 1.1.3.4.2.3 | Personal Lending Material Risk Inventory Prepared | milestone | 0d | 2015-06-30 | 2015-06-30 |  | 45d |  | start no earlier than 2015-06-30 |  |  | ܁ࢻ | Late |  |

| ID | WBS | Task | Type | Duration | Start | Finish | Predecessors | Total slack | Free slack | Constraint | Resources | Work | Entity | Tracking Status | Text13 |
| --- | --- | --- | --- | --- | --- | --- | --- | --- | --- | --- | --- | --- | --- | --- | --- |
| 592 | 1.1.3.4.3 | **Human Resources Material Risk Inventory** |  | 2d | 2015-06-29 | 2015-06-30 |  | 44d |  |  |  | 32h | ܁ࢻ |  |  |
| 593 | 1.1.3.4.3.1 | Deliver Final Inventory to SCUSA SHUSA ERM |  | 2d | 2015-06-29 | 2015-06-30 |  | 44d |  | start no earlier than 2015-06-29 | M. Whatley | 16h | ܁ࢻ | Late |  |
| 594 | 1.1.3.4.3.2 | Present inventory to ERMC |  | 2d | 2015-06-29 | 2015-06-30 |  | 44d |  | start no earlier than 2015-06-29 | M. Whatley | 16h | ܁ࢻ | Late |  |
| 595 | 1.1.3.4.3.3 | Human Resources Material Risk Inventory Prepared | milestone | 0d | 2015-06-30 | 2015-06-30 |  | 45d |  | start no earlier than 2015-06-30 |  |  | ܁ࢻ | Late |  |
| 596 | 1.1.3.4.4 | **Finance and Accounting Material Risk Inventory** |  | 2d | 2015-06-29 | 2015-06-30 |  | 44d |  |  |  | 32h | ܁ࢻ |  |  |
| 597 | 1.1.3.4.4.1 | Deliver Final Inventory to SCUSA SHUSA ERM |  | 2d | 2015-06-29 | 2015-06-30 |  | 44d |  | start no earlier than 2015-06-29 | J. Kulas | 16h | ܁ࢻ | Late |  |
| 598 | 1.1.3.4.4.2 | Present inventory to ERMC |  | 2d | 2015-06-29 | 2015-06-30 |  | 44d |  | start no earlier than 2015-06-29 | J. Kulas | 16h | ܁ࢻ | Late |  |
| 599 | 1.1.3.4.4.3 | Finance and Accounting Material Risk Inventory Prepared | milestone | 0d | 2015-06-30 | 2015-06-30 |  | 45d |  | start no earlier than 2015-06-30 |  |  | ܁ࢻ | Late |  |
| 600 | 1.1.3.4.5 | **Technology and Operations Material Risk Inventory** |  | 2d | 2015-06-29 | 2015-06-30 |  | 44d |  |  |  | 32h | ܁ࢻ |  |  |
| 601 | 1.1.3.4.5.1 | Deliver Final Inventory to SCUSA SHUSA ERM |  | 2d | 2015-06-29 | 2015-06-30 |  | 44d |  | start no earlier than 2015-06-29 | J. Fugitt | 16h | ܁ࢻ | Late |  |
| 602 | 1.1.3.4.5.2 | Present inventory to ERMC |  | 2d | 2015-06-29 | 2015-06-30 |  | 44d |  | start no earlier than 2015-06-29 | J. Fugitt | 16h | ܁ࢻ | Late |  |
| 603 | 1.1.3.4.5.3 | Technology and Operations Material Risk Inventory Prepared | milestone | 0d | 2015-06-30 | 2015-06-30 |  | 44d |  | finish no earlier than 2015-06-30 |  |  | ܁ࢻ | Late |  |
| 604 | 1.1.3.4.6 | **Legal Material Risk Inventory** |  | 2d | 2015-06-29 | 2015-06-30 |  | 44d |  |  |  | 32h | ܁ࢻ |  |  |
| 605 | 1.1.3.4.6.1 | Deliver Final Inventory to SCUSA SHUSA ERM |  | 2d | 2015-06-29 | 2015-06-30 |  | 44d |  | start no earlier than 2015-06-29 | E. Burns | 16h | ܁ࢻ | Late |  |
| 606 | 1.1.3.4.6.2 | Present inventory to ERMC |  | 2d | 2015-06-29 | 2015-06-30 |  | 44d |  | start no earlier than 2015-06-29 | E. Burns | 16h | ܁ࢻ | Late |  |
| 607 | 1.1.3.4.6.3 | Legal Material Risk Inventory Prepared | milestone | 0d | 2015-06-30 | 2015-06-30 |  | 45d |  | start no earlier than 2015-06-30 |  |  | ܁ࢻ | Late |  |
| 608 | 1.1.3.4.7 | **SCUSA Aggregation Workshops** |  | 20d | 2015-07-01 | 2015-07-28 |  |  |  |  |  | 920h | ܁ࢻ |  | J. Smith |
| 609 | 1.1.3.4.7.1 | **Credit Risk Aggregation** |  | 20d | 2015-07-01 | 2015-07-28 |  |  |  |  |  | 160h | ܁ࢻ |  | J. Smith |
| 610 | 1.1.3.4.7.1.1 | ERM disseminates Workshop Pre-Read Materials to Risk Managers |  | 8d? | 2015-07-01 | 2015-07-10 |  | 2d | 0d | finish no earlier than 2015-07-10 | T. Ploetz | 64h | ܁ࢻ | Late | J. Smith |
| 611 | 1.1.3.4.7.1.2 | ERM facilitates Aggregation and Enrichment Activities |  | 10d? | 2015-07-13 | 2015-07-24 | 610 | 2d |  |  | T. Ploetz | 80h | ܁ࢻ | Late | J. Smith |
| 612 | 1.1.3.4.7.1.3 | Risk Manager presents inventory to level II subcommittee |  | 2d? | 2015-07-27 | 2015-07-28 |  | 698d |  | finish no earlier than 2015-07-28 | A. Chawla | 16h | ܁ࢻ | Late | J. Smith |
| 613 | 1.1.3.4.7.1.4 | Credit Risk Aggregation Prepared | milestone | 0d | 2015-07-28 | 2015-07-28 |  | 699d |  | start no earlier than 2015-07-28 |  |  | ܁ࢻ | Late |  |
| 614 | 1.1.3.4.7.2 | **Operational Risk Material Risk Aggregation** |  | 20d | 2015-07-01 | 2015-07-28 |  |  |  |  |  | 160h | ܁ࢻ |  | J. Smith |
| 615 | 1.1.3.4.7.2.1 | ERM disseminates Workshop Pre-Read Materials to Risk Managers |  | 8d? | 2015-07-01 | 2015-07-10 |  | 2d | 0d | finish no earlier than 2015-07-10 | T. Ploetz | 64h | ܁ࢻ | Late | J. Smith |
| 616 | 1.1.3.4.7.2.2 | ERM facilitates Aggregation and Enrichment Activities |  | 10d? | 2015-07-13 | 2015-07-24 | 615 | 2d |  |  | T. Ploetz | 80h | ܁ࢻ | Late | J. Smith |
| 617 | 1.1.3.4.7.2.3 | Risk Manager presents inventory to level II subcommittee |  | 2d? | 2015-07-27 | 2015-07-28 |  | 698d |  | finish no earlier than 2015-07-28 | C. Hicks | 16h | ܁ࢻ | Late | J. Smith |
| 618 | 1.1.3.4.7.2.4 | Operational Risk Material Risk Aggregation Prepared | milestone | 0d | 2015-07-28 | 2015-07-28 |  | 699d |  | start no earlier than 2015-07-28 |  |  | ܁ࢻ | Late |  |

| ID | WBS | Task | Type | Duration | Start | Finish | Predecessors | Total slack | Free slack | Constraint | Resources | Work | Entity | Text13 | Tracking Status |
| --- | --- | --- | --- | --- | --- | --- | --- | --- | --- | --- | --- | --- | --- | --- | --- |
| 619 | 1.1.3.4.7.3 | **Compliance Material Risk Aggregation** |  | 20d | 2015-07-01 | 2015-07-28 |  |  |  |  |  | 160h | ܁ࢻ | J. Smith |  |
| 620 | 1.1.3.4.7.3.1 | ERM disseminates Workshop Pre-Read Materials to Risk Managers |  | 8d? | 2015-07-01 | 2015-07-10 |  | 2d | 0d | finish no earlier than 2015-07-10 | T. Ploetz | 64h | ܁ࢻ | J. Smith | Late |
| 621 | 1.1.3.4.7.3.2 | ERM facilitates Aggregation and Enrichment Activities |  | 10d? | 2015-07-13 | 2015-07-24 | 620 | 2d |  |  | T. Ploetz | 80h | ܁ࢻ | J. Smith | Late |
| 622 | 1.1.3.4.7.3.3 | Risk Manager presents inventory to level II subcommittee |  | 2d? | 2015-07-27 | 2015-07-28 |  | 698d |  | finish no earlier than 2015-07-28 | M. Rodgers | 16h | ܁ࢻ | J. Smith | Late |
| 623 | 1.1.3.4.7.3.4 | Compliance Material Risk Aggregation Prepared | milestone | 0d | 2015-07-28 | 2015-07-28 |  | 699d |  | start no earlier than 2015-07-28 |  |  | ܁ࢻ |  | Late |
| 624 | 1.1.3.4.7.4 | **Model Material Risk Aggregation** |  | 20d | 2015-07-01 | 2015-07-28 |  |  |  |  |  | 160h | ܁ࢻ | J. Smith |  |
| 625 | 1.1.3.4.7.4.1 | ERM disseminates Workshop Pre-Read Materials to Risk Managers |  | 8d? | 2015-07-01 | 2015-07-10 |  | 2d | 0d | finish no earlier than 2015-07-10 | T. Ploetz | 64h | ܁ࢻ | J. Smith | Late |
| 626 | 1.1.3.4.7.4.2 | ERM facilitates Aggregation and Enrichment Activities |  | 10d? | 2015-07-13 | 2015-07-24 | 625 | 2d |  |  | T. Ploetz | 80h | ܁ࢻ | J. Smith | Late |
| 627 | 1.1.3.4.7.4.3 | Risk Manager presents inventory to level II subcommittee |  | 2d? | 2015-07-27 | 2015-07-28 |  | 698d |  | finish no earlier than 2015-07-28 | R. Fahs | 16h | ܁ࢻ | J. Smith | Late |
| 628 | 1.1.3.4.7.4.4 | Model Material Risk Aggregation Prepared | milestone | 0d | 2015-07-28 | 2015-07-28 |  | 699d |  | start no earlier than 2015-07-28 |  |  | ܁ࢻ |  | Late |
| 629 | 1.1.3.4.7.5 | **Liquidity/Market Material Risk Aggregation** |  | 20d | 2015-07-01 | 2015-07-28 |  |  |  |  |  | 160h | ܁ࢻ | J. Smith |  |
| 630 | 1.1.3.4.7.5.1 | ERM disseminates Workshop Pre-Read Materials to Risk Managers |  | 8d? | 2015-07-01 | 2015-07-10 |  | 2d | 0d | finish no earlier than 2015-07-10 | T. Ploetz | 64h | ܁ࢻ | J. Smith | Late |
| 631 | 1.1.3.4.7.5.2 | ERM facilitates Aggregation and Enrichment Activities |  | 10d? | 2015-07-13 | 2015-07-24 | 630 | 2d |  |  | T. Ploetz | 80h | ܁ࢻ | J. Smith | Late |
| 632 | 1.1.3.4.7.5.3 | Risk Manager presents inventory to level II subcommittee |  | 2d? | 2015-07-27 | 2015-07-28 |  | 698d |  | finish no earlier than 2015-07-28 | N. Rihman | 16h | ܁ࢻ | J. Smith | Late |
| 633 | 1.1.3.4.7.5.4 | Liquidity/Market Material Risk Aggregation Prepared | milestone | 0d | 2015-07-28 | 2015-07-28 |  | 699d |  | start no earlier than 2015-07-28 |  |  | ܁ࢻ |  | Late |
| 634 | 1.1.3.4.7.6 | **Reputational/Strategic Material Risk Aggregation** |  | 20d | 2015-07-01 | 2015-07-28 |  |  |  |  |  | 120h | ܁ࢻ | J. Smith |  |
| 635 | 1.1.3.4.7.6.1 | ERM disseminates Workshop Pre-Read Materials to Risk Managers |  | 8d? | 2015-07-01 | 2015-07-10 |  | 710d |  | finish no earlier than 2015-07-10 | T. Ploetz | 64h | ܁ࢻ | J. Smith | Late |
| 636 | 1.1.3.4.7.6.2 | ERM facilitates Aggregation and Enrichment Workshop |  | 5d? | 2015-07-20 | 2015-07-24 |  | 700d |  | finish no earlier than 2015-07-24 | T. Ploetz | 40h | ܁ࢻ | J. Smith | Late |
| 637 | 1.1.3.4.7.6.3 | Risk Manager presents inventory to level II subcommittee |  | 2d? | 2015-07-27 | 2015-07-28 |  | 698d |  | finish no earlier than 2015-07-28 | T. Ploetz | 16h | ܁ࢻ | J. Smith | Late |
| 638 | 1.1.3.4.7.6.4 | Reputational/Strategic Material Risk Aggregation Prepared | milestone | 0d | 2015-07-28 | 2015-07-28 |  | 699d | 0d | start no earlier than 2015-07-28 |  |  | ܁ࢻ |  | Late |
| 639 | 1.1.3.4.8 | Present Results to SCUSA ERMC |  | 25d | 2015-07-28 | 2015-08-31 |  | 674d |  | finish no earlier than 2015-08-31 | T. Ploetz | 200h | ܁ࢻ | J. Smith | Late |
| 640 | 1.1.3.4.9 | Present Results to SCUSA BERC |  | 25d | 2015-07-28 | 2015-08-31 |  | 674d |  | finish no earlier than 2015-08-31 | T. Ploetz | 200h | ܁ࢻ | J. Smith | Late |
| 641 | 1.1.3.5 | **New York Santander Investment Securities (SIS) - Business Entity Material Risk Program** |  | 68d | 2015-05-28 | 2015-08-31 |  |  |  |  |  | 1680h | ܁ࣅ | M. Murphy |  |
| 642 | 1.1.3.5.1 | **GBM-Cash Equities Brokerage Material Risk Inventory** |  | 2d | 2015-06-29 | 2015-06-30 |  | 44d |  |  |  | 32h | ܁ࣅ |  |  |
| 643 | 1.1.3.5.1.1 | Deliver Final Inventory to SIS and SHUSA ERM |  | 2d | 2015-06-29 | 2015-06-30 |  | 44d |  | start no earlier than 2015-06-29 | M. Souza | 16h | ܁ࣅ |  | Late |
| 644 | 1.1.3.5.1.2 | Present inventory to ERMC |  | 2d | 2015-06-29 | 2015-06-30 |  | 44d |  | start no earlier than 2015-06-29 | M. Souza | 16h | ܁ࣅ |  | Late |
| 645 | 1.1.3.5.1.3 | Cash Equities Brokerage Material Risk Inventory Prepared | milestone | 0d | 2015-06-30 | 2015-06-30 |  | 45d |  | start no earlier than 2015-06-30 |  |  | ܁ࣅ |  | Late |

| ID | WBS | Task | Type | Duration | Start | Finish | Total slack | Constraint | Resources | Work | Entity | Tracking Status |
| --- | --- | --- | --- | --- | --- | --- | --- | --- | --- | --- | --- | --- |
| 646 | 1.1.3.5.2 | **GBM- Debt Underwriting Material Risk Inventory** |  | 2d | 2015-06-29 | 2015-06-30 | 44d |  |  | 32h | ܁ࣅ |  |
| 647 | 1.1.3.5.2.1 | Deliver Final Inventory to SIS and SHUSA ERM |  | 2d | 2015-06-29 | 2015-06-30 | 44d | start no earlier than 2015-06-29 | S. Lew | 16h | ܁ࣅ | Late |
| 648 | 1.1.3.5.2.2 | Present inventory to ERMC |  | 2d | 2015-06-29 | 2015-06-30 | 44d | start no earlier than 2015-06-29 | S. Lew | 16h | ܁ࣅ | Late |
| 649 | 1.1.3.5.2.3 | Debt Underwriting Material Risk Inventory Prepared | milestone | 0d | 2015-06-30 | 2015-06-30 | 45d | start no earlier than 2015-06-30 |  |  | ܁ࣅ | Late |
| 650 | 1.1.3.5.3 | **GBM Equity Underwriting Material Risk Inventory** |  | 2d | 2015-06-29 | 2015-06-30 | 44d |  |  | 32h | ܁ࣅ |  |
| 651 | 1.1.3.5.3.1 | Deliver Final Inventory to SIS and SHUSA ERM |  | 2d | 2015-06-29 | 2015-06-30 | 44d | start no earlier than 2015-06-29 | S. Lew | 16h | ܁ࣅ | Late |
| 652 | 1.1.3.5.3.2 | Present inventory to ERMC |  | 2d | 2015-06-29 | 2015-06-30 | 44d | start no earlier than 2015-06-29 | S. Lew | 16h | ܁ࣅ | Late |
| 653 | 1.1.3.5.3.3 | Equity Underwriting Material Risk Inventory Prepared | milestone | 0d | 2015-06-30 | 2015-06-30 | 45d | start no earlier than 2015-06-30 |  |  | ܁ࣅ | Late |
| 654 | 1.1.3.5.4 | **GBM- Fixed Income/Bond TradingMaterial Risk Inventory** |  | 2d | 2015-06-29 | 2015-06-30 | 44d |  |  | 32h | ܁ࣅ |  |
| 655 | 1.1.3.5.4.1 | Deliver Final Inventory to SIS and SHUSA ERM |  | 2d | 2015-06-29 | 2015-06-30 | 44d | start no earlier than 2015-06-29 | J. Minuesa | 16h | ܁ࣅ | Late |
| 656 | 1.1.3.5.4.2 | Present inventory to ERMC |  | 2d | 2015-06-29 | 2015-06-30 | 44d | start no earlier than 2015-06-29 | J. Minuesa | 16h | ܁ࣅ | Late |
| 657 | 1.1.3.5.4.3 | Fixed Income/Bond TradingMaterial Risk Inventory Prepared | milestone | 0d | 2015-06-30 | 2015-06-30 | 45d | start no earlier than 2015-06-30 |  |  | ܁ࣅ | Late |
| 658 | 1.1.3.5.5 | **GBM - Futures Brokerage Material Risk Inventory** |  | 2d | 2015-06-29 | 2015-06-30 | 44d |  |  | 32h | ܁ࣅ |  |
| 659 | 1.1.3.5.5.1 | Deliver Final Inventory to SIS and SHUSA ERM |  | 2d | 2015-06-29 | 2015-06-30 | 44d | start no earlier than 2015-06-29 | I. Prada | 16h | ܁ࣅ | Late |
| 660 | 1.1.3.5.5.2 | Present inventory to ERMC |  | 2d | 2015-06-29 | 2015-06-30 | 44d | start no earlier than 2015-06-29 | I. Prada | 16h | ܁ࣅ | Late |
| 661 | 1.1.3.5.5.3 | Futures Brokerage Material Risk Inventory Prepared | milestone | 0d | 2015-06-30 | 2015-06-30 | 45d | start no earlier than 2015-06-30 |  |  | ܁ࣅ | Late |
| 662 | 1.1.3.5.6 | **GBM - Fixed Income and Equity Research Material Risk Inventory** |  | 2d | 2015-06-29 | 2015-06-30 | 44d |  |  | 32h | ܁ࣅ |  |
| 663 | 1.1.3.5.6.1 | Deliver Final Inventory to SIS and SHUSA ERM |  | 2d | 2015-06-29 | 2015-06-30 | 44d | start no earlier than 2015-06-29 | J. Gomez | 16h | ܁ࣅ | Late |
| 664 | 1.1.3.5.6.2 | Present inventory to ERMC |  | 2d | 2015-06-29 | 2015-06-30 | 44d | start no earlier than 2015-06-29 | J. Gomez | 16h | ܁ࣅ | Late |
| 665 | 1.1.3.5.6.3 | Fixed Income and Equity Research Material Risk Inventory Prepared | milestone | 0d | 2015-06-30 | 2015-06-30 | 45d | start no earlier than 2015-06-30 |  |  | ܁ࣅ | Late |
| 666 | 1.1.3.5.7 | **Human Resources Material Risk Inventory** |  | 2d | 2015-06-29 | 2015-06-30 | 44d |  |  | 32h | ܁ࣅ |  |
| 667 | 1.1.3.5.7.1 | Deliver Final Inventory to SIS and SHUSA ERM |  | 2d | 2015-06-29 | 2015-06-30 | 44d | start no earlier than 2015-06-29 | S. Fernandez | 16h | ܁ࣅ | Late |
| 668 | 1.1.3.5.7.2 | Present inventory to ERMC |  | 2d | 2015-06-29 | 2015-06-30 | 44d | start no earlier than 2015-06-29 | S. Fernandez | 16h | ܁ࣅ | Late |
| 669 | 1.1.3.5.7.3 | Human Resources Material Risk Inventory Prepared | milestone | 0d | 2015-06-30 | 2015-06-30 | 45d | start no earlier than 2015-06-30 |  |  | ܁ࣅ | Late |

| ID | WBS | Task | Type | Duration | Start | Finish | Predecessors | Total slack | Free slack | Constraint | Resources | Work | Entity | Tracking Status | Text13 |
| --- | --- | --- | --- | --- | --- | --- | --- | --- | --- | --- | --- | --- | --- | --- | --- |
| 670 | 1.1.3.5.8 | **Finance Material Risk Inventory** |  | 2d | 2015-06-29 | 2015-06-30 |  | 44d |  |  |  | 32h | ܁ࣅ |  |  |
| 671 | 1.1.3.5.8.1 | Deliver Final Inventory to SIS and SHUSA ERM |  | 2d | 2015-06-29 | 2015-06-30 |  | 44d |  | start no earlier than 2015-06-29 | F. Sempere | 16h | ܁ࣅ | Late |  |
| 672 | 1.1.3.5.8.2 | Present inventory to ERMC |  | 2d | 2015-06-29 | 2015-06-30 |  | 44d |  | start no earlier than 2015-06-29 | F. Sempere | 16h | ܁ࣅ | Late |  |
| 673 | 1.1.3.5.8.3 | Finance Material Risk Inventory Prepared | milestone | 0d | 2015-06-30 | 2015-06-30 |  | 45d |  | start no earlier than 2015-06-30 |  |  | ܁ࣅ | Late |  |
| 674 | 1.1.3.5.9 | **Technology and Operations Material Risk Inventory** |  | 2d | 2015-06-29 | 2015-06-30 |  | 44d |  |  |  | 32h | ܁ࣅ |  |  |
| 675 | 1.1.3.5.9.1 | Deliver Final Inventory to SIS and SHUSA ERM |  | 2d | 2015-06-29 | 2015-06-30 |  | 44d |  | start no earlier than 2015-06-29 | J. Davila | 16h | ܁ࣅ | Late |  |
| 676 | 1.1.3.5.9.2 | Present inventory to ERMC |  | 2d | 2015-06-29 | 2015-06-30 |  | 44d |  | start no earlier than 2015-06-29 | J. Davila | 16h | ܁ࣅ | Late |  |
| 677 | 1.1.3.5.9.3 | Technology and Operations Material Risk Inventory Prepared | milestone | 0d | 2015-06-30 | 2015-06-30 |  | 45d |  | start no earlier than 2015-06-30 |  |  | ܁ࣅ | Late |  |
| 678 | 1.1.3.5.10 | **Legal Material Risk Inventory** |  | 2d | 2015-06-29 | 2015-06-30 |  | 44d |  |  |  | 32h | ܁ࣅ |  |  |
| 679 | 1.1.3.5.10.1 | Deliver Final Inventory to SIS and SHUSA ERM |  | 2d | 2015-06-29 | 2015-06-30 |  | 44d |  | start no earlier than 2015-06-29 | J. Bathon | 16h | ܁ࣅ | Late |  |
| 680 | 1.1.3.5.10.2 | Present inventory to ERMC |  | 2d | 2015-06-29 | 2015-06-30 |  | 44d |  | start no earlier than 2015-06-29 | J. Bathon | 16h | ܁ࣅ | Late |  |
| 681 | 1.1.3.5.10.3 | Legal Material Risk Inventory Prepared | milestone | 0d | 2015-06-30 | 2015-06-30 |  | 45d |  | start no earlier than 2015-06-30 |  |  | ܁ࣅ | Late |  |
| 682 | 1.1.3.5.11 | **NY SIS Aggregation Workshops** |  | 20d? | 2015-07-01 | 2015-07-28 |  | 24d |  |  |  | 960h | ܁ࣅ |  | M. Murphy |
| 683 | 1.1.3.5.11.1 | **Credit Risk Aggregation** |  | 20d? | 2015-07-01 | 2015-07-28 |  | 24d |  |  |  | 160h | ܁ࣅ |  | M. Murphy |
| 684 | 1.1.3.5.11.1.1 | ERM disseminates Workshop Pre-Read Materials to Risk Managers |  | 8d? | 2015-07-01 | 2015-07-10 |  | 26d | 0d | finish no earlier than 2015-07-10 | J. Bathon | 64h | ܁ࣅ | Late | M. Murphy |
| 685 | 1.1.3.5.11.1.2 | ERM facilitates Aggregation and Enrichment Activities |  | 10d? | 2015-07-13 | 2015-07-24 | 684 | 26d |  |  | J. Bathon | 80h | ܁ࣅ | Late | M. Murphy |
| 686 | 1.1.3.5.11.1.3 | Risk Manager presents inventory to level II subcommittee |  | 2d? | 2015-07-27 | 2015-07-28 |  | 24d |  | finish no earlier than 2015-07-28 | R. Waltz-Cuccioli | 16h | ܁ࣅ | Late | M. Murphy |
| 687 | 1.1.3.5.11.1.4 | Credit Risk Aggregation Prepared | milestone | 0d | 2015-07-28 | 2015-07-28 |  | 25d |  | start no earlier than 2015-07-28 |  |  | ܁ࣅ | Late |  |
| 688 | 1.1.3.5.11.2 | **Operational Risk Material Risk Aggregation** |  | 20d? | 2015-07-01 | 2015-07-28 |  | 24d |  |  |  | 160h | ܁ࣅ |  | M. Murphy |
| 689 | 1.1.3.5.11.2.1 | ERM disseminates Workshop Pre-Read Materials to Risk Managers |  | 8d? | 2015-07-01 | 2015-07-10 |  | 26d | 0d | finish no earlier than 2015-07-10 | J. Bathon | 64h | ܁ࣅ | Late | M. Murphy |
| 690 | 1.1.3.5.11.2.2 | ERM facilitates Aggregation and Enrichment Activities |  | 10d? | 2015-07-13 | 2015-07-24 | 689 | 26d |  |  | J. Bathon | 80h | ܁ࣅ | Late | M. Murphy |
| 691 | 1.1.3.5.11.2.3 | Risk Manager presents inventory to level II subcommittee |  | 2d? | 2015-07-27 | 2015-07-28 |  | 24d |  | finish no earlier than 2015-07-28 | A. Schwartz | 16h | ܁ࣅ | Late | M. Murphy |
| 692 | 1.1.3.5.11.2.4 | Operational Risk Material Risk Aggregation Prepared | milestone | 0d | 2015-07-28 | 2015-07-28 |  | 25d |  | start no earlier than 2015-07-28 |  |  | ܁ࣅ | Late |  |
| 693 | 1.1.3.5.11.3 | **Compliance Material Risk Aggregation** |  | 20d? | 2015-07-01 | 2015-07-28 |  | 24d |  |  |  | 160h | ܁ࣅ |  | M. Murphy |
| 694 | 1.1.3.5.11.3.1 | ERM disseminates Workshop Pre-Read Materials to Risk Managers |  | 8d? | 2015-07-01 | 2015-07-10 |  | 26d | 0d | finish no earlier than 2015-07-10 | J. Bathon | 64h | ܁ࣅ | Late | M. Murphy |
| 695 | 1.1.3.5.11.3.2 | ERM facilitates Aggregation and Enrichment Activities |  | 10d? | 2015-07-13 | 2015-07-24 | 694 | 26d |  |  | J. Bathon | 80h | ܁ࣅ | Late | M. Murphy |
| 696 | 1.1.3.5.11.3.3 | Risk Manager presents inventory to level II subcommittee |  | 2d? | 2015-07-27 | 2015-07-28 |  | 24d |  | finish no earlier than 2015-07-28 | W. Delaney | 16h | ܁ࣅ | Late | M. Murphy |
| 697 | 1.1.3.5.11.3.4 | Compliance Material Risk Aggregation Prepared | milestone | 0d | 2015-07-28 | 2015-07-28 |  | 25d |  | start no earlier than 2015-07-28 |  |  | ܁ࣅ | Late |  |

| ID | WBS | Task | Type | Duration | Start | Finish | Predecessors | Total slack | Free slack | Constraint | Resources | Work | Entity | Text13 | Tracking Status |
| --- | --- | --- | --- | --- | --- | --- | --- | --- | --- | --- | --- | --- | --- | --- | --- |
| 698 | 1.1.3.5.11.4 | **Model Material Risk Aggregation** |  | 20d? | 2015-07-01 | 2015-07-28 |  | 24d |  |  |  | 160h | ܁ࣅ | M. Murphy |  |
| 699 | 1.1.3.5.11.4.1 | ERM disseminates Workshop Pre-Read Materials to Risk Managers |  | 8d? | 2015-07-01 | 2015-07-10 |  | 26d | 0d | finish no earlier than 2015-07-10 | J. Bathon | 64h | ܁ࣅ | M. Murphy | Late |
| 700 | 1.1.3.5.11.4.2 | ERM facilitates Aggregation and Enrichment Workshop |  | 10d? | 2015-07-13 | 2015-07-24 | 699 | 26d |  |  | J. Bathon | 80h | ܁ࣅ | M. Murphy | Late |
| 701 | 1.1.3.5.11.4.3 | Risk Manager presents inventory to level II subcommittee |  | 2d? | 2015-07-27 | 2015-07-28 |  | 24d |  | finish no earlier than 2015-07-28 | R. Fahs | 16h | ܁ࣅ | M. Murphy | Late |
| 702 | 1.1.3.5.11.4.4 | Model Material Risk Aggregation Prepared | milestone | 0d | 2015-07-28 | 2015-07-28 |  | 25d |  | start no earlier than 2015-07-28 |  |  | ܁ࣅ |  | Late |
| 703 | 1.1.3.5.11.5 | **Liquidity/Market Material Risk Aggregation** |  | 20d? | 2015-07-01 | 2015-07-28 |  | 24d |  |  |  | 160h | ܁ࣅ | M. Murphy |  |
| 704 | 1.1.3.5.11.5.1 | ERM disseminates Workshop Pre-Read Materials to Risk Managers |  | 8d? | 2015-07-01 | 2015-07-10 |  | 26d | 0d | finish no earlier than 2015-07-10 | J. Bathon | 64h | ܁ࣅ | M. Murphy | Late |
| 705 | 1.1.3.5.11.5.2 | ERM facilitates Aggregation and Enrichment Activities |  | 10d? | 2015-07-13 | 2015-07-24 | 704 | 26d |  |  | J. Bathon | 80h | ܁ࣅ | M. Murphy | Late |
| 706 | 1.1.3.5.11.5.3 | Risk Manager presents inventory to level II subcommittee |  | 2d? | 2015-07-27 | 2015-07-28 |  | 24d |  | finish no earlier than 2015-07-28 | J. Galan | 16h | ܁ࣅ | M. Murphy | Late |
| 707 | 1.1.3.5.11.5.4 | Liquidity/Market Material Risk Aggregation Prepared | milestone | 0d | 2015-07-28 | 2015-07-28 |  | 25d |  | start no earlier than 2015-07-28 |  |  | ܁ࣅ |  | Late |
| 708 | 1.1.3.5.11.6 | **Reputational/Strategic Material Risk Aggregation** |  | 20d? | 2015-07-01 | 2015-07-28 |  | 24d |  |  |  | 160h | ܁ࣅ | M. Murphy |  |
| 709 | 1.1.3.5.11.6.1 | ERM disseminates Workshop Pre-Read Materials to Risk Managers |  | 8d? | 2015-07-01 | 2015-07-10 |  | 26d | 0d | finish no earlier than 2015-07-10 | J. Bathon | 64h | ܁ࣅ | M. Murphy | Late |
| 710 | 1.1.3.5.11.6.2 | ERM facilitates Aggregation and Enrichment Activities |  | 10d? | 2015-07-13 | 2015-07-24 | 709 | 26d |  |  | J. Bathon | 80h | ܁ࣅ | M. Murphy | Late |
| 711 | 1.1.3.5.11.6.3 | Risk Manager presents inventory to level II subcommittee |  | 2d? | 2015-07-27 | 2015-07-28 |  | 24d |  | finish no earlier than 2015-07-28 | J. Bathon | 16h | ܁ࣅ | M. Murphy | Late |
| 712 | 1.1.3.5.11.6.4 | Reputational/Strategic Material Risk Aggregation Prepared | milestone | 0d | 2015-07-28 | 2015-07-28 |  | 25d | 0d | start no earlier than 2015-07-28 |  |  | ܁ࣅ |  | Late |
| 713 | 1.1.3.5.12 | Present Results to NY SIS ERMC |  | 25d | 2015-07-28 | 2015-08-31 |  | 674d |  | finish no earlier than 2015-08-31 | J. Bathon | 200h | ܁ࣅ | M. Murphy | Late |
| 714 | 1.1.3.5.13 | Present Results to NY SIS BERC |  | 25d | 2015-07-28 | 2015-08-31 |  | 674d |  | finish no earlier than 2015-08-31 | J. Bathon | 200h | ܁ࣅ | M. Murphy | Late |
| 715 | 1.1.3.6 | **Puerto Rico - Business Entity Material Risk Program** |  | 68d | 2015-05-28 | 2015-08-31 |  |  |  |  |  | 2384h | ܁ࢾ | D. Fabricio |  |
| 716 | 1.1.3.6.1 | **Retail Banking Material Risk Inventory** |  | 2d | 2015-06-29 | 2015-06-30 |  | 44d |  |  |  | 80h | ܁ࢾ |  |  |
| 717 | 1.1.3.6.1.1 | **Personal Loans Banking Material Risk Inventory** |  | 2d | 2015-06-29 | 2015-06-30 |  | 44d |  |  |  | 16h | ܁ࢾ |  |  |
| 718 | 1.1.3.6.1.1.1 | Deliver Final Inventory to PR and SHUSA ERM |  | 2d | 2015-06-29 | 2015-06-30 |  | 44d |  | start no earlier than 2015-06-29 | R. Leal | 16h | ܁ࢾ |  | Late |
| 719 | 1.1.3.6.1.1.2 | Personal Loans Banking Material Risk Inventory Prepared | milestone | 0d | 2015-06-30 | 2015-06-30 |  | 45d |  | start no earlier than 2015-06-30 |  |  | ܁ࢾ |  | Late |
| 720 | 1.1.3.6.1.2 | **Small Business Banking Material Risk Inventory** |  | 2d | 2015-06-29 | 2015-06-30 |  | 44d |  |  |  | 16h | ܁ࢾ |  |  |
| 721 | 1.1.3.6.1.2.1 | Deliver Final Inventory to PR and SHUSA ERM |  | 2d | 2015-06-29 | 2015-06-30 |  | 44d |  | start no earlier than 2015-06-29 | R. Leal | 16h | ܁ࢾ |  | Late |
| 722 | 1.1.3.6.1.2.2 | Small Business Banking Material Risk Inventory Prepared | milestone | 0d | 2015-06-30 | 2015-06-30 |  | 45d |  | start no earlier than 2015-06-30 |  |  | ܁ࢾ |  | Late |

| ID | WBS | Task | Type | Duration | Start | Finish | Total slack | Constraint | Resources | Work | Entity | Tracking Status |
| --- | --- | --- | --- | --- | --- | --- | --- | --- | --- | --- | --- | --- |
| 723 | 1.1.3.6.1.3 | **Santander Insurance Agency Material Risk Inventory** |  | 2d | 2015-06-29 | 2015-06-30 | 44d |  |  | 16h | ܁ࢾ |  |
| 724 | 1.1.3.6.1.3.1 | Deliver Final Inventory to PR and SHUSA ERM |  | 2d | 2015-06-29 | 2015-06-30 | 44d | start no earlier than 2015-06-29 | R. Leal | 16h | ܁ࢾ | Late |
| 725 | 1.1.3.6.1.3.2 | Santander Insurance Agency Material Risk Inventory Prepared | milestone | 0d | 2015-06-30 | 2015-06-30 | 45d | start no earlier than 2015-06-30 |  |  | ܁ࢾ | Late |
| 726 | 1.1.3.6.1.4 | **Credit Cards Material Risk Inventory** |  | 2d | 2015-06-29 | 2015-06-30 | 44d |  |  | 16h | ܁ࢾ |  |
| 727 | 1.1.3.6.1.4.1 | Deliver Final Inventory to PR and SHUSA ERM |  | 2d | 2015-06-29 | 2015-06-30 | 44d | start no earlier than 2015-06-29 | R. Leal | 16h | ܁ࢾ | Late |
| 728 | 1.1.3.6.1.4.2 | Credit Cards Material Risk Inventory Prepared | milestone | 0d | 2015-06-30 | 2015-06-30 | 45d | start no earlier than 2015-06-30 |  |  | ܁ࢾ | Late |
| 729 | 1.1.3.6.1.5 | **Mortgages Material Risk Inventory** |  | 2d | 2015-06-29 | 2015-06-30 | 44d |  |  | 16h | ܁ࢾ |  |
| 730 | 1.1.3.6.1.5.1 | Deliver Final Inventory to PR and SHUSA ERM |  | 2d | 2015-06-29 | 2015-06-30 | 44d | start no earlier than 2015-06-29 | R. Leal | 16h | ܁ࢾ | Late |
| 731 | 1.1.3.6.1.5.2 | Mortgages Material Risk Inventory Prepared | milestone | 0d | 2015-06-30 | 2015-06-30 | 45d | start no earlier than 2015-06-30 |  |  | ܁ࢾ | Late |
| 732 | 1.1.3.6.2 | **Retail Banking: Create Retail Banking Material Risk Inventory** |  | 24d | 2015-05-28 | 2015-06-30 | 44d |  |  | 208h | ܁ࢾ |  |
| 733 | 1.1.3.6.2.1 | Create Segment Material Risk Inventory (Aggregation) |  | 24d | 2015-05-28 | 2015-06-30 | 44d |  | R. Leal | 192h | ܁ࢾ | Late |
| 734 | 1.1.3.6.2.2 | Segment head presents inventory to ERMC |  | 2d | 2015-06-29 | 2015-06-30 | 44d | start no earlier than 2015-06-29 | R. Leal | 16h | ܁ࢾ | Late |
| 735 | 1.1.3.6.2.3 | Retail Banking Material Risk Inventory Prepared | milestone | 0d | 2015-06-30 | 2015-06-30 | 45d | start no earlier than 2015-06-30 |  |  | ܁ࢾ | Late |
| 736 | 1.1.3.6.3 | **Global Banking/Commercial Banking and CRE/Speciality and Gov't Banking Material Risk Inventory** |  | 2d | 2015-06-29 | 2015-06-30 | 44d |  |  | 48h | ܁ࢾ |  |
| 737 | 1.1.3.6.3.1 | **GBM Material Risk Inventory** |  | 2d | 2015-06-29 | 2015-06-30 | 44d |  |  | 16h | ܁ࢾ |  |
| 738 | 1.1.3.6.3.1.1 | Deliver Final Inventory to PR and SHUSA ERM |  | 2d | 2015-06-29 | 2015-06-30 | 44d | start no earlier than 2015-06-29 | L. Diaz | 16h | ܁ࢾ | Late |
| 739 | 1.1.3.6.3.1.2 | GBM Material Risk Inventory Prepared | milestone | 0d | 2015-06-30 | 2015-06-30 | 45d | start no earlier than 2015-06-30 |  |  | ܁ࢾ | Late |
| 740 | 1.1.3.6.3.2 | **Enterprise Material Risk Inventory** |  | 2d | 2015-06-29 | 2015-06-30 | 44d |  |  | 16h | ܁ࢾ |  |
| 741 | 1.1.3.6.3.2.1 | Deliver Final Inventory to PR and SHUSA ERM |  | 2d | 2015-06-29 | 2015-06-30 | 44d | start no earlier than 2015-06-29 | L. Diaz | 16h | ܁ࢾ | Late |
| 742 | 1.1.3.6.3.2.2 | Enterprise Material Risk Inventory Prepared | milestone | 0d | 2015-06-30 | 2015-06-30 | 45d | start no earlier than 2015-06-30 |  |  | ܁ࢾ | Late |
| 743 | 1.1.3.6.3.3 | **Institutional/Public Sector Material Risk Inventory** |  | 2d | 2015-06-29 | 2015-06-30 | 44d |  |  | 16h | ܁ࢾ |  |
| 744 | 1.1.3.6.3.3.1 | Deliver Final Inventory to PR and SHUSA ERM |  | 2d | 2015-06-29 | 2015-06-30 | 44d | start no earlier than 2015-06-29 | L. Diaz | 16h | ܁ࢾ | Late |
| 745 | 1.1.3.6.3.3.2 | Institutional/Public Sector Material Risk Inventory Prepared | milestone | 0d | 2015-06-30 | 2015-06-30 | 45d | start no earlier than 2015-06-30 |  |  | ܁ࢾ | Late |
| 746 | 1.1.3.6.4 | **Global Banking/Commercial Banking/CRE & Speciality: Create Global Banking Material Risk Inventory** |  | 24d | 2015-05-28 | 2015-06-30 | 44d |  |  | 208h | ܁ࢾ |  |
| 747 | 1.1.3.6.4.1 | Create Segment Material Risk Inventory (Aggregation) |  | 24d | 2015-05-28 | 2015-06-30 | 44d |  | L. Diaz | 192h | ܁ࢾ | Late |
| 748 | 1.1.3.6.4.2 | Segment head presents inventory to ERMC |  | 2d | 2015-06-29 | 2015-06-30 | 44d | start no earlier than 2015-06-29 | L. Diaz | 16h | ܁ࢾ | Late |
| 749 | 1.1.3.6.4.3 | Global Banking Material Risk Inventory Prepared | milestone | 0d | 2015-06-30 | 2015-06-30 | 45d | start no earlier than 2015-06-30 |  |  | ܁ࢾ | Late |

| ID | WBS | Task | Type | Duration | Start | Finish | Total slack | Constraint | Resources | Work | Entity | Tracking Status |
| --- | --- | --- | --- | --- | --- | --- | --- | --- | --- | --- | --- | --- |
| 750 | 1.1.3.6.5 | **Mortgage Servicing Material Risk Inventory** |  | 2d | 2015-06-29 | 2015-06-30 | 44d |  |  | 32h | ܁ࢾ |  |
| 751 | 1.1.3.6.5.1 | Deliver Final Inventory to PR and SHUSA ERM |  | 2d | 2015-06-29 | 2015-06-30 | 44d | start no earlier than 2015-06-29 | Carreras/Cupril | 16h | ܁ࢾ | Late |
| 752 | 1.1.3.6.5.2 | Present inventory to ERMC |  | 2d | 2015-06-29 | 2015-06-30 | 44d | start no earlier than 2015-06-29 | Carreras/Cupril | 16h | ܁ࢾ | Late |
| 753 | 1.1.3.6.5.3 | Mortgage Servicing Material Risk Inventory Prepared | milestone | 0d | 2015-06-30 | 2015-06-30 | 45d | start no earlier than 2015-06-30 |  |  | ܁ࢾ | Late |
| 754 | 1.1.3.6.6 | **Investment Services Material Risk Inventory** |  | 2d | 2015-06-29 | 2015-06-30 | 44d |  |  | 32h | ܁ࢾ |  |
| 755 | 1.1.3.6.6.1 | Deliver Final Inventory to PR and SHUSA ERM |  | 2d | 2015-06-29 | 2015-06-30 | 44d | start no earlier than 2015-06-29 | L. Roig | 16h | ܁ࢾ | Late |
| 756 | 1.1.3.6.6.2 | Present inventory to ERMC |  | 2d | 2015-06-29 | 2015-06-30 | 44d | start no earlier than 2015-06-29 | L. Roig | 16h | ܁ࢾ | Late |
| 757 | 1.1.3.6.6.3 | Investment Services Material Risk Inventory Prepared | milestone | 0d | 2015-06-30 | 2015-06-30 | 45d | start no earlier than 2015-06-30 |  |  | ܁ࢾ | Late |
| 758 | 1.1.3.6.7 | **Trust Material Risk Inventory** |  | 2d | 2015-06-29 | 2015-06-30 | 44d |  |  | 32h | ܁ࢾ |  |
| 759 | 1.1.3.6.7.1 | Deliver Final Inventory to PR and SHUSA ERM |  | 2d | 2015-06-29 | 2015-06-30 | 44d | start no earlier than 2015-06-29 | W. Gonzalez | 16h | ܁ࢾ | Late |
| 760 | 1.1.3.6.7.2 | Present inventory to ERMC |  | 2d | 2015-06-29 | 2015-06-30 | 44d | start no earlier than 2015-06-29 | W. Gonzalez | 16h | ܁ࢾ | Late |
| 761 | 1.1.3.6.7.3 | Trust Material Risk Inventory Prepared | milestone | 0d | 2015-06-30 | 2015-06-30 | 45d | start no earlier than 2015-06-30 |  |  | ܁ࢾ | Late |
| 762 | 1.1.3.6.8 | **Pension Plan Material Risk Inventory** |  | 2d | 2015-06-29 | 2015-06-30 | 44d |  |  | 32h | ܁ࢾ |  |
| 763 | 1.1.3.6.8.1 | Deliver Final Inventory to PR and SHUSA ERM |  | 2d | 2015-06-29 | 2015-06-30 | 44d | start no earlier than 2015-06-29 | C. Melendez | 16h | ܁ࢾ | Late |
| 764 | 1.1.3.6.8.2 | Present inventory to ERMC |  | 2d | 2015-06-29 | 2015-06-30 | 44d | start no earlier than 2015-06-29 | C. Melendez | 16h | ܁ࢾ | Late |
| 765 | 1.1.3.6.8.3 | Pension Plan Material Risk Inventory Prepared | milestone | 0d | 2015-06-30 | 2015-06-30 | 45d | start no earlier than 2015-06-30 |  |  | ܁ࢾ | Late |
| 766 | 1.1.3.6.9 | **Foreign Accounts Material Risk Inventory** |  | 2d | 2015-06-29 | 2015-06-30 | 44d |  |  | 32h | ܁ࢾ |  |
| 767 | 1.1.3.6.9.1 | Deliver Final Inventory to PR and SHUSA ERM |  | 2d | 2015-06-29 | 2015-06-30 | 44d | start no earlier than 2015-06-29 | M. Irurita | 16h | ܁ࢾ | Late |
| 768 | 1.1.3.6.9.2 | Present inventory to ERMC |  | 2d | 2015-06-29 | 2015-06-30 | 44d | start no earlier than 2015-06-29 | M. Irurita | 16h | ܁ࢾ | Late |
| 769 | 1.1.3.6.9.3 | Foreign Accounts Material Risk Inventory Prepared | milestone | 0d | 2015-06-30 | 2015-06-30 | 45d | start no earlier than 2015-06-30 |  |  | ܁ࢾ | Late |
| 770 | 1.1.3.6.10 | **Human Resources Material Risk Inventory** |  | 24d | 2015-05-28 | 2015-06-30 | 44d |  |  | 168h | ܁ࢾ |  |
| 771 | 1.1.3.6.10.1 | Create risk Inventory |  | 17d | 2015-05-28 | 2015-06-19 | 51d |  | C. Melendez | 136h | ܁ࢾ | Late |
| 772 | 1.1.3.6.10.2 | Deliver Final Inventory to PR and SHUSA ERM |  | 2d | 2015-06-29 | 2015-06-30 | 44d | start no earlier than 2015-06-29 | C. Melendez | 16h | ܁ࢾ | Late |
| 773 | 1.1.3.6.10.3 | Present inventory to ERMC |  | 2d | 2015-06-29 | 2015-06-30 | 44d | start no earlier than 2015-06-29 | C. Melendez | 16h | ܁ࢾ | Late |
| 774 | 1.1.3.6.10.4 | Human Resources Material Risk Inventory Prepared | milestone | 0d | 2015-06-30 | 2015-06-30 | 45d | start no earlier than 2015-06-30 |  |  | ܁ࢾ | Late |

| ID | WBS | Task | Type | Duration | Start | Finish | Total slack | Constraint | Resources | Work | Entity | Tracking Status |
| --- | --- | --- | --- | --- | --- | --- | --- | --- | --- | --- | --- | --- |
| 775 | 1.1.3.6.11 | **Technology and Operations Material Risk Inventory** |  | 2d | 2015-06-29 | 2015-06-30 | 44d |  |  | 32h | ܁ࢾ |  |
| 776 | 1.1.3.6.11.1 | Deliver Final Inventory to PR and SHUSA ERM |  | 2d | 2015-06-29 | 2015-06-30 | 44d | start no earlier than 2015-06-29 | J. Caceres | 16h | ܁ࢾ | Late |
| 777 | 1.1.3.6.11.2 | Present inventory to ERMC |  | 2d | 2015-06-29 | 2015-06-30 | 44d | start no earlier than 2015-06-29 | J. Caceres | 16h | ܁ࢾ | Late |
| 778 | 1.1.3.6.11.3 | Technology and Operations Material Risk Inventory Prepared | milestone | 0d | 2015-06-30 | 2015-06-30 | 45d | start no earlier than 2015-06-30 |  |  | ܁ࢾ | Late |
| 779 | 1.1.3.6.12 | **Legal Material Risk Inventory** |  | 2d | 2015-06-29 | 2015-06-30 | 44d |  |  | 32h | ܁ࢾ |  |
| 780 | 1.1.3.6.12.1 | Deliver Final Inventory to PR and SHUSA ERM |  | 2d | 2015-06-29 | 2015-06-30 | 44d | start no earlier than 2015-06-29 | R. Bonilla | 16h | ܁ࢾ | Late |
| 781 | 1.1.3.6.12.2 | Present inventory to ERMC |  | 2d | 2015-06-29 | 2015-06-30 | 44d | start no earlier than 2015-06-29 | R. Bonilla | 16h | ܁ࢾ | Late |
| 782 | 1.1.3.6.12.3 | Legal Material Risk Inventory Prepared | milestone | 0d | 2015-06-30 | 2015-06-30 | 45d | start no earlier than 2015-06-30 |  |  | ܁ࢾ | Late |
| 783 | 1.1.3.6.13 | **Finance Material Risk Inventory** |  | 2d | 2015-06-29 | 2015-06-30 | 44d |  |  | 32h | ܁ࢾ |  |
| 784 | 1.1.3.6.13.1 | Deliver Final Inventory to PR and SHUSA ERM |  | 2d | 2015-06-29 | 2015-06-30 | 44d | start no earlier than 2015-06-29 | A. Guzman | 16h | ܁ࢾ | Late |
| 785 | 1.1.3.6.13.2 | Present inventory to ERMC |  | 2d | 2015-06-29 | 2015-06-30 | 44d | start no earlier than 2015-06-29 | A. Guzman | 16h | ܁ࢾ | Late |
| 786 | 1.1.3.6.13.3 | Finance Material Risk Inventory Prepared | milestone | 0d | 2015-06-30 | 2015-06-30 | 45d | start no earlier than 2015-06-30 |  |  | ܁ࢾ | Late |
| 787 | 1.1.3.6.14 | **SFS - Island Finance Material Risk Inventory** |  | 2d | 2015-06-29 | 2015-06-30 | 44d |  |  | 32h | ܁ࢾ |  |
| 788 | 1.1.3.6.14.1 | Deliver Final Inventory to PR and SHUSA ERM |  | 2d | 2015-06-29 | 2015-06-30 | 44d | start no earlier than 2015-06-29 | J. Villamil | 16h | ܁ࢾ | Late |
| 789 | 1.1.3.6.14.2 | Present inventory to ERMC |  | 2d | 2015-06-29 | 2015-06-30 | 44d | start no earlier than 2015-06-29 | J. Villamil | 16h | ܁ࢾ | Late |
| 790 | 1.1.3.6.14.3 | SFS - Island Finance Material Risk Inventory Prepared | milestone | 0d | 2015-06-30 | 2015-06-30 | 45d | start no earlier than 2015-06-30 |  |  | ܁ࢾ | Late |
| 791 | 1.1.3.6.15 | **SFS - Special Assets Material Risk Inventory** |  | 2d | 2015-06-29 | 2015-06-30 | 44d |  |  | 32h | ܁ࢾ |  |
| 792 | 1.1.3.6.15.1 | Deliver Final Inventory to PR and SHUSA ERM |  | 2d | 2015-06-29 | 2015-06-30 | 44d | start no earlier than 2015-06-29 | M. Guiven | 16h | ܁ࢾ | Late |
| 793 | 1.1.3.6.15.2 | Present inventory to ERMC |  | 2d | 2015-06-29 | 2015-06-30 | 44d | start no earlier than 2015-06-29 | M. Guiven | 16h | ܁ࢾ | Late |
| 794 | 1.1.3.6.15.3 | SFS - Special Assets Material Risk Inventory Prepared | milestone | 0d | 2015-06-30 | 2015-06-30 | 45d | start no earlier than 2015-06-30 |  |  | ܁ࢾ | Late |
| 795 | 1.1.3.6.16 | **Santander Overseas Bank - GBM Material Risk Inventory** |  | 2d | 2015-06-29 | 2015-06-30 | 44d |  |  | 32h | ܁ࢾ |  |
| 796 | 1.1.3.6.16.1 | Deliver Final Inventory to PR and SHUSA ERM |  | 2d | 2015-06-29 | 2015-06-30 | 44d | start no earlier than 2015-06-29 | Diaz/Semidei | 16h | ܁ࢾ | Late |
| 797 | 1.1.3.6.16.2 | Present inventory to ERMC |  | 2d | 2015-06-29 | 2015-06-30 | 44d | start no earlier than 2015-06-29 | Diaz/Semidei | 16h | ܁ࢾ | Late |
| 798 | 1.1.3.6.16.3 | Santander Overseas Bank - GBM Material Risk Inventory Prepared | milestone | 0d | 2015-06-30 | 2015-06-30 | 45d | start no earlier than 2015-06-30 |  |  | ܁ࢾ | Late |

| ID | WBS | Task | Type | Duration | Start | Finish | Predecessors | Total slack | Free slack | Constraint | Resources | Work | Entity | Text13 | Tracking Status |
| --- | --- | --- | --- | --- | --- | --- | --- | --- | --- | --- | --- | --- | --- | --- | --- |
| 799 | 1.1.3.6.17 | **Puerto Rico - Santander Bancorp Aggregation Workshops** |  | 20d | 2015-07-01 | 2015-07-28 |  |  |  |  |  | 920h | ܁ࢾ | D. Fabricio |  |
| 800 | 1.1.3.6.17.1 | **Credit Risk Aggregation** |  | 20d | 2015-07-01 | 2015-07-28 |  |  |  |  |  | 160h | ܁ࢾ | D. Fabricio |  |
| 801 | 1.1.3.6.17.1.1 | ERM disseminates Workshop Pre-Read Materials to Risk Managers |  | 8d? | 2015-07-01 | 2015-07-10 |  | 2d | 0d | finish no earlier than 2015-07-10 | J. Jurado | 64h | ܁ࢾ | D. Fabricio | Late |
| 802 | 1.1.3.6.17.1.2 | ERM facilitates Aggregation and Enrichment Activities |  | 10d? | 2015-07-13 | 2015-07-24 | 801 | 2d |  |  | J. Jurado | 80h | ܁ࢾ | D. Fabricio | Late |
| 803 | 1.1.3.6.17.1.3 | Risk Manager presents inventory to level II subcommittee |  | 2d? | 2015-07-27 | 2015-07-28 |  | 698d |  | finish no earlier than 2015-07-28 | Cardona/Ramirez | 16h | ܁ࢾ | D. Fabricio | Late |
| 804 | 1.1.3.6.17.1.4 | Credit Risk Aggregation Prepared | milestone | 0d | 2015-07-28 | 2015-07-28 |  | 699d |  | start no earlier than 2015-07-28 |  |  | ܁ࢾ |  | Late |
| 805 | 1.1.3.6.17.2 | **Operational Risk Material Risk Aggregation** |  | 20d | 2015-07-01 | 2015-07-28 |  |  |  |  |  | 160h | ܁ࢾ | D. Fabricio |  |
| 806 | 1.1.3.6.17.2.1 | ERM disseminates Workshop Pre-Read Materials to Risk Managers |  | 8d? | 2015-07-01 | 2015-07-10 |  | 2d | 0d | finish no earlier than 2015-07-10 | J. Jurado | 64h | ܁ࢾ | D. Fabricio | Late |
| 807 | 1.1.3.6.17.2.2 | ERM facilitates Aggregation and Enrichment Activities |  | 10d? | 2015-07-13 | 2015-07-24 | 806 | 2d |  |  | J. Jurado | 80h | ܁ࢾ | D. Fabricio | Late |
| 808 | 1.1.3.6.17.2.3 | Risk Manager presents inventory to level II subcommittee |  | 2d? | 2015-07-27 | 2015-07-28 |  | 698d |  | finish no earlier than 2015-07-28 | G. Cupril | 16h | ܁ࢾ | D. Fabricio | Late |
| 809 | 1.1.3.6.17.2.4 | Operational Risk Material Risk Aggregation Prepared | milestone | 0d | 2015-07-28 | 2015-07-28 |  | 699d |  | start no earlier than 2015-07-28 |  |  | ܁ࢾ |  | Late |
| 810 | 1.1.3.6.17.3 | **Compliance Material Risk Aggregation** |  | 20d | 2015-07-01 | 2015-07-28 |  |  |  |  |  | 160h | ܁ࢾ | D. Fabricio |  |
| 811 | 1.1.3.6.17.3.1 | ERM disseminates Workshop Pre-Read Materials to Risk Managers |  | 8d? | 2015-07-01 | 2015-07-10 |  | 2d | 0d | finish no earlier than 2015-07-10 | J. Jurado | 64h | ܁ࢾ | D. Fabricio | Late |
| 812 | 1.1.3.6.17.3.2 | ERM facilitates Aggregation and Enrichment Workshop |  | 10d? | 2015-07-13 | 2015-07-24 | 811 | 2d |  |  | J. Jurado | 80h | ܁ࢾ | D. Fabricio | Late |
| 813 | 1.1.3.6.17.3.3 | Risk Manager presents inventory to level II subcommittee |  | 2d? | 2015-07-27 | 2015-07-28 |  | 698d |  | finish no earlier than 2015-07-28 | E. Rodriguez | 16h | ܁ࢾ | D. Fabricio | Late |
| 814 | 1.1.3.6.17.3.4 | Compliance Material Risk Aggregation Prepared | milestone | 0d | 2015-07-28 | 2015-07-28 |  | 699d |  | start no earlier than 2015-07-28 |  |  | ܁ࢾ |  | Late |
| 815 | 1.1.3.6.17.4 | **Model Material Risk Aggregation** |  | 20d | 2015-07-01 | 2015-07-28 |  |  |  |  |  | 160h | ܁ࢾ | D. Fabricio |  |
| 816 | 1.1.3.6.17.4.1 | ERM disseminates Workshop Pre-Read Materials to Risk Managers |  | 8d? | 2015-07-01 | 2015-07-10 |  | 2d | 0d | finish no earlier than 2015-07-10 | J. Jurado | 64h | ܁ࢾ | D. Fabricio | Late |
| 817 | 1.1.3.6.17.4.2 | ERM facilitates Aggregation and Enrichment Activities |  | 10d? | 2015-07-13 | 2015-07-24 | 816 | 2d |  |  | J. Jurado | 80h | ܁ࢾ | D. Fabricio | Late |
| 818 | 1.1.3.6.17.4.3 | Risk Manager presents inventory to level II subcommittee |  | 2d? | 2015-07-27 | 2015-07-28 |  | 698d |  | finish no earlier than 2015-07-28 | M. Bobonis | 16h | ܁ࢾ | D. Fabricio | Late |
| 819 | 1.1.3.6.17.4.4 | Model Material Risk Aggregation Prepared | milestone | 0d | 2015-07-28 | 2015-07-28 |  | 699d |  | start no earlier than 2015-07-28 |  |  | ܁ࢾ |  | Late |
| 820 | 1.1.3.6.17.5 | **Liquidity/Market Material Risk Aggregation** |  | 20d | 2015-07-01 | 2015-07-28 |  |  |  |  |  | 160h | ܁ࢾ | D. Fabricio |  |
| 821 | 1.1.3.6.17.5.1 | ERM disseminates Workshop Pre-Read Materials to Risk Managers |  | 8d? | 2015-07-01 | 2015-07-10 |  | 2d | 0d | finish no earlier than 2015-07-10 | J. Jurado | 64h | ܁ࢾ | D. Fabricio | Late |
| 822 | 1.1.3.6.17.5.2 | ERM facilitates Aggregation and Enrichment Activities |  | 10d? | 2015-07-13 | 2015-07-24 | 821 | 2d |  |  | J. Jurado | 80h | ܁ࢾ | D. Fabricio | Late |
| 823 | 1.1.3.6.17.5.3 | Risk Manager presents inventory to level II subcommittee |  | 2d? | 2015-07-27 | 2015-07-28 |  | 698d |  | finish no earlier than 2015-07-28 | Castro/Bruno | 16h | ܁ࢾ | D. Fabricio | Late |
| 824 | 1.1.3.6.17.5.4 | Liquidity/Market Material Risk Aggregation Prepared | milestone | 0d | 2015-07-28 | 2015-07-28 |  | 699d |  | start no earlier than 2015-07-28 |  |  | ܁ࢾ |  | Late |

| ID | WBS | Task | Type | Duration | Start | Finish | Total slack | Free slack | Constraint | Resources | Work | Entity | Text13 | Tracking Status |
| --- | --- | --- | --- | --- | --- | --- | --- | --- | --- | --- | --- | --- | --- | --- |
| 825 | 1.1.3.6.17.6 | **Reputational/Strategic Material Risk Aggregation** |  | 20d | 2015-07-01 | 2015-07-28 |  |  |  |  | 120h | ܁ࢾ | D. Fabricio |  |
| 826 | 1.1.3.6.17.6.1 | ERM disseminates Workshop Pre-Read Materials to Risk Managers |  | 8d? | 2015-07-01 | 2015-07-10 | 710d |  | finish no earlier than 2015-07-10 | J. Jurado | 64h | ܁ࢾ | D. Fabricio | Late |
| 827 | 1.1.3.6.17.6.2 | ERM facilitates Aggregation and Enrichment Workshop |  | 5d? | 2015-07-20 | 2015-07-24 | 700d |  | finish no earlier than 2015-07-24 | J. Jurado | 40h | ܁ࢾ | D. Fabricio | Late |
| 828 | 1.1.3.6.17.6.3 | Risk Manager presents inventory to level II subcommittee |  | 2d? | 2015-07-27 | 2015-07-28 | 698d |  | finish no earlier than 2015-07-28 | A. Guzman | 16h | ܁ࢾ | D. Fabricio | Late |
| 829 | 1.1.3.6.17.6.4 | Reputational/Strategic Material Risk Aggregation Prepared | milestone | 0d | 2015-07-28 | 2015-07-28 | 699d | 0d | start no earlier than 2015-07-28 |  |  | ܁ࢾ |  | Late |
| 830 | 1.1.3.6.18 | Present Results to PR Santander Bancorp ERMC |  | 25d | 2015-07-28 | 2015-08-31 | 674d |  | start no earlier than 2015-07-28 | J. Jurado | 200h | ܁ࢾ | D. Fabricio | Late |
| 831 | 1.1.3.6.19 | Present Results to PR Santander Bancorp BERC |  | 25d | 2015-07-28 | 2015-08-31 | 674d |  | start no earlier than 2015-07-28 | J. Jurado | 200h | ܁ࢾ | D. Fabricio | Late |
| 832 | 1.1.3.7 | **Miami - Business Entity Material Risk Program** |  | 68d | 2015-05-28 | 2015-08-31 |  |  |  | L. Madariaga | 2232h | ܁ࣄ | L. Madargia |  |
| 833 | 1.1.3.7.1 | **Private Banking Material Risk Inventory** |  | 2d | 2015-06-29 | 2015-06-30 | 44d |  |  |  | 32h | ܁ࣄ |  |  |
| 834 | 1.1.3.7.1.1 | Deliver Final Inventory to Miami and SHUSA ERM |  | 2d | 2015-06-29 | 2015-06-30 | 44d |  | start no earlier than 2015-06-29 | Valdenbro/Moll/Alvarez | 16h | ܁ࣄ |  | Late |
| 835 | 1.1.3.7.1.2 | Present inventory to ERMC |  | 2d | 2015-06-29 | 2015-06-30 | 44d |  | start no earlier than 2015-06-29 | Valdenbro/Moll/Alvarez | 16h | ܁ࣄ |  | Late |
| 836 | 1.1.3.7.1.3 | Private Banking Material Risk Inventory Prepared | milestone | 0d | 2015-06-30 | 2015-06-30 | 45d |  | start no earlier than 2015-06-30 |  |  | ܁ࣄ |  | Late |
| 837 | 1.1.3.7.2 | **Personal Lending Material Risk Inventory** |  | 2d | 2015-06-29 | 2015-06-30 | 44d |  |  |  | 32h | ܁ࣄ |  |  |
| 838 | 1.1.3.7.2.1 | Deliver Final Inventory to Miami and SHUSA ERM |  | 2d | 2015-06-29 | 2015-06-30 | 44d |  | start no earlier than 2015-06-29 | F. Gonzales-Rivera | 16h | ܁ࣄ |  | Late |
| 839 | 1.1.3.7.2.2 | Present inventory to ERMC |  | 2d | 2015-06-29 | 2015-06-30 | 44d |  | start no earlier than 2015-06-29 | F. Gonzales-Rivera | 16h | ܁ࣄ |  | Late |
| 840 | 1.1.3.7.2.3 | Personal Lending Material Risk Inventory Prepared | milestone | 0d | 2015-06-30 | 2015-06-30 | 45d |  | start no earlier than 2015-06-30 |  |  | ܁ࣄ |  | Late |
| 841 | 1.1.3.7.3 | **Human Resources Material Risk Inventory** |  | 2d | 2015-06-29 | 2015-06-30 | 44d |  |  |  | 32h | ܁ࣄ |  |  |
| 842 | 1.1.3.7.3.1 | Deliver Final Inventory to Miami and SHUSA ERM |  | 2d | 2015-06-29 | 2015-06-30 | 44d |  | start no earlier than 2015-06-29 | M. Mancini | 16h | ܁ࣄ |  | Late |
| 843 | 1.1.3.7.3.2 | Present inventory to ERMC |  | 2d | 2015-06-29 | 2015-06-30 | 44d |  | start no earlier than 2015-06-29 | M. Mancini | 16h | ܁ࣄ |  | Late |
| 844 | 1.1.3.7.3.3 | Human Resources Material Risk Inventory Prepared | milestone | 0d | 2015-06-30 | 2015-06-30 | 45d |  | start no earlier than 2015-06-30 |  |  | ܁ࣄ |  | Late |
| 845 | 1.1.3.7.4 | **Finance and Accounting Material Risk Inventory** |  | 24d | 2015-05-28 | 2015-06-30 | 44d |  |  |  | 168h | ܁ࣄ |  |  |
| 846 | 1.1.3.7.4.1 | Create risk Inventory |  | 17d | 2015-05-28 | 2015-06-19 | 51d |  |  | E. Franco-Espinosa | 136h | ܁ࣄ |  | Late |
| 847 | 1.1.3.7.4.2 | Deliver Final Inventory to Miami and SHUSA ERM |  | 2d | 2015-06-29 | 2015-06-30 | 44d |  | start no earlier than 2015-06-29 | E. Franco-Espinosa | 16h | ܁ࣄ |  | Late |
| 848 | 1.1.3.7.4.3 | Present inventory to ERMC |  | 2d | 2015-06-29 | 2015-06-30 | 44d |  | start no earlier than 2015-06-29 | E. Franco-Espinosa | 16h | ܁ࣄ |  | Late |
| 849 | 1.1.3.7.4.4 | Finance and Accounting Material Risk Inventory Prepared | milestone | 0d | 2015-06-30 | 2015-06-30 | 45d |  | start no earlier than 2015-06-30 |  |  | ܁ࣄ |  | Late |

| ID | WBS | Task | Type | Duration | Start | Finish | Predecessors | Total slack | Free slack | Constraint | Resources | Work | Entity | Tracking Status |
| --- | --- | --- | --- | --- | --- | --- | --- | --- | --- | --- | --- | --- | --- | --- |
| 850 | 1.1.3.7.5 | **Technology and Operations Material Risk Inventory** |  | 2d | 2015-06-29 | 2015-06-30 |  | 44d |  |  |  | 32h | ܁ࣄ |  |
| 851 | 1.1.3.7.5.1 | Deliver Final Inventory to Miami and SHUSA ERM |  | 2d | 2015-06-29 | 2015-06-30 |  | 44d |  | start no earlier than 2015-06-29 | R. Bucaro | 16h | ܁ࣄ | Late |
| 852 | 1.1.3.7.5.2 | Present inventory to ERMC |  | 2d | 2015-06-29 | 2015-06-30 |  | 44d |  | start no earlier than 2015-06-29 | R. Bucaro | 16h | ܁ࣄ | Late |
| 853 | 1.1.3.7.5.3 | Technology and Operations Material Risk Inventory Prepared | milestone | 0d | 2015-06-30 | 2015-06-30 |  | 45d |  | start no earlier than 2015-06-30 |  |  | ܁ࣄ | Late |
| 854 | 1.1.3.7.6 | **Legal Material Risk Inventory** |  | 2d | 2015-06-29 | 2015-06-30 |  | 44d |  |  |  | 32h | ܁ࣄ |  |
| 855 | 1.1.3.7.6.1 | Deliver Final Inventory to Miami and SHUSA ERM |  | 2d | 2015-06-29 | 2015-06-30 |  | 44d |  | start no earlier than 2015-06-29 | J. Villamil-Morel | 16h | ܁ࣄ | Late |
| 856 | 1.1.3.7.6.2 | Present inventory to ERMC |  | 2d | 2015-06-29 | 2015-06-30 |  | 44d |  | start no earlier than 2015-06-29 | J. Villamil-Morel | 16h | ܁ࣄ | Late |
| 857 | 1.1.3.7.6.3 | Legal Material Risk Inventory Prepared | milestone | 0d | 2015-06-30 | 2015-06-30 |  | 45d |  | start no earlier than 2015-06-30 |  |  | ܁ࣄ | Late |
| 858 | 1.1.3.7.7 | **Miami Aggregation Workshops** |  | 20d | 2015-07-01 | 2015-07-28 |  |  |  |  |  | 960h | ܁ࣄ |  |
| 859 | 1.1.3.7.7.1 | **Credit Risk Aggregation** |  | 20d | 2015-07-01 | 2015-07-28 |  |  |  |  |  | 160h | ܁ࣄ |  |
| 860 | 1.1.3.7.7.1.1 | ERM disseminates Workshop Pre-Read Materials to Risk Managers |  | 8d? | 2015-07-01 | 2015-07-10 |  | 2d | 0d | finish no earlier than 2015-07-10 | P. Prado | 64h | ܁ࣄ | Late |
| 861 | 1.1.3.7.7.1.2 | ERM facilitates Aggregation and Enrichment Activities |  | 10d? | 2015-07-13 | 2015-07-24 | 860 | 2d |  |  | P. Prado | 80h | ܁ࣄ | Late |
| 862 | 1.1.3.7.7.1.3 | Risk Manager presents inventory to level II subcommittee |  | 2d? | 2015-07-27 | 2015-07-28 |  | 698d |  | finish no earlier than 2015-07-28 | F. Rivera | 16h | ܁ࣄ | Late |
| 863 | 1.1.3.7.7.1.4 | Credit Risk Aggregation Prepared | milestone | 0d | 2015-07-28 | 2015-07-28 |  | 699d |  | start no earlier than 2015-07-28 |  |  | ܁ࣄ | Late |
| 864 | 1.1.3.7.7.2 | **Operational Risk Material Risk Aggregation** |  | 20d | 2015-07-01 | 2015-07-28 |  |  |  |  |  | 160h | ܁ࣄ |  |
| 865 | 1.1.3.7.7.2.1 | ERM disseminates Workshop Pre-Read Materials to Risk Managers |  | 8d? | 2015-07-01 | 2015-07-10 |  | 2d | 0d | finish no earlier than 2015-07-10 | P. Prado | 64h | ܁ࣄ | Late |
| 866 | 1.1.3.7.7.2.2 | ERM facilitates Aggregation and Enrichment Activities |  | 10d? | 2015-07-13 | 2015-07-24 | 865 | 2d |  |  | P. Prado | 80h | ܁ࣄ | Late |
| 867 | 1.1.3.7.7.2.3 | Risk Manager presents inventory to level II subcommittee |  | 2d? | 2015-07-27 | 2015-07-28 |  | 698d |  | finish no earlier than 2015-07-28 | M. Galigarcia | 16h | ܁ࣄ | Late |
| 868 | 1.1.3.7.7.2.4 | Operational Risk Material Risk Aggregation Prepared | milestone | 0d | 2015-07-28 | 2015-07-28 |  | 699d |  | start no earlier than 2015-07-28 |  |  | ܁ࣄ | Late |
| 869 | 1.1.3.7.7.3 | **Compliance Material Risk Aggregation** |  | 20d | 2015-07-01 | 2015-07-28 |  |  |  |  |  | 160h | ܁ࣄ |  |
| 870 | 1.1.3.7.7.3.1 | ERM disseminates Workshop Pre-Read Materials to Risk Managers |  | 8d? | 2015-07-01 | 2015-07-10 |  | 2d | 0d | finish no earlier than 2015-07-10 | P. Prado | 64h | ܁ࣄ | Late |
| 871 | 1.1.3.7.7.3.2 | ERM facilitates Aggregation and Enrichment Activities |  | 10d? | 2015-07-13 | 2015-07-24 | 870 | 2d |  |  | P. Prado | 80h | ܁ࣄ | Late |
| 872 | 1.1.3.7.7.3.3 | Risk Manager presents inventory to level II subcommittee |  | 2d? | 2015-07-27 | 2015-07-28 |  | 698d |  | finish no earlier than 2015-07-28 | P. Prado | 16h | ܁ࣄ | Late |
| 873 | 1.1.3.7.7.3.4 | Compliance Material Risk Aggregation Prepared | milestone | 0d | 2015-07-28 | 2015-07-28 |  | 699d |  | start no earlier than 2015-07-28 |  |  | ܁ࣄ | Late |

| ID | WBS | Task | Type | Duration | Start | Finish | Predecessors | Total slack | Free slack | Constraint | Resources | Work | Entity | Tracking Status |
| --- | --- | --- | --- | --- | --- | --- | --- | --- | --- | --- | --- | --- | --- | --- |
| 874 | 1.1.3.7.7.4 | **Model Material Risk Aggregation** |  | 20d | 2015-07-01 | 2015-07-28 |  |  |  |  |  | 160h | ܁ࣄ |  |
| 875 | 1.1.3.7.7.4.1 | ERM disseminates Workshop Pre-Read Materials to Risk Managers |  | 8d? | 2015-07-01 | 2015-07-10 |  | 2d | 0d | finish no earlier than 2015-07-10 | P. Prado | 64h | ܁ࣄ | Late |
| 876 | 1.1.3.7.7.4.2 | ERM facilitates Aggregation and Enrichment Workshop |  | 10d? | 2015-07-13 | 2015-07-24 | 875 | 2d |  |  | P. Prado | 80h | ܁ࣄ | Late |
| 877 | 1.1.3.7.7.4.3 | Risk Manager presents inventory to level II subcommittee |  | 2d? | 2015-07-27 | 2015-07-28 |  | 698d |  | finish no earlier than 2015-07-28 | R. Fahs | 16h | ܁ࣄ | Late |
| 878 | 1.1.3.7.7.4.4 | Model Material Risk Aggregation Prepared | milestone | 0d | 2015-07-28 | 2015-07-28 |  | 699d |  | start no earlier than 2015-07-28 |  |  | ܁ࣄ | Late |
| 879 | 1.1.3.7.7.5 | **Liquidity/Market Material Risk Aggregation** |  | 20d | 2015-07-01 | 2015-07-28 |  |  |  |  |  | 160h | ܁ࣄ |  |
| 880 | 1.1.3.7.7.5.1 | ERM disseminates Workshop Pre-Read Materials to Risk Managers |  | 8d? | 2015-07-01 | 2015-07-10 |  | 2d | 0d | finish no earlier than 2015-07-10 | P. Prado | 64h | ܁ࣄ | Late |
| 881 | 1.1.3.7.7.5.2 | ERM facilitates Aggregation and Enrichment Activities |  | 10d? | 2015-07-13 | 2015-07-24 | 880 | 2d |  |  | P. Prado | 80h | ܁ࣄ | Late |
| 882 | 1.1.3.7.7.5.3 | Risk Manager presents inventory to level II subcommittee |  | 2d? | 2015-07-27 | 2015-07-28 |  | 698d |  | finish no earlier than 2015-07-28 | Rivera/Fernandez | 16h | ܁ࣄ | Late |
| 883 | 1.1.3.7.7.5.4 | Liquidity/Market Material Risk Aggregation Prepared | milestone | 0d | 2015-07-28 | 2015-07-28 |  | 699d |  | start no earlier than 2015-07-28 |  |  | ܁ࣄ | Late |
| 884 | 1.1.3.7.7.6 | **Reputational/Strategic Material Risk Aggregation** |  | 20d | 2015-07-01 | 2015-07-28 |  |  |  |  |  | 160h | ܁ࣄ |  |
| 885 | 1.1.3.7.7.6.1 | ERM disseminates Workshop Pre-Read Materials to Risk Managers |  | 8d? | 2015-07-01 | 2015-07-10 |  | 2d | 0d | finish no earlier than 2015-07-10 | P. Prado | 64h | ܁ࣄ | Late |
| 886 | 1.1.3.7.7.6.2 | ERM facilitates Aggregation and Enrichment Workshop |  | 10d? | 2015-07-13 | 2015-07-24 | 885 | 2d |  |  | P. Prado | 80h | ܁ࣄ | Late |
| 887 | 1.1.3.7.7.6.3 | Risk Manager presents inventory to level II subcommittee |  | 2d? | 2015-07-27 | 2015-07-28 |  | 698d |  | finish no earlier than 2015-07-28 | Rivera/Fernandez | 16h | ܁ࣄ | Late |
| 888 | 1.1.3.7.7.6.4 | Reputational/Strategic Material Risk Aggregation Prepared | milestone | 0d | 2015-07-28 | 2015-07-28 |  | 699d | 0d | start no earlier than 2015-07-28 |  |  | ܁ࣄ | Late |
| 889 | 1.1.3.7.8 | Present Miami to SCUSA ERMC |  | 25d | 2015-07-28 | 2015-08-31 |  | 674d |  | finish no earlier than 2015-08-31 | P. Prado | 200h | ܁ࣄ | Late |
| 890 | 1.1.3.7.9 | Present Miami to SCUSA BERC |  | 25d | 2015-07-28 | 2015-08-31 |  | 674d |  | finish no earlier than 2015-08-31 | P. Prado | 200h | ܁ࣄ | Late |
| 891 | 1.1.3.8 | **Year 2 and Year 3 Priorities** |  | 522d | 2016-04-01 | 2018-04-01 |  |  |  |  |  |  |  | Late |
| 892 | 1.1.3.8.1 | Update and refine the SHUSA Material Risk Program, revising tools, templates, risk taxonomy, guidance, policies and procedures as necessary | manual | 1d | 2016-04-01 | 2016-04-01 |  |  |  |  |  |  |  |  |
| 893 | 1.1.3.8.2 | Continually enhance foundational risk identification processes and data sources to align with established multi-year objectives | manual | 1d | 2016-04-01 | 2016-04-01 |  |  |  |  |  |  |  |  |
| 894 | 1.1.4 | **Risk Management Processes** |  | 182d | 2015-09-11 | 2016-05-22 |  |  |  |  |  |  |  | Late |
| 895 | 1.1.4.1 | Risk type A (Most likely Credit) | manual | 62d | 2015-09-11 | 2015-12-06 |  |  |  |  |  |  |  | Late |
| 896 | 1.1.4.2 | Risk type B (Most likely ERM + RAS + Strategic) | manual | 62d | 2015-09-11 | 2015-12-06 |  |  |  |  |  |  |  | Late |
| 897 | 1.1.4.3 | Risk type C (Most likely Market & Liquidity) | manual | 62d | 2015-12-04 | 2016-02-28 |  |  |  |  |  |  |  | Late |
| 898 | 1.1.4.4 | Risk type D (Most likely Compliance) | manual | 62d | 2015-12-04 | 2016-02-28 |  |  |  |  |  |  |  | Late |
| 899 | 1.1.4.5 | Risk type E (Most likely Risk Management Information) | manual | 62d | 2016-02-26 | 2016-05-22 |  |  |  |  |  |  |  | Late |
| 900 | 1.1.4.6 | Risk type F (Most likely Capital Risk) | manual | 62d | 2016-02-26 | 2016-05-22 |  |  |  |  |  |  |  | Late |

Notes:
- 894: Start date assumes 3 month implementation period beginning as of the finish date for the corresponding implementation planning task, located in Target Operating Model Deliverable.

| ID | WBS | Task | Type | Duration | Start | Finish | Predecessors | Constraint | Tracking Status | Entity |
| --- | --- | --- | --- | --- | --- | --- | --- | --- | --- | --- |
| 901 | 1.1.5 | **Risk Monitoring** |  | 145d | 2015-06-08 | 2015-12-25 |  |  | Late |  |
| 902 | 1.1.5.1 | **Internal Reporting** |  | 205d? | 2015-06-08 | 2016-03-18 |  |  | Late |  |
| 903 | 1.1.5.1.1 | **List of Deliverables** |  | 0d | 2015-06-08 | 2015-06-08 |  |  |  |  |
| 904 | 1.1.5.1.1.1 | example deliverable (linked to the detail below) | milestone, manual | 0d | 2015-06-09 | 2015-06-09 |  | finish no earlier than 2015-06-08 | Late |  |
| 905 | 1.1.5.1.2 | **Deliverables Detail** |  | 145d | 2015-06-08 | 2015-12-25 |  |  |  |  |
| 906 | 1.1.5.1.2.1 | **Quick-win enhancements for priority reports (Board and Level 1 Risk Committees)** |  | 45d | 2015-06-15 | 2015-08-14 |  |  |  | ܁ࢹ |
| 907 | 1.1.5.1.2.1.1 | **Assessment of current reporting landscape (for Board and Level 1 Risk Committee reports only)** |  | 30d | 2015-06-15 | 2015-07-24 |  |  |  | ܁ࢹ |
| 908 | 1.1.5.1.2.1.1.1 | Inventory existing reports | manual | 10d | 2015-06-15 | 2015-06-26 |  | start no earlier than 2015-06-15 | Late | ܁ࢹ |
| 909 | 1.1.5.1.2.1.1.2 | Assess reports against best practice | manual | 10d | 2015-06-22 | 2015-07-03 |  | start no earlier than 2015-06-22 | Late | ܁ࢹ |
| 910 | 1.1.5.1.2.1.1.3 | Determine if any quick-win enhancements can be made in terms of audience, content, frequency, format, etc. | manual | 10d | 2015-07-06 | 2015-07-17 | 909 | finish no earlier than 2015-07-03 | Late | ܁ࢹ |
| 911 | 1.1.5.1.2.1.1.4 | Detail prioritization of and plan for enhancements | manual | 5d | 2015-07-20 | 2015-07-24 | 910 | finish no earlier than 2015-07-03 | Late | ܁ࢹ |
| 912 | 1.1.5.1.2.1.1.5 | Completion of assessment and plan for implementation of enhancements | milestone, manual | 0d | 2015-07-27 | 2015-07-27 | 911 | finish no earlier than 2015-07-03 | Late | ܁ࢹ |
| 913 | 1.1.5.1.2.1.2 | **Assessment of governance around reports (for Board and Level 1 Risk Committee reports only)** |  | 25d | 2015-06-22 | 2015-07-24 |  |  |  | ܁ࢹ |
| 914 | 1.1.5.1.2.1.2.1 | Assess governance around internal reporting | manual | 10d | 2015-06-22 | 2015-07-03 |  | start no earlier than 2015-06-22 | Late | ܁ࢹ |
| 915 | 1.1.5.1.2.1.2.2 | Determine if any quick-win enhancements can be made in terms of standards, processes (e.g. review process), documentation, controls, etc. | manual | 10d | 2015-07-06 | 2015-07-17 | 914 | finish no earlier than 2015-07-17 | Late | ܁ࢹ |
| 916 | 1.1.5.1.2.1.2.3 | Detail prioritization of and plan for enhancements | manual | 5d | 2015-07-20 | 2015-07-24 | 915 | finish no earlier than 2015-07-17 | Late | ܁ࢹ |
| 917 | 1.1.5.1.2.1.2.4 | Completion of assessment and plan for implementation of enhancements | milestone, manual | 0d | 2015-07-27 | 2015-07-27 | 916 | finish no earlier than 2015-07-17 | Late | ܁ࢹ |
| 918 | 1.1.5.1.2.1.3 | **Implementation of quick-win enhancements (for Board and Level 1 Risk Committee reports only)** |  | 15d | 2015-07-27 | 2015-08-14 |  |  |  | ܁ࢹ |
| 919 | 1.1.5.1.2.1.3.1 | Implement quick-win enhancements for priority reports | manual | 10d | 2015-07-27 | 2015-08-07 |  | start no earlier than 2015-07-27 | Late | ܁ࢹ |
| 920 | 1.1.5.1.2.1.3.2 | Socialize with key stakeholders (SHUSA Board and Risk Managers) | manual | 5d | 2015-08-10 | 2015-08-14 | 919 | finish no earlier than 2015-07-31 | Late | ܁ࢹ |
| 921 | 1.1.5.1.2.1.3.3 | Updated priority reports | milestone, manual | 0d | 2015-08-17 | 2015-08-17 | 920 | finish no earlier than 2015-07-31 | Late | ܁ࢹ |
| 922 | 1.1.5.1.2.2 | **Definition of target risk reporting landscape** |  | 30d | 2015-07-27 | 2015-09-04 |  |  |  | ܁ࢹ |
| 923 | 1.1.5.1.2.2.1 | **Definition of target risk reporting landscape** |  | 30d | 2015-07-27 | 2015-09-04 |  |  |  | ܁ࢹ |
| 924 | 1.1.5.1.2.2.1.1 | Determine different audiences of Risk reporting (Group, local, regulatory, etc.) | manual | 5d | 2015-07-27 | 2015-07-31 |  | start no earlier than 2015-07-27 | Late | ܁ࢹ |
| 925 | 1.1.5.1.2.2.1.2 | For each audience, outline essential content and frequency of reporting and document as target risk reporting landscape | manual | 25d | 2015-07-27 | 2015-08-28 |  | start no earlier than 2015-07-27 | Late | ܁ࢹ |
| 926 | 1.1.5.1.2.2.1.3 | Socialize with key stakeholders (SHUSA) and update target landscape as necessary | manual | 5d | 2015-08-31 | 2015-09-04 | 925 | finish no earlier than 2015-08-14 | Late | ܁ࢹ |
| 927 | 1.1.5.1.2.2.1.4 | Socialize with key stakeholders (SBNA) and update target landscape as necessary | manual | 5d | 2015-08-31 | 2015-09-04 |  |  | Late | ܁ࢺ |
| 928 | 1.1.5.1.2.2.1.5 | Socialize with key stakeholders (SCUSA) and update target landscape as necessary | manual | 5d | 2015-08-31 | 2015-09-04 |  |  | Late | ܁ࢻ |
| 929 | 1.1.5.1.2.2.1.6 | Prioritize reports for enhancement and assign reports to Wave 1 vs. Wave 2 of enhancements based on materiality | manual | 5d | 2015-08-31 | 2015-09-04 |  | start no earlier than 2015-08-31 | Late | ܁ࢹ |
| 930 | 1.1.5.1.2.2.1.7 | Documented target risk reporting landscape | milestone, manual | 0d | 2015-09-07 | 2015-09-07 | 929 | finish no earlier than 2015-08-14 | Late | ܁ࢹ |

| ID | WBS | Task | Type | Duration | Start | Finish | Predecessors | Constraint | Entity | Tracking Status |
| --- | --- | --- | --- | --- | --- | --- | --- | --- | --- | --- |
| 931 | 1.1.5.1.2.3 | **Wave 1 of reporting enhancements** |  | 60d | 2015-08-17 | 2015-11-06 |  |  | ܁ࢹ |  |
| 932 | 1.1.5.1.2.3.1 | **Development of template reports and socialization of Wave 1** |  | 20d | 2015-08-31 | 2015-09-25 |  |  | ܁ࢹ |  |
| 933 | 1.1.5.1.2.3.1.1 | Design reporting templates/dashboard based on latest industry practices, leveraging existing work | manual | 15d | 2015-08-31 | 2015-09-18 |  | start no earlier than 2015-08-31 | ܁ࢹ | Late |
| 934 | 1.1.5.1.2.3.1.2 | Socialize with key stakeholders (SHUSA) and update target landscape as necessary | manual | 5d | 2015-09-21 | 2015-09-25 | 933 | start no earlier than 2015-09-21 | ܁ࢹ | Late |
| 935 | 1.1.5.1.2.3.1.3 | Socialize with key stakeholders (SBNA) and update target landscape as necessary | manual | 5d | 2015-09-21 | 2015-09-25 |  |  | ܁ࢺ | Late |
| 936 | 1.1.5.1.2.3.1.4 | Socialize with key stakeholders (SCUSA) and update target landscape as necessary | manual | 5d | 2015-09-21 | 2015-09-25 |  |  | ܁ࢻ | Late |
| 937 | 1.1.5.1.2.3.1.5 | Completed templates for Wave 1 reports | milestone, manual | 0d | 2015-09-25 | 2015-09-25 |  | start no earlier than 2015-09-25 | ܁ࢹ | Late |
| 938 | 1.1.5.1.2.3.2 | **Roll-out of Wave 1 reports** |  | 25d | 2015-10-05 | 2015-11-06 |  |  | ܁ࢹ |  |
| 939 | 1.1.5.1.2.3.2.1 | Review business and data requirements for both interim and target state of Wave 1 reports and make additions as necessary | manual | 20d | 2015-09-28 | 2015-10-23 |  | start no earlier than 2015-09-28 | ܁ࢹ | Late |
| 940 | 1.1.5.1.2.3.2.2 | Pilot reports using available data (manual where necessary) | manual | 20d | 2015-09-28 | 2015-10-23 |  | start no earlier than 2015-09-28 | ܁ࢹ | Late |
| 941 | 1.1.5.1.2.3.2.3 | Collect feedback from key stakeholders (SHUSA) | manual | 5d | 2015-10-26 | 2015-10-30 |  | finish no earlier than 2015-10-30 | ܁ࢹ | Late |
| 942 | 1.1.5.1.2.3.2.4 | Collect feedback from key stakeholders (SBNA) | manual | 5d | 2015-10-26 | 2015-10-30 |  |  | ܁ࢺ | Late |
| 943 | 1.1.5.1.2.3.2.5 | Collect feedback from key stakeholders (SCUSA) | manual | 5d | 2015-10-26 | 2015-10-30 |  |  | ܁ࢻ | Late |
| 944 | 1.1.5.1.2.3.2.6 | Refine reports based on stakeholder feedback | manual | 5d | 2015-11-02 | 2015-11-06 |  | finish no earlier than 2015-11-06 | ܁ࢹ | Late |
| 945 | 1.1.5.1.2.3.2.7 | Completion of Wave 1 roll-out | milestone, manual | 0d | 2015-11-09 | 2015-11-09 |  | finish no earlier than 2015-11-06 | ܁ࢹ | Late |
| 946 | 1.1.5.1.2.4 | **Wave 2 of reporting enhancements** |  | 60d | 2015-10-05 | 2015-12-25 |  |  | ܁ࢹ |  |
| 947 | 1.1.5.1.2.4.1 | **Development of template reports and socialization of Wave 2** |  | 20d | 2015-10-05 | 2015-10-30 |  |  | ܁ࢹ |  |
| 948 | 1.1.5.1.2.4.1.1 | Design reporting templates/dashboard based on latest industry practices, leveraging existing work | manual | 15d | 2015-10-05 | 2015-10-23 |  | start no earlier than 2015-10-05 | ܁ࢹ | Late |
| 949 | 1.1.5.1.2.4.1.2 | Socialize with key stakeholders (SHUSA) and update target landscape as necessary | manual | 5d | 2015-10-26 | 2015-10-30 | 948 | start no earlier than 2015-10-26 | ܁ࢹ | Late |
| 950 | 1.1.5.1.2.4.1.3 | Socialize with key stakeholders (SBNA) and update target landscape as necessary | manual | 5d | 2015-10-26 | 2015-10-30 |  |  | ܁ࢺ | Late |
| 951 | 1.1.5.1.2.4.1.4 | Socialize with key stakeholders (SCUSA) and update target landscape as necessary | manual | 5d | 2015-10-26 | 2015-10-30 |  |  | ܁ࢻ | Late |
| 952 | 1.1.5.1.2.4.1.5 | Completed templates for Wave 2 reports | milestone, manual | 0d | 2015-10-30 | 2015-10-30 |  | start no earlier than 2015-10-30 | ܁ࢹ | Late |
| 953 | 1.1.5.1.2.4.2 | **Roll-out of Wave 2 reports** |  | 25d | 2015-11-23 | 2015-12-25 |  |  | ܁ࢹ |  |
| 954 | 1.1.5.1.2.4.2.1 | Review business and data requirements for both interim and target state of Wave 2 reports and make additions as necessary | manual | 35d | 2015-11-02 | 2015-12-18 |  | finish no earlier than 2015-12-18 | ܁ࢹ | Late |
| 955 | 1.1.5.1.2.4.2.2 | Pilot reports using available data (manual where necessary) | manual | 30d | 2015-11-02 | 2015-12-11 |  | finish no earlier than 2015-12-11 | ܁ࢹ | Late |
| 956 | 1.1.5.1.2.4.2.3 | Collect feedback from key stakeholders (SHUSA) | manual | 5d | 2015-12-14 | 2015-12-18 |  | finish no earlier than 2015-12-18 | ܁ࢹ | Late |
| 957 | 1.1.5.1.2.4.2.4 | Collect feedback from key stakeholders (SBNA) | manual | 5d | 2015-12-14 | 2015-12-18 |  |  | ܁ࢺ | Late |
| 958 | 1.1.5.1.2.4.2.5 | Collect feedback from key stakeholders (SCUSA) | manual | 5d | 2015-12-14 | 2015-12-18 |  |  | ܁ࢻ | Late |
| 959 | 1.1.5.1.2.4.2.6 | Refine reports based on stakeholder feedback | manual | 5d | 2015-12-21 | 2015-12-25 |  | finish no earlier than 2015-12-25 | ܁ࢹ | Late |
| 960 | 1.1.5.1.2.4.2.7 | Completion of Wave 2 roll-out | milestone, manual | 0d | 2015-12-28 | 2015-12-28 |  | finish no earlier than 2015-12-25 | ܁ࢹ | Late |

| ID | WBS | Task | Type | Duration | Start | Finish | Entity | Tracking Status |
| --- | --- | --- | --- | --- | --- | --- | --- | --- |
| 961 | 1.1.5.1.2.5 | **Wave 3 of reporting enhancements** |  | 60d | 2015-12-28 | 2016-03-18 | ܁ࢹ |  |
| 962 | 1.1.5.1.2.5.1 | Expansion to include IHC and all US entities, same steps as Wave 1 and 2 - timeline TBD | manual | 1d? | 2015-12-28 | 2015-12-28 |  | Late |
| 963 | 1.1.5.1.3 | **Years 2-3 Plans** |  | 522d | 2016-04-01 | 2018-04-01 |  |  |
| 964 | 1.1.5.1.3.1 | Develop templates and launch reports at multiple levels of granularity, including management committee (Level 2) and sub-committees level, Line of Business, and day-to-day operations level | manual | 1d? | 2016-04-01 | 2016-04-01 |  |  |
| 965 | 1.1.5.1.3.2 | Continually update business requirements for reporting, and assess resources to produce and deliver reports | manual | 1d? | 2016-04-01 | 2016-04-01 |  |  |
