# CART Template 06102015 RT

Schedule from MS Project, 2014-10-02 to 2017-06-30, A marks actual dates.

## Calendars

- Standard: Mon-Fri 08:00-12:00, 13:00-17:00; Sat-Sun off.

## Resources

| Resource |
| --- |
| David Mael |
| R. Alhadeff/M. Carbone |
| J. Smith/T. Ploetz |
| M. Murphy |
| D. Fabrizio |
| L. Madariaga |
| R. Leal |
| L. Diaz |
| Carreras/Cupril |
| L. Roig |
| W. Gonzalez |
| C. Melendez |
| M. Irurita |
| J. Caceres |
| R. Bonilla |
| A. Guzman |
| J. Villamil |
| M. Guiven |
| Diaz/Semidei |
| J. Jurado |
| Cardona/Ramirez |
| G. Cupril |
| E. Rodriguez |
| M. Bobonis |
| Castro/Bruno |
| Valdenbro/Moll/Alvarez |
| F. Gonzales-Rivera |
| M. Mancini |
| E. Franco-Espinosa |
| R. Bucaro |
| J. Villamil-Morel |
| P. Prado |
| F. Rivera |
| M. Galigarcia |
| R. Fahs |
| Rivera/Fernandez |
| D. Mael |
| A. de Castro |
| K. Martelon |
| S. Bhatti |
| J. Christie |
| C. Hunley |
| M. Lasso |
| R. Ballou |
| TBD |
| M. Tedesco |
| C. Letters |
| F. Papa |
| J. Murphy |
| M. Lee |
| W. Brundige |
| L. O'Hara |
| L. VanRoekel |
| D. Chaos |
| M. Ballenger |
| R. Alhadeff |
| D. Spector |
| M. Lima |
| C. Roberts |
| L. Fairweather |
| J. McClernan |
| M. Carbone |
| Grubb/Martin |
| G. Schmelzel |
| M. Whatley |
| J. Kulas |
| J. Fugitt |
| E. Burns |
| T. Ploetz |
| A. Chawla |
| C. Hicks |
| M. Rodgers |
| N. Rihman |
| M. Souza |
| S. Lew |
| J. Minuesa |
| I. Prada |
| J. Gomez |
| S. Fernandez |
| F. Sempere |
| J. Davila |
| J. Bathon |
| R. Waltz-Cuccioli |
| A. Schwartz |
| W. Delaney |
| J. Galan |
| Mc Kinsey |
| Internal |
| Mc Kinsey / Internal |
| Produban / Diego Lago |
| Internal - Validation Team |
| C. Nelson |
| Oliver Wyman |

## Schedule

| ID | WBS | Task | Type | Duration | Start | Finish | Complete | Remaining | Total slack | Constraint | Resources | Work | Actual work | Tracking Status | Entity |
| --- | --- | --- | --- | --- | --- | --- | --- | --- | --- | --- | --- | --- | --- | --- | --- |
| 1 | 1 | **Capital and Risk Transformation SHUSA** |  | 717d? | 2014-10-02 A | 2017-06-30 | 8% | 660.71d? | 0d |  |  | 25024h | 2632h |  |  |
| 2 | 1.1 | **Risk Transformation** |  | 717d? | 2014-10-02 A | 2017-06-30 | 8% | 660.71d? | 0d |  |  | 25024h | 2632h |  |  |
| 3 | 1.1.1 | **Risk Appetite Statement(RAS)** |  | 545d | 2015-06-01 | 2017-06-30 |  |  | 0d |  |  | 7456h |  |  |  |
| 4 | 1.1.1.1 | **Risk Appetite Statement(RAS) Deliverables** |  | 525d | 2015-06-26 | 2017-06-30 |  |  | 1d |  |  |  |  |  |  |
| 5 | 1.1.1.1.1 | DELIVERABLE: SHUSA-level RAS Design | milestone | 0d | 2015-08-28 | 2015-08-28 |  |  | 481d | start no earlier than 2015-08-28 |  |  |  | Late |  |
| 6 | 1.1.1.1.2 | DELIVERABLE: SHUSA-level RAS Implementation, supporting processes and documentation | milestone | 0d | 2015-08-14 | 2015-08-14 |  |  | 491d | start no earlier than 2015-08-14 |  |  |  | Late |  |
| 7 | 1.1.1.1.3 | DELIVERABLE: SHUSA-level RAS framework approval process | milestone | 0d | 2015-10-30 | 2015-10-30 |  |  | 436d | start no earlier than 2015-10-30 |  |  |  | Late |  |
| 8 | 1.1.1.1.4 | DELIVERABLE: Assessment of short-term SCUSA RAS | milestone | 0d | 2015-06-26 | 2015-06-26 |  |  | 526d | start no earlier than 2015-06-26 |  |  |  | Late |  |
| 9 | 1.1.1.1.5 | DELIVERABLE: Definition of approach for cascading SHUSA-level RAS to subsidiaries and levels below | milestone | 0d | 2015-08-14 | 2015-08-14 |  |  | 491d | start no earlier than 2015-08-14 |  |  |  | Late |  |
| 10 | 1.1.1.1.6 | DELIVERABLE: RAS for priority subsidiaries SBNA & SCUSA – follow similar process as SHUSA | milestone | 0d | 2016-02-24 | 2016-02-24 |  |  | 353d | start no earlier than 2016-02-24 |  |  |  | Late |  |
| 11 | 1.1.1.1.7 | DELIVERABLE: RAS for remainder of subsidiaries and select Bus (SIS NY, Puerto Rico, Miami) | milestone | 0d | 2016-06-30 | 2016-06-30 |  |  | 262d | start no earlier than 2016-06-30 |  |  |  | Late |  |
| 12 | 1.1.1.1.8 | DELIVERABLE: Initialized embedding of RAS in material processes | milestone | 0d | 2015-11-27 | 2015-11-27 |  |  | 416d | start no earlier than 2015-11-27 |  |  |  | Late |  |
| 13 | 1.1.1.1.9 | DELIVERABLE: Plan implementation of RAS in all material processes | milestone | 0d | 2016-01-11 | 2016-01-11 |  |  | 385d | start no earlier than 2016-01-11 |  |  |  | Late |  |
| 14 | 1.1.1.1.10 | DELIVERABLE: Continue to cascade the risk appetite statement for the remainder of subsidiaries and business units and ensure alignment with overall SHUSA risk appetite statement | milestone | 0d | 2016-06-30 | 2016-06-30 |  |  | 262d | start no earlier than 2016-06-30 |  |  |  | Late |  |
| 15 | 1.1.1.1.11 | DELIVERABLE: Embed risk appetite statement in key processes at lower levels of the organization | milestone | 0d | 2016-06-30 | 2016-06-30 |  |  | 262d | start no earlier than 2016-06-30 |  |  |  | Late |  |
| 16 | 1.1.1.1.12 | DELIVERABLE: Continue to communicate risk appetite statement throughout the enterprise, including training in the new escalation and remediation process | milestone | 0d | 2016-09-30 | 2016-09-30 |  |  | 196d | start no earlier than 2016-09-30 |  |  |  | Late |  |
| 17 | 1.1.1.1.13 | DELIVERABLE: Periodically enhance risk appetite statement based on the latest results of material risk identification and improved risk measurement across the enterprise | milestone | 0d | 2017-06-30 | 2017-06-30 |  |  | 1d | start no earlier than 2017-06-30 |  |  |  | Late |  |
| 18 | 1.1.1.2 | **Re-designed SHUSA RAS framework** |  | 105d | 2015-06-08 | 2015-11-02 |  |  | 41d |  |  | 3168h |  |  |  |
| 19 | 1.1.1.2.1 | **DELIVERABLE: SHUSA-level RAS Design** |  | 60d | 2015-06-08 | 2015-08-28 |  |  | 41d |  |  | 2008h |  |  | ܁ࢹ |
| 20 | 1.1.1.2.1.1 | **MILESTONE: Finalize project plan and communicate to CART stakeholders** |  | 10d | 2015-06-08 | 2015-06-19 |  |  | 530d |  |  | 264h |  |  |  |
| 21 | 1.1.1.2.1.1.1 | Finalize CART plan at task-level |  | 1d | 2015-06-08 | 2015-06-08 |  |  | 539d | start no earlier than 2015-06-08 | Oliver Wyman | 8h |  | Late | ܁ࢹ |
| 22 | 1.1.1.2.1.1.2 | Socialize plan with key stakeholders (SHUSA) |  | 9d | 2015-06-09 | 2015-06-19 |  |  | 530d | start no earlier than 2015-06-09 | Oliver Wyman | 72h |  | Late | ܁ࢹ |
| 23 | 1.1.1.2.1.1.3 | Socialize plan with key stakeholders (SBNA) |  | 9d | 2015-06-09 | 2015-06-19 |  |  | 530d | start no earlier than 2015-06-09 | Oliver Wyman | 72h |  | Late | ܁ࢺ |
| 24 | 1.1.1.2.1.1.4 | Socialize plan with key stakeholders (SCUSA) |  | 9d | 2015-06-09 | 2015-06-19 |  |  | 530d | start no earlier than 2015-06-09 | Oliver Wyman | 72h |  | Late | ܁ࢻ |
| 25 | 1.1.1.2.1.1.5 | Communicate plan to CART stakeholders |  | 5d | 2015-06-15 | 2015-06-19 |  |  | 530d | start no earlier than 2015-06-15 | Oliver Wyman | 40h |  | Late | ܁ࢹ |
| 26 | 1.1.1.2.1.1.6 | Plan submitted to CART / Leadership Committee | milestone | 0d | 2015-06-19 | 2015-06-19 |  |  | 531d | start no earlier than 2015-06-19 |  |  |  | Late |  |

Notes:
- 19: Relabel to the new name

| ID | WBS | Task | Type | Duration | Start | Finish | Total slack | Constraint | Resources | Work | Entity | Tracking Status |
| --- | --- | --- | --- | --- | --- | --- | --- | --- | --- | --- | --- | --- |
| 27 | 1.1.1.2.1.2 | **MILESTONE: Define guidelines and approach for choosing metrics and setting limits** |  | 15d | 2015-06-08 | 2015-06-26 | 525d |  |  | 200h |  |  |
| 28 | 1.1.1.2.1.2.1 | Draft guidelines and approach for metrics and limits (no Finance metrics, risk profile, risk appetite, stressed metrics) |  | 5d | 2015-06-08 | 2015-06-12 | 535d | start no earlier than 2015-06-08 | Oliver Wyman | 40h | ܁ࢹ | Late |
| 29 | 1.1.1.2.1.2.2 | Socialize Risk Appetite guidelines to stakeholders (SHUSA) |  | 5d | 2015-06-15 | 2015-06-19 | 530d | start no earlier than 2015-06-15 | Oliver Wyman | 40h | ܁ࢹ | Late |
| 30 | 1.1.1.2.1.2.3 | Socialize plan with key stakeholders (SBNA) |  | 5d | 2015-06-15 | 2015-06-19 | 530d | start no earlier than 2015-06-15 | Oliver Wyman | 40h | ܁ࢺ | Late |
| 31 | 1.1.1.2.1.2.4 | Socialize plan with key stakeholders (SCUSA) |  | 5d | 2015-06-15 | 2015-06-19 | 530d | start no earlier than 2015-06-15 | Oliver Wyman | 40h | ܁ࢻ | Late |
| 32 | 1.1.1.2.1.2.5 | Update guidelines per stakeholder feedback |  | 5d | 2015-06-22 | 2015-06-26 | 525d | start no earlier than 2015-06-22 | Oliver Wyman | 40h | ܁ࢹ | Late |
| 33 | 1.1.1.2.1.2.6 | Finalized guidelines and approach for choosing metrics and setting limits | milestone | 0d | 2015-06-26 | 2015-06-26 | 526d | start no earlier than 2015-06-26 |  |  |  | Late |
| 34 | 1.1.1.2.1.3 | **MILESTONE: Articulate enterprise-wide core values, RAS principles and major risk categories** |  | 15d | 2015-06-08 | 2015-06-26 | 525d |  |  | 200h |  |  |
| 35 | 1.1.1.2.1.3.1 | Draft of enterprise-wide core values, RAS principles and major risk categories (e.g. credit) |  | 5d | 2015-06-08 | 2015-06-12 | 535d | start no earlier than 2015-06-08 | Oliver Wyman | 40h | ܁ࢹ | Late |
| 36 | 1.1.1.2.1.3.2 | Socialize Risk Appetite philosophy to stakeholders (SHUSA) |  | 5d | 2015-06-15 | 2015-06-19 | 530d | start no earlier than 2015-06-15 | Oliver Wyman | 40h | ܁ࢹ | Late |
| 37 | 1.1.1.2.1.3.3 | Socialize Risk Appetite philosophy to stakeholders (SBNA) |  | 5d | 2015-06-15 | 2015-06-19 | 530d | start no earlier than 2015-06-15 | Oliver Wyman | 40h | ܁ࢺ | Late |
| 38 | 1.1.1.2.1.3.4 | Socialize Risk Appetite philosophy to stakeholders (SCUSA) |  | 5d | 2015-06-15 | 2015-06-19 | 530d | start no earlier than 2015-06-15 | Oliver Wyman | 40h | ܁ࢻ | Late |
| 39 | 1.1.1.2.1.3.5 | Update values, principles and risk categories per stakeholder feedback |  | 5d | 2015-06-22 | 2015-06-26 | 525d | start no earlier than 2015-06-22 | Oliver Wyman | 40h | ܁ࢹ | Late |
| 40 | 1.1.1.2.1.3.6 | Finalized enterprise-wide RAS philosophy and major risk categories | milestone | 0d | 2015-06-26 | 2015-06-26 | 526d | start no earlier than 2015-06-26 |  |  |  | Late |
| 41 | 1.1.1.2.1.4 | **MILESTONE: Detail material risks and constraints for enterprise** |  | 15d | 2015-06-08 | 2015-06-26 | 525d |  |  | 336h |  |  |
| 42 | 1.1.1.2.1.4.1 | Identify and document material risks for enterprise, including input from stakeholders (SHUSA) |  | 5d | 2015-06-08 | 2015-06-12 | 535d | start no earlier than 2015-06-08 | Oliver Wyman | 40h | ܁ࢹ | Late |
| 43 | 1.1.1.2.1.4.2 | Identify and document material risks for enterprise, including input from stakeholders (SBNA) |  | 5d | 2015-06-08 | 2015-06-12 | 535d | start no earlier than 2015-06-08 | Oliver Wyman | 40h | ܁ࢺ | Late |
| 44 | 1.1.1.2.1.4.3 | Identify and document material risks for enterprise, including input from stakeholders (SCUSA) |  | 5d | 2015-06-08 | 2015-06-12 | 535d | start no earlier than 2015-06-08 | Oliver Wyman | 40h | ܁ࢻ | Late |
| 45 | 1.1.1.2.1.4.4 | Identify and document constraints from regulators and other stakeholders (i.e. ratings agencies) |  | 5d | 2015-06-15 | 2015-06-19 | 530d | start no earlier than 2015-06-15 | Oliver Wyman | 40h | ܁ࢹ | Late |
| 46 | 1.1.1.2.1.4.5 | Consolidate all requirements from Group, including updated corporate metrics (recalculated with April numbers) |  | 5d | 2015-06-15 | 2015-06-19 | 530d | start no earlier than 2015-06-15 | Oliver Wyman | 40h | ܁ࢹ | Late |
| 47 | 1.1.1.2.1.4.6 | Document owners and rationale for all corporate metrics |  | 5d | 2015-06-15 | 2015-06-19 | 530d | start no earlier than 2015-06-15 | Oliver Wyman | 40h | ܁ࢹ | Late |
| 48 | 1.1.1.2.1.4.7 | Facilitate review and challenge session for list of material risks with key stakeholders (SHUSA) |  | 3d | 2015-06-22 | 2015-06-24 | 527d | start no earlier than 2015-06-22 | Oliver Wyman | 24h | ܁ࢹ | Late |
| 49 | 1.1.1.2.1.4.8 | Facilitate review and challenge session for list of material risks with key stakeholders (SBNA) |  | 3d | 2015-06-22 | 2015-06-24 | 527d | start no earlier than 2015-06-22 | Oliver Wyman | 24h | ܁ࢺ | Late |
| 50 | 1.1.1.2.1.4.9 | Facilitate review and challenge session for list of material risks with key stakeholders (SCUSA) |  | 3d | 2015-06-22 | 2015-06-24 | 527d | start no earlier than 2015-06-22 | Oliver Wyman | 24h | ܁ࢻ | Late |
| 51 | 1.1.1.2.1.4.10 | Update documentation of material risks and constraints, given stakeholder input |  | 3d | 2015-06-24 | 2015-06-26 | 525d | start no earlier than 2015-06-24 | Oliver Wyman | 24h | ܁ࢹ | Late |
| 52 | 1.1.1.2.1.4.11 | Finalized documentation of material risks and constraints for enterprise | milestone | 0d | 2015-06-26 | 2015-06-26 | 526d | start no earlier than 2015-06-26 |  |  |  | Late |

| ID | WBS | Task | Type | Duration | Start | Finish | Predecessors | Total slack | Free slack | Constraint | Resources | Work | Entity | Tracking Status | Dependency |
| --- | --- | --- | --- | --- | --- | --- | --- | --- | --- | --- | --- | --- | --- | --- | --- |
| 53 | 1.1.1.2.1.5 | **MILESTONE: For each risk, determine a qualitative risk appetite statement** |  | 25d | 2015-06-08 | 2015-07-10 |  | 515d |  |  |  | 280h |  |  |  |
| 54 | 1.1.1.2.1.5.1 | Draft a qualitative risk appetite statement for all risks detailed in documentation of material risks for enterprise, considering documented constraints |  | 20d | 2015-06-08 | 2015-07-03 |  | 520d |  | start no earlier than 2015-06-08 | Oliver Wyman | 160h | ܁ࢹ | Late |  |
| 55 | 1.1.1.2.1.5.2 | Socialize SHUSA-level qualitative statements with stakeholders (SHUSA) |  | 5d | 2015-07-06 | 2015-07-10 |  | 515d |  | start no earlier than 2015-07-06 | Oliver Wyman | 40h | ܁ࢹ | Late |  |
| 56 | 1.1.1.2.1.5.3 | Socialize SHUSA-level qualitative statements with stakeholders (SBNA) |  | 5d | 2015-07-06 | 2015-07-10 |  | 515d |  | start no earlier than 2015-07-06 | Oliver Wyman | 40h | ܁ࢺ | Late |  |
| 57 | 1.1.1.2.1.5.4 | Socialize SHUSA-level qualitative statements with stakeholders (SCUSA) |  | 5d | 2015-07-06 | 2015-07-10 |  | 515d |  | start no earlier than 2015-07-06 | Oliver Wyman | 40h | ܁ࢻ | Late |  |
| 58 | 1.1.1.2.1.5.5 | Finalized qualitative risk appetite statements for material risks | milestone | 0d | 2015-07-10 | 2015-07-10 |  | 516d |  | start no earlier than 2015-07-10 |  |  |  | Late |  |
| 59 | 1.1.1.2.1.6 | **MILESTONE: For quantifiable statements, identify key metrics and calibrate limits** |  | 45d | 2015-06-15 | 2015-08-14 |  | 36d |  |  |  | 568h |  |  |  |
| 60 | 1.1.1.2.1.6.1 | Finalize list of proposed SHUSA metrics |  | 1d | 2015-06-15 | 2015-06-15 |  | 534d |  | start no earlier than 2015-06-15 | Oliver Wyman | 8h | ܁ࢹ | Late |  |
| 61 | 1.1.1.2.1.6.2 | Facilitate review and challenge session for proposed metrics, limits and thresholds with key stakeholders (SHUSA) |  | 1d | 2015-06-16 | 2015-06-16 |  | 533d |  | start no earlier than 2015-06-16 | Oliver Wyman | 8h | ܁ࢹ | Late |  |
| 62 | 1.1.1.2.1.6.3 | Facilitate review and challenge session for proposed metrics, limits and thresholds with key stakeholders (SBNA) |  | 1d | 2015-06-16 | 2015-06-16 |  | 533d |  | start no earlier than 2015-06-16 | Oliver Wyman | 8h | ܁ࢺ | Late |  |
| 63 | 1.1.1.2.1.6.4 | Facilitate review and challenge session for proposed metrics, limits and thresholds with key stakeholders (SCUSA) |  | 1d | 2015-06-16 | 2015-06-16 |  | 533d |  | start no earlier than 2015-06-16 | Oliver Wyman | 8h | ܁ࢻ | Late |  |
| 64 | 1.1.1.2.1.6.5 | Update list of SHUSA metrics, given stakeholder input, and identify and document owners for each metric |  | 3d | 2015-06-17 | 2015-06-19 |  | 530d |  | start no earlier than 2015-06-17 | Oliver Wyman | 24h | ܁ࢹ | Late |  |
| 65 | 1.1.1.2.1.6.6 | Detail limits and thresholds for list of SHUSA metrics |  | 5d | 2015-06-22 | 2015-06-26 |  | 525d |  | start no earlier than 2015-06-22 | Oliver Wyman | 40h | ܁ࢹ | Late |  |
| 66 | 1.1.1.2.1.6.7 | Calibrate limits based on analysis of historical data, industry benchmarking, etc. |  | 30d | 2015-06-29 | 2015-08-07 |  | 495d |  | start no earlier than 2015-06-29 | Oliver Wyman | 240h | ܁ࢹ | Late |  |
| 67 | 1.1.1.2.1.6.8 | Document rationale for SHUSA metrics |  | 5d | 2015-07-13 | 2015-07-17 |  | 510d |  | start no earlier than 2015-07-13 | Oliver Wyman | 40h | ܁ࢹ | Late |  |
| 68 | 1.1.1.2.1.6.9 | Document IT requirements for SHUSA metrics |  | 15d | 2015-07-13 | 2015-07-31 |  | 500d | 1d | start no earlier than 2015-07-13 | Oliver Wyman | 120h | ܁ࢹ | Late | ܁д |
| 69 | 1.1.1.2.1.6.10 | Deliver SHUSA Metrics IT Requirements to Data / IT | milestone, manual | 0d | 2015-08-04 | 2015-08-04 | 68 |  |  |  |  |  |  | Late | ܁д |
| 70 | 1.1.1.2.1.6.11 | Consolidate metrics, limits and thresholds into quantifiable statements for material risks |  | 3d | 2015-08-10 | 2015-08-12 |  | 492d |  | start no earlier than 2015-08-10 | Oliver Wyman | 24h | ܁ࢹ | Late |  |
| 71 | 1.1.1.2.1.6.12 | Socialize quantitative statements with stakeholders (SHUSA) |  | 2d | 2015-08-13 | 2015-08-14 |  | 490d |  | start no earlier than 2015-08-13 | Oliver Wyman | 16h | ܁ࢹ | Late |  |
| 72 | 1.1.1.2.1.6.13 | Socialize quantitative statements with stakeholders (SBNA) |  | 2d | 2015-08-13 | 2015-08-14 |  | 490d |  | start no earlier than 2015-08-13 | Oliver Wyman | 16h | ܁ࢺ | Late |  |
| 73 | 1.1.1.2.1.6.14 | Socialize quantitative statements with stakeholders (SCUSA) |  | 2d | 2015-08-13 | 2015-08-14 |  | 490d |  | start no earlier than 2015-08-13 | Oliver Wyman | 16h | ܁ࢻ | Late |  |
| 74 | 1.1.1.2.1.6.15 | Finalized quantitative risk appetite statements for material risks | milestone | 0d | 2015-08-14 | 2015-08-14 |  | 491d |  | start no earlier than 2015-08-14 |  |  |  | Late |  |
| 75 | 1.1.1.2.1.7 | **MILESTONE: Consolidate qualitative and quantitative statements into SHUSA-level RAS and socialize with stakeholders** |  | 10d | 2015-08-17 | 2015-08-28 |  | 480d |  |  |  | 160h |  |  |  |
| 76 | 1.1.1.2.1.7.1 | Draft SHUSA-level RAS |  | 5d | 2015-08-17 | 2015-08-21 |  | 485d |  | start no earlier than 2015-08-17 | Oliver Wyman | 40h | ܁ࢹ | Late |  |
| 77 | 1.1.1.2.1.7.2 | Socialize SHUSA-level RAS with stakeholders (SHUSA) |  | 5d | 2015-08-24 | 2015-08-28 |  | 480d |  | start no earlier than 2015-08-24 | Oliver Wyman | 40h | ܁ࢹ | Late |  |
| 78 | 1.1.1.2.1.7.3 | Socialize SHUSA-level RAS with stakeholders (SBNA) |  | 5d | 2015-08-24 | 2015-08-28 |  | 480d |  | start no earlier than 2015-08-24 | Oliver Wyman | 40h | ܁ࢺ | Late |  |
| 79 | 1.1.1.2.1.7.4 | Socialize SHUSA-level RAS with stakeholders (SCUSA) |  | 5d | 2015-08-24 | 2015-08-28 |  | 480d |  | start no earlier than 2015-08-24 | Oliver Wyman | 40h | ܁ࢻ | Late |  |
| 80 | 1.1.1.2.1.7.5 | Final draft of SHUSA-level RAS | milestone | 0d | 2015-08-28 | 2015-08-28 |  | 481d |  | start no earlier than 2015-08-28 |  |  |  | Late |  |

Notes:
- 68: Technology

| ID | WBS | Task | Type | Duration | Start | Finish | Predecessors | Total slack | Free slack | Constraint | Resources | Work | Entity | Tracking Status | Dependency |
| --- | --- | --- | --- | --- | --- | --- | --- | --- | --- | --- | --- | --- | --- | --- | --- |
| 81 | 1.1.1.2.2 | **DELIVERABLE: SHUSA-level RAS Implementation, supporting processes and documentation** |  | 30d | 2015-07-06 | 2015-08-14 |  | 490d |  |  |  | 600h | ܁ࢹ |  |  |
| 82 | 1.1.1.2.2.1 | **MILESTONE: Document SHUSA-level RAS reporting, monitoring and escalation processes** |  | 20d | 2015-07-06 | 2015-07-31 |  | 500d |  |  |  | 360h |  |  |  |
| 83 | 1.1.1.2.2.1.1 | Draft SHUSA-level RAS reporting and monitoring process |  | 15d | 2015-07-06 | 2015-07-24 |  | 505d |  | start no earlier than 2015-07-06 | Oliver Wyman | 120h | ܁ࢹ | Late |  |
| 84 | 1.1.1.2.2.1.2 | Draft SHUSA-level RAS breach escalation process and detail consequences |  | 15d | 2015-07-06 | 2015-07-24 |  | 505d |  | start no earlier than 2015-07-06 | Oliver Wyman | 120h | ܁ࢹ | Late |  |
| 85 | 1.1.1.2.2.1.3 | Socialize processes with stakeholders (SHUSA) |  | 5d | 2015-07-27 | 2015-07-31 |  | 500d |  | start no earlier than 2015-07-27 | Oliver Wyman | 40h | ܁ࢹ | Late |  |
| 86 | 1.1.1.2.2.1.4 | Socialize processes with stakeholders (SBNA) |  | 5d | 2015-07-27 | 2015-07-31 |  | 500d |  | start no earlier than 2015-07-27 | Oliver Wyman | 40h | ܁ࢺ | Late |  |
| 87 | 1.1.1.2.2.1.5 | Socialize processes with stakeholders (SCUSA) |  | 5d | 2015-07-27 | 2015-07-31 |  | 500d |  | start no earlier than 2015-07-27 | Oliver Wyman | 40h | ܁ࢻ | Late |  |
| 88 | 1.1.1.2.2.1.6 | Finalized SHUSA-level RAS reporting, monitoring and escalation processes | milestone | 0d | 2015-07-31 | 2015-07-31 |  | 501d |  | start no earlier than 2015-07-31 |  |  |  | Late |  |
| 89 | 1.1.1.2.2.2 | **MILESTONE: Document SHUSA-level RAS development and governance process** |  | 20d | 2015-07-20 | 2015-08-14 |  | 490d |  |  |  | 240h |  |  |  |
| 90 | 1.1.1.2.2.2.1 | Draft SHUSA-level RAS development documentation and governance process |  | 15d | 2015-07-20 | 2015-08-07 |  | 495d |  | start no earlier than 2015-07-20 | Oliver Wyman | 120h | ܁ࢹ | Late |  |
| 91 | 1.1.1.2.2.2.2 | Socialize documents with stakeholders (SHUSA) |  | 5d | 2015-08-10 | 2015-08-14 |  | 490d |  | start no earlier than 2015-08-10 | Oliver Wyman | 40h | ܁ࢹ | Late |  |
| 92 | 1.1.1.2.2.2.3 | Socialize documents with stakeholders (SBNA) |  | 5d | 2015-08-10 | 2015-08-14 |  | 490d |  | start no earlier than 2015-08-10 | Oliver Wyman | 40h | ܁ࢺ | Late |  |
| 93 | 1.1.1.2.2.2.4 | Socialize documents with stakeholders (SCUSA) |  | 5d | 2015-08-10 | 2015-08-14 |  | 490d |  | start no earlier than 2015-08-10 | Oliver Wyman | 40h | ܁ࢻ | Late |  |
| 94 | 1.1.1.2.2.2.5 | Finalized SHUSA-level RAS development documentation and governance process | milestone | 0d | 2015-08-14 | 2015-08-14 |  | 491d |  | start no earlier than 2015-08-14 |  |  |  | Late |  |
| 95 | 1.1.1.2.3 | **DELIVERABLE: SHUSA-level RAS framework approval process** |  | 45d | 2015-08-31 | 2015-11-02 |  | 45d |  |  |  | 560h | ܁ࢹ |  |  |
| 96 | 1.1.1.2.3.1 | **MILESTONE: Educate Board and senior committees on RAS and secure approval** |  | 45d | 2015-08-31 | 2015-11-02 |  | 45d |  |  |  | 560h |  |  |  |
| 97 | 1.1.1.2.3.1.1 | Create materials for Board training on RAS roles & responsibilities |  | 5d | 2015-08-31 | 2015-09-04 |  | 475d |  | start no earlier than 2015-08-31 | Oliver Wyman | 40h | ܁ࢹ | Late |  |
| 98 | 1.1.1.2.3.1.2 | Create materials for Board training on RAS structure and metrics |  | 5d | 2015-08-31 | 2015-09-04 |  | 475d |  | start no earlier than 2015-08-31 | Oliver Wyman | 40h | ܁ࢹ | Late |  |
| 99 | 1.1.1.2.3.1.3 | Deliver Board training session(s) |  | 5d | 2015-09-21 | 2015-09-25 |  | 460d |  | start no earlier than 2015-09-21 | Oliver Wyman | 40h | ܁ࢹ | Late |  |
| 100 | 1.1.1.2.3.1.4 | Present SHUSA-level RAS to ERMC/EMC |  | 10d | 2015-08-31 | 2015-09-11 |  | 470d |  | start no earlier than 2015-08-31 | Oliver Wyman | 80h | ܁ࢹ | Late |  |
| 101 | 1.1.1.2.3.1.5 | Present CDR presentation to Madrid for review |  | 10d | 2015-08-31 | 2015-09-11 |  | 470d |  | start no earlier than 2015-08-31 | Oliver Wyman | 80h | ܁ࢹ | Late |  |
| 102 | 1.1.1.2.3.1.6 | Update RAS given feedback from SHUSA and Madrid risk committees |  | 5d | 2015-09-14 | 2015-09-18 |  | 465d |  | start no earlier than 2015-09-14 | Oliver Wyman | 40h | ܁ࢹ | Late |  |
| 103 | 1.1.1.2.3.1.7 | Present to Board/BERC for review |  | 10d | 2015-09-21 | 2015-10-02 |  | 455d |  | start no earlier than 2015-09-21 | Oliver Wyman | 80h | ܁ࢹ | Late |  |
| 104 | 1.1.1.2.3.1.8 | Present SHUSA-level RAS to CDR |  | 5d | 2015-10-05 | 2015-10-09 |  | 450d |  | start no earlier than 2015-10-05 | Oliver Wyman | 40h | ܁ࢹ | Late |  |
| 105 | 1.1.1.2.3.1.9 | Update RAS given feedback from CDR |  | 10d | 2015-10-12 | 2015-10-23 |  | 440d |  | start no earlier than 2015-10-12 | Oliver Wyman | 80h | ܁ࢹ | Late |  |
| 106 | 1.1.1.2.3.1.10 | Submit SHUSA-level RAS for Board approval |  | 5d | 2015-10-26 | 2015-10-30 |  | 435d |  | start no earlier than 2015-10-26 | Oliver Wyman | 40h | ܁ࢹ | Late |  |
| 107 | 1.1.1.2.3.1.11 | Board-approved SHUSA-level RAS | milestone | 0d | 2015-10-30 | 2015-10-30 |  | 436d | 1d | start no earlier than 2015-10-30 |  |  |  | Late | ܁д |
| 108 | 1.1.1.2.3.1.12 | Deliver Board-approved SHUSA-level RAS to CCAR | milestone, manual | 0d | 2015-11-02 | 2015-11-02 | 107 |  |  |  |  |  |  | Late | ܁д |

| ID | WBS | Task | Type | Duration | Start | Finish | Total slack | Constraint | Resources | Work | Entity | Tracking Status |
| --- | --- | --- | --- | --- | --- | --- | --- | --- | --- | --- | --- | --- |
| 109 | 1.1.1.3 | **Cascaded RAS across enterprise through creation of subsidiary-level and, where necessary, BU-level statements** |  | 284d | 2015-06-01 | 2016-06-30 | 65d |  |  | 3728h |  |  |
| 110 | 1.1.1.3.1 | **DELIVERABLE: Assessment of short-term SCUSA RAS** |  | 20d | 2015-06-01 | 2015-06-26 | 525d |  |  | 248h |  |  |
| 111 | 1.1.1.3.1.1 | **MILESTONE: Assess SCUSA RAS and determine plan for short-term remediation** |  | 5d | 2015-06-01 | 2015-06-05 | 540d |  |  | 48h |  |  |
| 112 | 1.1.1.3.1.1.1 | Assess current state of SCUSA RAS, focusing on pre-determined "pain points" (not reviewing RAS in entirety) |  | 1d | 2015-06-01 | 2015-06-01 | 544d | start no earlier than 2015-06-01 | Oliver Wyman | 8h | ܁ࢻ | Late |
| 113 | 1.1.1.3.1.1.2 | Determine plan for short-term remediation |  | 5d | 2015-06-01 | 2015-06-05 | 540d | start no earlier than 2015-06-01 | Oliver Wyman | 40h | ܁ࢻ | Late |
| 114 | 1.1.1.3.1.1.3 | Finalized plan for SCUSA RAS short-term remediation | milestone | 0d | 2015-06-05 | 2015-06-05 | 541d | start no earlier than 2015-06-05 |  |  |  | Late |
| 115 | 1.1.1.3.1.2 | **MILESTONE: Implement remediations in the form of updated key limits** |  | 15d | 2015-06-08 | 2015-06-26 | 525d |  |  | 200h |  |  |
| 116 | 1.1.1.3.1.2.1 | Redefine SCUSA liquidity limit |  | 5d | 2015-06-08 | 2015-06-12 | 535d | start no earlier than 2015-06-08 | Oliver Wyman | 40h | ܁ࢻ | Late |
| 117 | 1.1.1.3.1.2.2 | Redefine SCUSA RWA limit |  | 5d | 2015-06-08 | 2015-06-12 | 535d | start no earlier than 2015-06-08 | Oliver Wyman | 40h | ܁ࢻ | Late |
| 118 | 1.1.1.3.1.2.3 | Redefine SCUSA total asset limit |  | 5d | 2015-06-08 | 2015-06-12 | 535d | start no earlier than 2015-06-08 | Oliver Wyman | 40h | ܁ࢻ | Late |
| 119 | 1.1.1.3.1.2.4 | Socialize updated limits and all proposed remediations to SCUSA RAS |  | 5d | 2015-06-15 | 2015-06-19 | 530d | start no earlier than 2015-06-15 | Oliver Wyman | 40h | ܁ࢻ | Late |
| 120 | 1.1.1.3.1.2.5 | Update SCUSA RAS based on agreed upon remediations |  | 5d | 2015-06-22 | 2015-06-26 | 525d | start no earlier than 2015-06-22 | Oliver Wyman | 40h | ܁ࢻ | Late |
| 121 | 1.1.1.3.1.2.6 | Finalized SCUSA RAS (for short-term use) | milestone | 0d | 2015-06-26 | 2015-06-26 | 526d | start no earlier than 2015-06-26 |  |  |  | Late |
| 122 | 1.1.1.3.2 | **DELIVERABLE: Definition of approach for cascading SHUSA-level RAS to subsidiaries and levels below** |  | 10d | 2015-08-03 | 2015-08-14 | 490d |  |  | 136h | ܁ࢹ |  |
| 123 | 1.1.1.3.2.1 | **MILESTONE: Document approach for cascading SHUSA-level RAS to subsidiaries and levels below** |  | 10d | 2015-08-03 | 2015-08-14 | 490d |  |  | 136h |  |  |
| 124 | 1.1.1.3.2.1.1 | Determine organizational levels to which cascading is appropriate and draft planned approach |  | 5d | 2015-08-03 | 2015-08-07 | 495d | start no earlier than 2015-08-03 | Oliver Wyman | 40h | ܁ࢹ | Late |
| 125 | 1.1.1.3.2.1.2 | Facilitate review and challenge sessions for cascading approach with stakeholders (SHUSA) |  | 3d | 2015-08-10 | 2015-08-12 | 492d | start no earlier than 2015-08-10 | Oliver Wyman | 24h | ܁ࢹ | Late |
| 126 | 1.1.1.3.2.1.3 | Facilitate review and challenge sessions for cascading approach with stakeholders (SBNA) |  | 3d | 2015-08-10 | 2015-08-12 | 492d | start no earlier than 2015-08-10 | Oliver Wyman | 24h | ܁ࢺ | Late |
| 127 | 1.1.1.3.2.1.4 | Facilitate review and challenge sessions for cascading approach with stakeholders (SCUSA) |  | 3d | 2015-08-10 | 2015-08-12 | 492d | start no earlier than 2015-08-10 | Oliver Wyman | 24h | ܁ࢻ | Late |
| 128 | 1.1.1.3.2.1.5 | Update documentation for cascading approach, given stakeholder input |  | 3d | 2015-08-12 | 2015-08-14 | 490d | start no earlier than 2015-08-12 | Oliver Wyman | 24h | ܁ࢹ | Late |
| 129 | 1.1.1.3.2.1.6 | Finalized plan for cascading SHUSA-level RAS to subsidiaries and levels below | milestone | 0d | 2015-08-14 | 2015-08-14 | 491d | start no earlier than 2015-08-14 |  |  |  | Late |
| 130 | 1.1.1.3.3 | **DELIVERABLE: RAS for priority subsidiaries SBNA & SCUSA – follow similar process as SHUSA** |  | 138d | 2015-08-17 | 2016-02-24 | 10d |  |  | 3344h |  |  |
| 131 | 1.1.1.3.3.1 | **MILESTONE: Detail material risks specific to SBNA and SCUSA (leveraging SHUSA-level list, but making additions as necessary)** |  | 10d | 2015-08-17 | 2015-08-28 | 480d |  |  | 224h |  |  |
| 132 | 1.1.1.3.3.1.1 | Identify and document subsidiary-specific risks and constraints, including those not captured in SHUSA-level RAS(SBNA) |  | 5d | 2015-08-17 | 2015-08-21 | 485d | start no earlier than 2015-08-17 | Oliver Wyman | 40h | ܁ࢺ | Late |
| 133 | 1.1.1.3.3.1.2 | Identify and document subsidiary-specific risks and constraints, including those not captured in SHUSA-level RAS(SCUSA) |  | 5d | 2015-08-17 | 2015-08-21 | 485d | start no earlier than 2015-08-17 | Oliver Wyman | 40h | ܁ࢻ | Late |
| 134 | 1.1.1.3.3.1.3 | Identify and document constraints from Group, regulators and other stakeholders (i.e. ratings agencies) |  | 5d | 2015-08-17 | 2015-08-21 | 485d | start no earlier than 2015-08-17 | Oliver Wyman | 40h |  | Late |
| 135 | 1.1.1.3.3.1.4 | Facilitate review and challenge session for list of material risks with key stakeholders (SHUSA) |  | 3d | 2015-08-24 | 2015-08-26 | 482d | start no earlier than 2015-08-24 | Oliver Wyman | 24h | ܁ࢹ | Late |
| 136 | 1.1.1.3.3.1.5 | Facilitate review and challenge session for list of material risks with key stakeholders (SBNA) |  | 3d | 2015-08-24 | 2015-08-26 | 482d | start no earlier than 2015-08-24 | Oliver Wyman | 24h | ܁ࢺ | Late |
| 137 | 1.1.1.3.3.1.6 | Facilitate review and challenge session for list of material risks with key stakeholders (SCUSA) |  | 3d | 2015-08-24 | 2015-08-26 | 482d | start no earlier than 2015-08-24 | Oliver Wyman | 24h | ܁ࢻ | Late |
| 138 | 1.1.1.3.3.1.7 | Update documentation of subsidiary-specific risks and constraints, given stakeholder input(SBNA) |  | 2d | 2015-08-27 | 2015-08-28 | 480d | start no earlier than 2015-08-27 | Oliver Wyman | 16h | ܁ࢺ | Late |
| 139 | 1.1.1.3.3.1.8 | Update documentation of subsidiary-specific risks and constraints, given stakeholder input(SCUSA) |  | 2d | 2015-08-27 | 2015-08-28 | 480d | start no earlier than 2015-08-27 | Oliver Wyman | 16h | ܁ࢻ | Late |
| 140 | 1.1.1.3.3.1.9 | Finalized documentation of material risks and constraints specific to priority subsidiaries | milestone | 0d | 2015-08-17 | 2015-08-17 | 490d | start no earlier than 2015-08-17 |  |  |  | Late |

| ID | WBS | Task | Type | Duration | Start | Finish | Predecessors | Total slack | Free slack | Constraint | Resources | Work | Entity | Tracking Status | Dependency |
| --- | --- | --- | --- | --- | --- | --- | --- | --- | --- | --- | --- | --- | --- | --- | --- |
| 141 | 1.1.1.3.3.2 | **MILESTONE: For each risk, determine a qualitative risk appetite statement (leveraging SHUSA-level RAS)** |  | 15d | 2015-08-31 | 2015-09-18 |  | 0d |  |  |  | 256h |  |  |  |
| 142 | 1.1.1.3.3.2.1 | Determine SHUSA-level RAS statements relevant to subsidiaries(SBNA) |  | 3d | 2015-08-31 | 2015-09-02 |  | 477d |  | start no earlier than 2015-08-31 | Oliver Wyman | 24h | ܁ࢺ | Late |  |
| 143 | 1.1.1.3.3.2.2 | Determine SHUSA-level RAS statements relevant to subsidiaries(SCUSA) | manual | 3d | 2015-08-31 | 2015-09-02 |  |  |  |  | Oliver Wyman | 24h | ܁ࢻ | Late |  |
| 144 | 1.1.1.3.3.2.3 | Detail statements for material risks specific to the subsidiary, not captured in SHUSA-level RAS(SBNA) |  | 7d | 2015-09-03 | 2015-09-11 |  | 470d |  | start no earlier than 2015-09-03 | Oliver Wyman | 56h | ܁ࢺ | Late |  |
| 145 | 1.1.1.3.3.2.4 | Detail statements for material risks specific to the subsidiary, not captured in SHUSA-level RAS(SCUSA) |  | 7d | 2015-09-03 | 2015-09-11 |  | 470d |  | start no earlier than 2015-09-03 | Oliver Wyman | 56h | ܁ࢻ | Late |  |
| 146 | 1.1.1.3.3.2.5 | Consolidate into subsidiary specific-list of statements (leverage existing work) (SBNA) |  | 3d | 2015-09-14 | 2015-09-16 |  | 467d |  | start no earlier than 2015-09-14 | Oliver Wyman | 24h | ܁ࢺ | Late |  |
| 147 | 1.1.1.3.3.2.6 | Consolidate into subsidiary specific-list of statements (leverage existing work) (SCUSA) |  | 3d | 2015-09-14 | 2015-09-16 |  | 467d |  | start no earlier than 2015-09-14 | Oliver Wyman | 24h | ܁ࢻ | Late |  |
| 148 | 1.1.1.3.3.2.7 | Socialize SBNA and SCUSA qualitative statements with key stakeholders (SHUSA) |  | 2d | 2015-09-17 | 2015-09-18 |  | 465d |  | start no earlier than 2015-09-17 | Oliver Wyman | 16h | ܁ࢹ | Late |  |
| 149 | 1.1.1.3.3.2.8 | Socialize SBNA and SCUSA qualitative statements with key stakeholders (SBNA) |  | 2d | 2015-09-17 | 2015-09-18 |  | 465d |  | start no earlier than 2015-09-17 | Oliver Wyman | 16h | ܁ࢺ | Late |  |
| 150 | 1.1.1.3.3.2.9 | Socialize SBNA and SCUSA qualitative statements with key stakeholders (SCUSA) |  | 2d | 2015-09-17 | 2015-09-18 |  | 465d |  | start no earlier than 2015-09-17 | Oliver Wyman | 16h | ܁ࢻ | Late |  |
| 151 | 1.1.1.3.3.2.10 | Finalized qualitative risk appetite statements for subsidiary-specific risks | milestone | 0d | 2015-09-18 | 2015-09-18 |  | 466d |  | start no earlier than 2015-09-18 |  |  |  | Late |  |
| 152 | 1.1.1.3.3.3 | **MILESTONE: For quantifiable statements, identify key metrics and calibrate limits (leveraging SHUSA-level RAS)** |  | 40d | 2015-09-14 | 2015-11-06 |  | 16d |  |  |  | 984h |  |  |  |
| 153 | 1.1.1.3.3.3.1 | Determine SHUSA-level RAS metrics relevant to subsidiaries(SBNA) |  | 3d | 2015-09-14 | 2015-09-16 |  | 467d |  | start no earlier than 2015-09-14 | Oliver Wyman | 24h | ܁ࢺ | Late |  |
| 154 | 1.1.1.3.3.3.2 | Determine SHUSA-level RAS metrics relevant to subsidiaries(SCUSA) |  | 3d | 2015-09-14 | 2015-09-16 |  | 467d |  | start no earlier than 2015-09-14 | Oliver Wyman | 24h | ܁ࢻ | Late |  |
| 155 | 1.1.1.3.3.3.3 | Identify metrics for material risks specific to the subsidiary, not captured in SHUSA-level RAS, and compile in list with relevant metrics from SHUSA-level RAS(SBNA) |  | 2d | 2015-09-17 | 2015-09-18 |  | 465d |  | start no earlier than 2015-09-17 | Oliver Wyman | 16h | ܁ࢺ | Late |  |
| 156 | 1.1.1.3.3.3.4 | Identify metrics for material risks specific to the subsidiary, not captured in SHUSA-level RAS, and compile in list with relevant metrics from SHUSA-level RAS(SCUSA) |  | 2d | 2015-09-17 | 2015-09-18 |  | 465d |  | start no earlier than 2015-09-17 | Oliver Wyman | 16h | ܁ࢻ | Late |  |
| 157 | 1.1.1.3.3.3.5 | Facilitate review and challenge session for proposed metrics, limits and thresholds with key stakeholders (SHUSA) |  | 1d | 2015-09-28 | 2015-09-28 |  | 459d |  | start no earlier than 2015-09-28 | Oliver Wyman | 8h | ܁ࢹ | Late |  |
| 158 | 1.1.1.3.3.3.6 | Facilitate review and challenge session for proposed metrics, limits and thresholds with key stakeholders (SBNA) |  | 1d | 2015-09-28 | 2015-09-28 |  | 459d |  | start no earlier than 2015-09-28 | Oliver Wyman | 8h | ܁ࢺ | Late |  |
| 159 | 1.1.1.3.3.3.7 | Facilitate review and challenge session for proposed metrics, limits and thresholds with key stakeholders (SCUSA) |  | 1d | 2015-09-28 | 2015-09-28 |  | 459d |  | start no earlier than 2015-09-28 | Oliver Wyman | 8h | ܁ࢻ | Late |  |
| 160 | 1.1.1.3.3.3.8 | Update list of subsidiary-specific metrics, given stakeholder input, and identify and document owners for each metric(SBNA) |  | 4d | 2015-09-29 | 2015-10-02 |  | 455d |  | start no earlier than 2015-09-29 | Oliver Wyman | 32h | ܁ࢺ | Late |  |
| 161 | 1.1.1.3.3.3.9 | Update list of subsidiary-specific metrics, given stakeholder input, and identify and document owners for each metric(SCUSA) |  | 4d | 2015-09-29 | 2015-10-02 |  | 455d |  | start no earlier than 2015-09-29 | Oliver Wyman | 32h | ܁ࢻ | Late |  |
| 162 | 1.1.1.3.3.3.10 | Detail limits and thresholds for list of subsidiary-specific metrics(SBNA) |  | 5d | 2015-09-21 | 2015-09-25 |  | 460d |  | start no earlier than 2015-09-21 | Oliver Wyman | 40h | ܁ࢺ | Late |  |
| 163 | 1.1.1.3.3.3.11 | Detail limits and thresholds for list of subsidiary-specific metrics(SCUSA) |  | 5d | 2015-09-21 | 2015-09-25 |  | 460d |  | start no earlier than 2015-09-21 | Oliver Wyman | 40h | ܁ࢻ | Late |  |
| 164 | 1.1.1.3.3.3.12 | Calibrate limits for subsidiary risks, ensure subsidiary-level limits align to SHUSA-level limits(SBNA) |  | 30d | 2015-09-21 | 2015-10-30 |  | 435d |  | start no earlier than 2015-09-21 | Oliver Wyman | 240h | ܁ࢺ | Late |  |
| 165 | 1.1.1.3.3.3.13 | Calibrate limits for subsidiary risks, ensure subsidiary-level limits align to SHUSA-level limits(SCUSA) |  | 30d | 2015-09-21 | 2015-10-30 |  | 435d |  | start no earlier than 2015-09-21 | Oliver Wyman | 240h | ܁ࢻ | Late |  |
| 166 | 1.1.1.3.3.3.14 | Document rationale for SHUSA metrics |  | 5d | 2015-09-21 | 2015-09-25 |  | 460d |  | start no earlier than 2015-09-21 | Oliver Wyman | 40h | ܁ࢹ | Late |  |
| 167 | 1.1.1.3.3.3.15 | Document IT requirements for SHUSA metrics |  | 15d | 2015-09-14 | 2015-10-02 |  | 455d | 1d | start no earlier than 2015-09-14 | Oliver Wyman | 120h | ܁ࢹ | Late | ܁д |
| 168 | 1.1.1.3.3.3.16 | Deliver Requirements for SHUSA metrics and limits to Data / IT | milestone, manual | 0d | 2015-10-06 | 2015-10-06 | 167 |  |  |  |  |  |  | Late | ܁д |
| 169 | 1.1.1.3.3.3.17 | Consolidate metrics, limits and thresholds into quantifiable statements for subsidiary-specific risks(SBNA) |  | 3d | 2015-11-02 | 2015-11-04 |  | 432d |  | start no earlier than 2015-11-02 | Oliver Wyman | 24h | ܁ࢺ | Late |  |
| 170 | 1.1.1.3.3.3.18 | Consolidate metrics, limits and thresholds into quantifiable statements for subsidiary-specific risks(SCUSA) |  | 3d | 2015-11-02 | 2015-11-04 |  | 432d |  | start no earlier than 2015-11-02 | Oliver Wyman | 24h | ܁ࢻ | Late |  |
| 171 | 1.1.1.3.3.3.19 | Socialize SBNA and SCUSA quantitative statements with stakeholders (SHUSA) |  | 2d | 2015-11-05 | 2015-11-06 |  | 430d |  | start no earlier than 2015-11-05 | Oliver Wyman | 16h | ܁ࢹ | Late |  |
| 172 | 1.1.1.3.3.3.20 | Socialize SBNA and SCUSA quantitative statements with stakeholders (SBNA) |  | 2d | 2015-11-05 | 2015-11-06 |  | 430d |  | start no earlier than 2015-11-05 | Oliver Wyman | 16h | ܁ࢺ | Late |  |
| 173 | 1.1.1.3.3.3.21 | Socialize SBNA and SCUSA quantitative statements with stakeholders (SCUSA) |  | 2d | 2015-11-05 | 2015-11-06 |  | 430d |  | start no earlier than 2015-11-05 | Oliver Wyman | 16h | ܁ࢻ | Late |  |
| 174 | 1.1.1.3.3.3.22 | Finalized quantitative risk appetite statements for subsidiary-specific risks | milestone | 0d | 2015-11-06 | 2015-11-06 |  | 431d |  | start no earlier than 2015-11-06 |  |  |  | Late |  |

Notes:
- 167: Technology / Open Question: Should we have IT requirements for each entity or does SHUSA requirement cover entities as well?

| ID | WBS | Task | Type | Duration | Start | Finish | Total slack | Constraint | Resources | Work | Entity | Tracking Status |
| --- | --- | --- | --- | --- | --- | --- | --- | --- | --- | --- | --- | --- |
| 175 | 1.1.1.3.3.4 | **MILESTONE: Consolidate qualitative and quantitative statements into SBNA RAS and SCUSA RAS and socialize with stakeholders** |  | 10d | 2015-11-09 | 2015-11-20 | 420d |  |  | 200h |  |  |
| 176 | 1.1.1.3.3.4.1 | Draft SBNA RAS |  | 5d | 2015-11-09 | 2015-11-13 | 425d | start no earlier than 2015-11-09 | Oliver Wyman | 40h | ܁ࢺ | Late |
| 177 | 1.1.1.3.3.4.2 | Draft SCUSA RAS |  | 5d | 2015-11-09 | 2015-11-13 | 425d | start no earlier than 2015-11-09 | Oliver Wyman | 40h | ܁ࢻ | Late |
| 178 | 1.1.1.3.3.4.3 | Socialize SBNA RAS and SCUSA RAS with stakeholders (SHUSA) |  | 5d | 2015-11-16 | 2015-11-20 | 420d | start no earlier than 2015-11-16 | Oliver Wyman | 40h | ܁ࢹ | Late |
| 179 | 1.1.1.3.3.4.4 | Socialize SBNA RAS and SCUSA RAS with stakeholders (SBNA) |  | 5d | 2015-11-16 | 2015-11-20 | 420d | start no earlier than 2015-11-16 | Oliver Wyman | 40h | ܁ࢺ | Late |
| 180 | 1.1.1.3.3.4.5 | Socialize SBNA RAS and SCUSA RAS with stakeholders (SCUSA) |  | 5d | 2015-11-16 | 2015-11-20 | 420d | start no earlier than 2015-11-16 | Oliver Wyman | 40h | ܁ࢻ | Late |
| 181 | 1.1.1.3.3.4.6 | Final drafts of SBNA RAS and SCUSA RAS | milestone | 0d | 2015-11-20 | 2015-11-20 | 421d | start no earlier than 2015-11-20 |  |  |  | Late |
| 182 | 1.1.1.3.3.5 | **MILESTONE: Secure Board approval of RAS for priority subsidiaries** |  | 30d | 2015-11-20 | 2015-12-31 | 391d |  |  | 720h |  |  |
| 183 | 1.1.1.3.3.5.1 | 6-week buffer for governance process(SHUSA) |  | 30d | 2015-11-20 | 2015-12-31 | 391d | start no earlier than 2015-11-20 | Oliver Wyman | 240h | ܁ࢹ | Late |
| 184 | 1.1.1.3.3.5.2 | 6-week buffer for governance process(SBNA) |  | 30d | 2015-11-20 | 2015-12-31 | 391d | start no earlier than 2015-11-20 | Oliver Wyman | 240h | ܁ࢺ | Late |
| 185 | 1.1.1.3.3.5.3 | 6-week buffer for governance process(SCUSA) |  | 30d | 2015-11-20 | 2015-12-31 | 391d | start no earlier than 2015-11-20 | Oliver Wyman | 240h | ܁ࢻ | Late |
| 186 | 1.1.1.3.3.5.4 | Board-approved SHUSA-level RAS | milestone | 0d | 2015-12-31 | 2015-12-31 | 392d | start no earlier than 2015-12-31 |  |  |  | Late |
| 187 | 1.1.1.3.3.6 | **MILESTONE: Communicate SHUSA, SBNA, and SCUSA RAS to enterprise** |  | 40d | 2015-12-31 | 2016-02-24 | 352d |  |  | 960h |  |  |
| 188 | 1.1.1.3.3.6.1 | Create communication materials to aid in socialization process(SHUSA) |  | 10d | 2015-12-31 | 2016-01-13 | 382d | start no earlier than 2015-12-31 | Oliver Wyman | 80h | ܁ࢹ | Late |
| 189 | 1.1.1.3.3.6.2 | Create communication materials to aid in socialization process(SBNA) |  | 10d | 2015-12-31 | 2016-01-13 | 382d | start no earlier than 2015-12-31 | Oliver Wyman | 80h | ܁ࢺ | Late |
| 190 | 1.1.1.3.3.6.3 | Create communication materials to aid in socialization process(SCUSA) |  | 10d | 2015-12-31 | 2016-01-13 | 382d | start no earlier than 2015-12-31 | Oliver Wyman | 80h | ܁ࢻ | Late |
| 191 | 1.1.1.3.3.6.4 | Facilitate training, town halls, etc. to communicate RAS to enterprise(SHUSA) |  | 30d | 2016-01-14 | 2016-02-24 | 352d | start no earlier than 2016-01-14 | Oliver Wyman | 240h | ܁ࢹ | Late |
| 192 | 1.1.1.3.3.6.5 | Facilitate training, town halls, etc. to communicate RAS to enterprise(SBNA) |  | 30d | 2016-01-14 | 2016-02-24 | 352d | start no earlier than 2016-01-14 | Oliver Wyman | 240h | ܁ࢺ | Late |
| 193 | 1.1.1.3.3.6.6 | Facilitate training, town halls, etc. to communicate RAS to enterprise(SCUSA) |  | 30d | 2016-01-14 | 2016-02-24 | 352d | start no earlier than 2016-01-14 | Oliver Wyman | 240h | ܁ࢻ | Late |
| 194 | 1.1.1.3.3.6.7 | Completed formal communication process to enterprise | milestone | 0d | 2016-02-24 | 2016-02-24 | 353d | start no earlier than 2016-02-24 |  |  |  | Late |
| 195 | 1.1.1.3.4 | **DELIVERABLE: RAS for remainder of subsidiaries and select Bus (SIS NY, Puerto Rico, Miami)** |  | 109d | 2016-02-01 | 2016-06-30 | 261d |  |  |  |  |  |
| 196 | 1.1.1.3.4.1 | **MILESTONE:Cascade RAS to Santander Investment Securities (SIS NY)** |  | 109d | 2016-02-01 | 2016-06-30 | 261d |  |  |  | ܁ࣅ | Late |
| 197 | 1.1.1.3.4.1.1 | Detail material risks specific to subsidiary (leveraging SHUSA-level list, but making additions as necessary) |  | 109d | 2016-02-01 | 2016-06-30 | 261d | start no earlier than 2016-02-01 |  |  | ܁ࣅ | Late |
| 198 | 1.1.1.3.4.1.2 | For each risk, determine a qualitative risk appetite statement (leveraging SHUSA-level RAS) |  | 109d | 2016-02-01 | 2016-06-30 | 261d | start no earlier than 2016-02-01 |  |  | ܁ࣅ | Late |
| 199 | 1.1.1.3.4.1.3 | For quantifiable statements, identify key metrics and calibrate limits (leveraging SHUSA-level RAS) |  | 109d | 2016-02-01 | 2016-06-30 | 261d | start no earlier than 2016-02-01 |  |  | ܁ࣅ | Late |
| 200 | 1.1.1.3.4.1.4 | Consolidate qualitative and quantitative statements into subsidiary RAS and socialize with stakeholders |  | 109d | 2016-02-01 | 2016-06-30 | 261d | start no earlier than 2016-02-01 |  |  | ܁ࣅ | Late |
| 201 | 1.1.1.3.4.1.5 | Secure Board approval of RAS for priority subsidiaries |  | 109d | 2016-02-01 | 2016-06-30 | 261d | start no earlier than 2016-02-01 |  |  | ܁ࣅ | Late |
| 202 | 1.1.1.3.4.1.6 | Communicate subsidiary RAS to enterprise |  | 109d | 2016-02-01 | 2016-06-30 | 261d | start no earlier than 2016-02-01 |  |  | ܁ࣅ | Late |

| ID | WBS | Task | Type | Duration | Start | Finish | Total slack | Constraint | Resources | Work | Entity | Tracking Status |
| --- | --- | --- | --- | --- | --- | --- | --- | --- | --- | --- | --- | --- |
| 203 | 1.1.1.3.4.2 | **MILESTONE:Cascade RAS to Puerto Rico** |  | 109d | 2016-02-01 | 2016-06-30 | 261d |  |  |  | ܁ࢾ | Late |
| 204 | 1.1.1.3.4.2.1 | Detail material risks specific to subsidiary (leveraging SHUSA-level list, but making additions as necessary) |  | 109d | 2016-02-01 | 2016-06-30 | 261d | start no earlier than 2016-02-01 |  |  | ܁ࢾ | Late |
| 205 | 1.1.1.3.4.2.2 | For each risk, determine a qualitative risk appetite statement (leveraging SHUSA-level RAS) |  | 109d | 2016-02-01 | 2016-06-30 | 261d | start no earlier than 2016-02-01 |  |  | ܁ࢾ | Late |
| 206 | 1.1.1.3.4.2.3 | For quantifiable statements, identify key metrics and calibrate limits (leveraging SHUSA-level RAS) |  | 109d | 2016-02-01 | 2016-06-30 | 261d | start no earlier than 2016-02-01 |  |  | ܁ࢾ | Late |
| 207 | 1.1.1.3.4.2.4 | Consolidate qualitative and quantitative statements into subsidiary RAS and socialize with stakeholders |  | 109d | 2016-02-01 | 2016-06-30 | 261d | start no earlier than 2016-02-01 |  |  | ܁ࢾ | Late |
| 208 | 1.1.1.3.4.2.5 | Secure Board approval of RAS for priority subsidiaries |  | 109d | 2016-02-01 | 2016-06-30 | 261d | start no earlier than 2016-02-01 |  |  | ܁ࢾ | Late |
| 209 | 1.1.1.3.4.2.6 | Communicate subsidiary RAS to enterprise |  | 109d | 2016-02-01 | 2016-06-30 | 261d | start no earlier than 2016-02-01 |  |  | ܁ࢾ | Late |
| 210 | 1.1.1.3.4.3 | **MILESTONE: Cascade RAS to Miami** |  | 109d | 2016-02-01 | 2016-06-30 | 261d |  |  |  | ܁ࣄ | Late |
| 211 | 1.1.1.3.4.3.1 | Detail material risks specific to subsidiary (leveraging SHUSA-level list, but making additions as necessary) |  | 109d | 2016-02-01 | 2016-06-30 | 261d | start no earlier than 2016-02-01 |  |  | ܁ࣄ | Late |
| 212 | 1.1.1.3.4.3.2 | For each risk, determine a qualitative risk appetite statement (leveraging SHUSA-level RAS) |  | 109d | 2016-02-01 | 2016-06-30 | 261d | start no earlier than 2016-02-01 |  |  | ܁ࣄ | Late |
| 213 | 1.1.1.3.4.3.3 | For quantifiable statements, identify key metrics and calibrate limits (leveraging SHUSA-level RAS) |  | 109d | 2016-02-01 | 2016-06-30 | 261d | start no earlier than 2016-02-01 |  |  | ܁ࣄ | Late |
| 214 | 1.1.1.3.4.3.4 | Consolidate qualitative and quantitative statements into subsidiary RAS and socialize with stakeholders |  | 109d | 2016-02-01 | 2016-06-30 | 261d | start no earlier than 2016-02-01 |  |  | ܁ࣄ | Late |
| 215 | 1.1.1.3.4.3.5 | Secure Board approval of RAS for priority subsidiaries |  | 109d | 2016-02-01 | 2016-06-30 | 261d | start no earlier than 2016-02-01 |  |  | ܁ࣄ | Late |
| 216 | 1.1.1.3.4.3.6 | Communicate subsidiary RAS to enterprise |  | 109d | 2016-02-01 | 2016-06-30 | 261d | start no earlier than 2016-02-01 |  |  | ܁ࣄ | Late |
| 217 | 1.1.1.3.4.4 | **MILESTONE: Cascade RAS to remainder of subsidiaries and select BUs** |  | 109d | 2016-02-01 | 2016-06-30 | 261d |  |  |  |  |  |
| 218 | 1.1.1.3.4.4.1 | Detail material risks specific to subsidiary (leveraging SHUSA-level list, but making additions as necessary) |  | 109d | 2016-02-01 | 2016-06-30 | 261d | start no earlier than 2016-02-01 |  |  |  | Late |
| 219 | 1.1.1.3.4.4.2 | For each risk, determine a qualitative risk appetite statement (leveraging SHUSA-level RAS) |  | 109d | 2016-02-01 | 2016-06-30 | 261d | start no earlier than 2016-02-01 |  |  |  | Late |
| 220 | 1.1.1.3.4.4.3 | For quantifiable statements, identify key metrics and calibrate limits (leveraging SHUSA-level RAS) |  | 109d | 2016-02-01 | 2016-06-30 | 261d | start no earlier than 2016-02-01 |  |  |  | Late |
| 221 | 1.1.1.3.4.4.4 | Consolidate qualitative and quantitative statements into subsidiary RAS and socialize with stakeholders |  | 109d | 2016-02-01 | 2016-06-30 | 261d | start no earlier than 2016-02-01 |  |  |  | Late |
| 222 | 1.1.1.3.4.4.5 | Secure Board approval of RAS for priority subsidiaries |  | 109d | 2016-02-01 | 2016-06-30 | 261d | start no earlier than 2016-02-01 |  |  |  | Late |
| 223 | 1.1.1.3.4.4.6 | Communicate subsidiary RAS to enterprise |  | 109d | 2016-02-01 | 2016-06-30 | 261d | start no earlier than 2016-02-01 |  |  |  | Late |
| 224 | 1.1.1.4 | **Embedded RAS in material processes across the enterprise** |  | 106d | 2015-08-17 | 2016-01-12 | 106d |  |  | 560h |  |  |
| 225 | 1.1.1.4.1 | **DELIVERABLE: Initialized embedding of RAS in material processes** |  | 75d | 2015-08-17 | 2015-11-27 | 415d |  |  | 320h |  |  |
| 226 | 1.1.1.4.1.1 | **MILESTONE: Test strategic plan against SHUSA-level RAS** |  | 15d | 2015-08-17 | 2015-09-04 | 475d |  |  | 200h |  |  |
| 227 | 1.1.1.4.1.1.1 | Compare draft of SHUSA-level RAS against draft of strategic plan |  | 5d | 2015-08-17 | 2015-08-21 | 485d | start no earlier than 2015-08-17 | Oliver Wyman | 40h | ܁ࢹ | Late |
| 228 | 1.1.1.4.1.1.2 | Identify gaps and adjust strategic plan as necessary |  | 5d | 2015-08-24 | 2015-08-28 | 480d | start no earlier than 2015-08-24 | Oliver Wyman | 40h | ܁ࢹ | Late |
| 229 | 1.1.1.4.1.1.3 | Socialize with key stakeholders (SHUSA) |  | 5d | 2015-08-31 | 2015-09-04 | 475d | start no earlier than 2015-08-31 | Oliver Wyman | 40h | ܁ࢹ | Late |
| 230 | 1.1.1.4.1.1.4 | Socialize with key stakeholders (SBNA) |  | 5d | 2015-08-31 | 2015-09-04 | 475d | start no earlier than 2015-08-31 | Oliver Wyman | 40h | ܁ࢺ | Late |
| 231 | 1.1.1.4.1.1.5 | Socialize with key stakeholders (SCUSA) |  | 5d | 2015-08-31 | 2015-09-04 | 475d | start no earlier than 2015-08-31 | Oliver Wyman | 40h | ܁ࢻ | Late |
| 232 | 1.1.1.4.1.1.6 | Updated strategic plan, aligned with SHUSA-level RAS | milestone | 0d | 2015-09-04 | 2015-09-04 | 476d | start no earlier than 2015-09-04 |  |  |  | Late |

| ID | WBS | Task | Type | Duration | Start | Finish | Predecessors | Total slack | Free slack | Constraint | Resources | Work | Entity | Tracking Status | Dependency |
| --- | --- | --- | --- | --- | --- | --- | --- | --- | --- | --- | --- | --- | --- | --- | --- |
| 233 | 1.1.1.4.1.2 | **MILESTONE: Update process maps for key processes with explicit RAS links** |  | 20d | 2015-11-02 | 2015-11-27 |  | 415d |  |  |  | 120h |  |  |  |
| 234 | 1.1.1.4.1.2.1 | Identify processes that should be explicitly linked to RAS (e.g. strategic planning, capital planning) |  | 5d | 2015-11-02 | 2015-11-06 |  | 430d |  | start no earlier than 2015-11-02 | Oliver Wyman | 40h | ܁ࢹ | Late |  |
| 235 | 1.1.1.4.1.2.2 | Detail nature of process linkage, including alignment to statements, metrics and limits described in the RAS |  | 5d | 2015-11-02 | 2015-11-06 |  | 430d |  | start no earlier than 2015-11-02 | Oliver Wyman | 40h | ܁ࢹ | Late |  |
| 236 | 1.1.1.4.1.2.3 | Assess degree to which RAS considerations are already embedded in key processes |  | 5d | 2015-11-02 | 2015-11-06 |  | 430d |  | start no earlier than 2015-11-02 | Oliver Wyman | 40h | ܁ࢹ | Late |  |
| 237 | 1.1.1.4.1.2.4 | Identify gaps and update key process maps accordingly |  | 15d | 2015-11-09 | 2015-11-27 |  | 415d |  | start no earlier than 2015-11-09 |  |  | ܁ࢹ | Late |  |
| 238 | 1.1.1.4.1.2.5 | Updated process maps for key processes | milestone | 0d | 2015-11-27 | 2015-11-27 |  | 416d |  | start no earlier than 2015-11-27 |  |  |  | Late |  |
| 239 | 1.1.1.4.2 | **DELIVERABLE: Plan implementation of RAS in all material processes** |  | 31d | 2015-11-30 | 2016-01-12 |  | 31d |  |  |  | 240h |  |  |  |
| 240 | 1.1.1.4.2.1 | **MILESTONE: Plan implementation of RAS in all material processes** |  | 31d | 2015-11-30 | 2016-01-12 |  | 31d |  |  |  | 240h |  |  |  |
| 241 | 1.1.1.4.2.1.1 | Detail plan for implementation of RAS in material processes (e.g. new product and business activity approval process) |  | 20d | 2015-11-30 | 2015-12-25 |  | 395d |  | start no earlier than 2015-11-30 | Oliver Wyman | 160h | ܁ࢹ | Late |  |
| 242 | 1.1.1.4.2.1.2 | Detail processes/controls to ensure that RAS is being further integrated into all processes until BAU |  | 10d | 2015-12-28 | 2016-01-08 |  | 385d |  | start no earlier than 2015-12-28 | Oliver Wyman | 80h | ܁ࢹ | Late |  |
| 243 | 1.1.1.4.2.1.3 | Completed plan for implementation in material processes | milestone | 0d | 2016-01-11 | 2016-01-11 |  | 385d | 1d | start no earlier than 2016-01-11 |  |  |  | Late |  |
| 244 | 1.1.1.4.2.1.4 | Deliver plan to Operational Risk, Model Risk and Model Development for individual risk types to be aligned | milestone, manual | 0d | 2016-01-12 | 2016-01-12 | 243 |  |  |  |  |  |  | Late | ܁д |
| 245 | 1.1.1.5 | **Year 2 and Year 3 Priorities** |  | 391d | 2016-01-01 | 2017-06-30 |  | 0d |  |  |  |  |  |  |  |
| 246 | 1.1.1.5.1 | **DELIVERABLE: Continue to cascade the risk appetite statement for the remainder of subsidiaries and business units and ensure alignment with overall SHUSA risk appetite statement** |  | 130d | 2016-01-01 | 2016-06-30 |  | 261d |  |  |  |  |  | Late |  |
| 247 | 1.1.1.5.1.1 | **MILESTONE: Finalized RAS for remainder of subsidiaries and Bus - aligned with SHUSA-level RAS** |  | 130d | 2016-01-01 | 2016-06-30 |  | 261d |  |  |  |  |  |  |  |
| 248 | 1.1.1.5.1.1.1 | Complete similar process (as SHUSA, SBNA and SCUSA RAS development) for remainder of subsidiaries and select BUs |  | 130d | 2016-01-01 | 2016-06-30 |  | 261d |  | start no earlier than 2016-01-01 |  |  |  | Late |  |
| 249 | 1.1.1.5.1.1.2 | Finalized RAS for remainder of subsidiaries and Bus - aligned with SHUSA-level RAS | milestone | 0d | 2016-06-30 | 2016-06-30 |  | 262d |  | start no earlier than 2016-06-30 |  |  |  | Late |  |
| 250 | 1.1.1.5.2 | **DELIVERABLE: Embed risk appetite statement in key processes at lower levels of the organization** |  | 130d | 2016-01-01 | 2016-06-30 |  | 261d |  |  |  |  |  | Late |  |
| 251 | 1.1.1.5.2.1 | **MILESTONE: Completion of embedding RAS in key processses at lower levels of organization** |  | 130d | 2016-01-01 | 2016-06-30 |  | 261d |  |  |  |  |  |  |  |
| 252 | 1.1.1.5.2.1.1 | Execute plan for implementation of embedding in key processes at lower levels |  | 130d | 2016-01-01 | 2016-06-30 |  | 261d |  | start no earlier than 2016-01-01 |  |  |  | Late |  |
| 253 | 1.1.1.5.2.1.2 | Completion of embedding RAS in key processses at lower levels of organization | milestone | 0d | 2016-06-30 | 2016-06-30 |  | 262d |  | start no earlier than 2016-06-30 |  |  |  | Late |  |
| 254 | 1.1.1.5.3 | **DELIVERABLE: Continue to communicate risk appetite statement throughout the enterprise, including training in the new escalation and remediation process** |  | 131d | 2016-04-01 | 2016-09-30 |  | 195d |  |  |  |  |  | Late |  |
| 255 | 1.1.1.5.3.1 | **MILESTONE:Completed communication and training throughout enterprise** |  | 131d | 2016-04-01 | 2016-09-30 |  | 195d |  |  |  |  |  |  |  |
| 256 | 1.1.1.5.3.1.1 | Continue communication of RAS throughout enterprise |  | 131d | 2016-04-01 | 2016-09-30 |  | 195d |  | start no earlier than 2016-04-01 |  |  |  | Late |  |
| 257 | 1.1.1.5.3.1.2 | Conduct training in new escalation and remediation process |  | 131d | 2016-04-01 | 2016-09-30 |  | 195d |  | start no earlier than 2016-04-01 |  |  |  | Late |  |
| 258 | 1.1.1.5.3.1.3 | Completed communication and training throughout enterprise | milestone | 0d | 2016-09-30 | 2016-09-30 |  | 196d |  | start no earlier than 2016-09-30 |  |  |  | Late |  |

| ID | WBS | Task | Type | Duration | Start | Finish | Predecessors | Total slack | Constraint | Entity | Tracking Status |
| --- | --- | --- | --- | --- | --- | --- | --- | --- | --- | --- | --- |
| 259 | 1.1.1.5.4 | **DELIVERABLE: Periodically enhance risk appetite statement based on the latest results of material risk identification and improved risk measurement across the enterprise** |  | 195d | 2016-10-03 | 2017-06-30 |  | 0d |  | ܁ࢹ |  |
| 260 | 1.1.1.5.4.1 | **MILESTONE: Completion of Round 1 of RAS enhancements** |  | 65d | 2016-10-03 | 2016-12-30 |  | 130d |  | ܁ࢹ | Late |
| 261 | 1.1.1.5.4.1.1 | Round 1 (including incorporation of risk-based capital metrics) |  | 65d | 2016-10-03 | 2016-12-30 |  | 130d | start no earlier than 2016-10-03 | ܁ࢹ | Late |
| 262 | 1.1.1.5.4.1.2 | Completion of Round 1 of RAS enhancements | milestone | 0d | 2016-12-30 | 2016-12-30 |  | 131d | start no earlier than 2016-12-30 | ܁ࢹ | Late |
| 263 | 1.1.1.5.4.2 | **MILESTONE: Completion of Round 2 of RAS enhancements** |  | 65d | 2017-04-03 | 2017-06-30 |  | 0d |  | ܁ࢹ |  |
| 264 | 1.1.1.5.4.2.1 | Round 2 |  | 65d | 2017-04-03 | 2017-06-30 |  | 0d | start no earlier than 2017-04-03 | ܁ࢹ | Late |
| 265 | 1.1.1.5.4.2.2 | Completion of Round 2 of RAS enhancements | milestone | 0d | 2017-06-30 | 2017-06-30 |  | 1d | start no earlier than 2017-06-30 | ܁ࢹ | Late |
| 266 | 1.1.2 | **Risk Governance & Organization** |  | 467d? | 2015-06-22 | 2017-04-04 |  | 63d |  |  | Late |
| 267 | 1.1.2.1 | **Risk Governance & Organization Deliverables** |  | 442d | 2015-07-24 | 2017-04-04 |  | 64d |  | ܁ࢹ |  |
| 268 | 1.1.2.1.1 | DELIVERABLE: Diagnostic of Risk Mgmt. Committee effectiveness | milestone | 0d | 2015-11-30 | 2015-11-30 | 295, 289, 301, 305 | 415d | start no earlier than 2015-11-30 |  | Late |
| 269 | 1.1.2.1.2 | DELIVERABLE: Conduct Training for Board | milestone | 0d | 2015-08-31 | 2015-08-31 | 312 | 480d | start no earlier than 2015-08-31 | ܁ࢹ | Late |
| 270 | 1.1.2.1.3 | DELIVERABLE: Determine Scheme of Coordination Between SHUSA and Parent and Define Risk Committees Composition / Mandates / Charters | milestone | 0d | 2016-06-20 | 2016-06-20 | 320, 326, 332, 338, 344, 350, 354, 358, 362, 366 | 270d | start no earlier than 2016-06-20 |  | Late |
| 271 | 1.1.2.1.4 | DELIVERABLE: Enhance Performance Scorecards | milestone | 0d | 2015-11-30 | 2015-11-30 |  | 415d | start no earlier than 2015-11-30 |  | Late |
| 272 | 1.1.2.1.5 | DELIVERABLE: Risk organizational structure charts and subsidiary reporting schemes submitted to CRO for approval (SHUSA) | milestone | 0d | 2015-07-24 | 2015-07-24 |  | 506d | start no earlier than 2015-07-24 |  | Late |
| 273 | 1.1.2.1.6 | DELIVERABLE: Risk type A (Most likely Credit) | milestone | 0d | 2015-09-14 | 2015-09-14 |  | 470d | start no earlier than 2015-09-14 |  | Late |
| 274 | 1.1.2.1.7 | DELIVERABLE: Risk type B (Most likely ERM + RAS + Strategic) | milestone | 0d | 2015-09-14 | 2015-09-14 |  | 470d | start no earlier than 2015-09-14 |  | Late |
| 275 | 1.1.2.1.8 | DELIVERABLE: Risk type C (Most likely Market & Liquidity) | milestone | 0d | 2015-12-07 | 2015-12-07 |  | 410d | start no earlier than 2015-12-07 |  | Late |
| 276 | 1.1.2.1.9 | DELIVERABLE: Risk type D (Most likely Compliance) | milestone | 0d | 2015-12-07 | 2015-12-07 |  | 410d | start no earlier than 2015-12-07 |  | Late |
| 277 | 1.1.2.1.10 | DELIVERABLE: Risk type E (Most likely Risk Management Information) | milestone | 0d | 2016-02-29 | 2016-02-29 |  | 350d | start no earlier than 2016-02-29 |  | Late |
| 278 | 1.1.2.1.11 | DELIVERABLE: Risk type F (Most likely Capital Risk) | milestone | 0d | 2016-02-29 | 2016-02-29 |  | 350d | start no earlier than 2016-02-29 |  | Late |
| 279 | 1.1.2.1.12 | DELIVERABLE: 1st Round Post Implementation Review Conducted | milestone | 0d | 2016-01-04 | 2016-01-04 |  | 390d | start no earlier than 2016-01-04 |  | Late |
| 280 | 1.1.2.1.13 | DELIVERABLE: 2nd Round Post Implementation Review Conducted | milestone | 0d | 2016-03-25 | 2016-03-25 |  | 331d | start no earlier than 2016-03-25 |  | Late |
| 281 | 1.1.2.1.14 | DELIVERABLE: 3rd Round Post Implementation Review Conducted | milestone | 0d | 2016-06-20 | 2016-06-20 |  | 270d | start no earlier than 2016-06-20 |  | Late |
| 282 | 1.1.2.1.15 | DELIVERABLE: Strong and Desired Risk Culture Defined | milestone | 0d | 2016-04-18 | 2016-04-18 |  | 315d | start no earlier than 2016-04-18 |  | Late |
| 283 | 1.1.2.1.16 | DELIVERABLE: Rollout Performance Assessment and Compensation Frameworks across the Organization | milestone, manual | 0d | 2017-01-02 | 2017-01-02 |  |  |  |  | Late |
| 284 | 1.1.2.1.17 | DELIVERABLE: Communication and training for organizational changes related to 3 LOD | milestone, manual | 0d | 2017-01-02 | 2017-01-02 |  |  |  |  | Late |
| 285 | 1.1.2.1.18 | DELIVERABLE: Design recruitment and retention mechanisms | milestone, manual | 0d | 2017-04-04 | 2017-04-04 |  |  |  |  | Late |

| ID | WBS | Task | Type | Duration | Start | Finish | Predecessors | Total slack | Free slack | Constraint | Entity | Tracking Status |
| --- | --- | --- | --- | --- | --- | --- | --- | --- | --- | --- | --- | --- |
| 286 | 1.1.2.2 | **Strengthen Board and Management Committee Oversight** |  | 115d | 2015-06-22 | 2015-11-30 |  | 415d |  |  | ܁ࢹ | Late |
| 287 | 1.1.2.2.1 | **DELIVERABLE: Diagnostic of Risk Mgmt. Committee effectiveness** |  | 0d | 2015-07-13 | 2015-07-13 |  | 515d |  |  | ܁ࢹ | Late |
| 288 | 1.1.2.2.1.1 | **MILESTONE: Diagnostic of Risk Mgmt. Committee effectiveness** |  | 0d | 2015-07-13 | 2015-07-13 |  | 515d |  |  | ܁ࢹ |  |
| 289 | 1.1.2.2.1.1.1 | Diagnostic of Risk Mgmt. Committee Complete | milestone | 0d | 2015-07-13 | 2015-07-13 |  | 515d | 100d | start no earlier than 2015-07-13 | ܁ࢹ | Late |
| 290 | 1.1.2.2.2 | **DELIVERABLE: Conduct Training for Board** |  | 50d | 2015-06-22 | 2015-08-31 |  | 415d |  |  | ܁ࢹ |  |
| 291 | 1.1.2.2.2.1 | **MILESTONE: Conduct Training for Board** |  | 50d | 2015-06-22 | 2015-08-31 |  | 415d |  |  | ܁ࢹ |  |
| 292 | 1.1.2.2.2.1.1 | Delivery of Board Training (session 1) |  | 20d | 2015-06-22 | 2015-07-17 |  | 415d | 0d | start no earlier than 2015-06-22 | ܁ࢹ | Late |
| 293 | 1.1.2.2.2.1.2 | Board risk training curriculum and schedule |  | 25d | 2015-07-07 | 2015-08-10 | 294SF | 494d |  | start no earlier than 2015-07-07 | ܁ࢹ | Late |
| 294 | 1.1.2.2.2.1.3 | Delivery of Board Training (session 2) |  | 15d | 2015-08-10 | 2015-08-28 |  | 480d | 1d | start no earlier than 2015-08-10 | ܁ࢹ | Late |
| 295 | 1.1.2.2.2.1.4 | Board Training Complete | milestone | 0d | 2015-08-31 | 2015-08-31 |  | 480d | 65d | start no earlier than 2015-08-31 | ܁ࢹ | Late |
| 296 | 1.1.2.2.3 | **DELIVERABLE: Determine Scheme of Coordination Between SHUSA and Parent and Define Risk Committees Composition / Mandates / Charters** |  | 80d | 2015-07-13 | 2015-11-02 |  | 420d |  |  | ܁ࢹ |  |
| 297 | 1.1.2.2.3.1 | **MILESTONE: Determine Scheme of Coordination Between SHUSA and Parent and Define Risk Committees Composition / Mandates / Charters** |  | 80d | 2015-07-13 | 2015-11-02 |  | 420d |  |  | ܁ࢹ |  |
| 298 | 1.1.2.2.3.1.1 | Governance and coordination mechanisms between SHUSA and parent |  | 20d | 2015-07-13 | 2015-08-07 |  | 495d |  | start no earlier than 2015-07-13 | ܁ࢹ | Late |
| 299 | 1.1.2.2.3.1.2 | Definition of composition / mandates / charters for BERC and Level 1 Risk Committees |  | 45d | 2015-07-20 | 2015-09-18 | 292 | 415d | 0d | start no earlier than 2015-07-20 | ܁ࢹ | Late |
| 300 | 1.1.2.2.3.1.3 | Definition of composition / mandates / charters for Level 2 Risk Committees |  | 45d | 2015-08-31 | 2015-10-30 | 299FS-15d | 415d | 0d | start no earlier than 2015-08-31 | ܁ࢹ | Late |
| 301 | 1.1.2.2.3.1.4 | Composition / Mandates / Charters Definitions for BERC and Risk Committees Complete | milestone | 0d | 2015-11-02 | 2015-11-02 |  | 435d | 20d | start no earlier than 2015-11-02 | ܁ࢹ | Late |
| 302 | 1.1.2.2.4 | **DELIVERABLE: Enhance Performance Scorecards** |  | 20d | 2015-11-02 | 2015-11-30 |  | 415d |  |  | ܁ࢹ |  |
| 303 | 1.1.2.2.4.1 | **MILESTONE: Enhance Performance Scorecards** |  | 20d | 2015-11-02 | 2015-11-30 |  | 415d |  |  | ܁ࢹ |  |
| 304 | 1.1.2.2.4.1.1 | Perform high level assessment and remediation of performance scorecards |  | 20d | 2015-11-02 | 2015-11-27 | 300 | 415d |  | start no earlier than 2015-11-02 | ܁ࢹ | Late |
| 305 | 1.1.2.2.4.1.2 | Assessment and Remediation of Performance Scorecards Complete | milestone | 0d | 2015-11-30 | 2015-11-30 |  | 415d | 0d | start no earlier than 2015-11-30 | ܁ࢹ | Late |
| 306 | 1.1.2.3 | **Strengthen the structure of risk leadership (SHUSA and subsidiary CROs, Risk Control Officers)** |  | 25d | 2015-06-22 | 2015-07-24 |  | 505d |  |  | ܁ࢹ |  |
| 307 | 1.1.2.3.1 | **DELIVERABLE: Risk organizational structure charts and subsidiary reporting schemes submitted to CRO for approval (SHUSA)** |  | 25d | 2015-06-22 | 2015-07-24 |  | 505d |  |  | ܁ࢹ |  |
| 308 | 1.1.2.3.1.1 | **MILESTONE: Risk organizational structure charts and subsidiary reporting schemes submitted to CRO for approval (SHUSA)** |  | 25d | 2015-06-22 | 2015-07-24 |  | 505d |  |  | ܁ࢹ |  |
| 309 | 1.1.2.3.1.1.1 | Formalize subsidiary CRO reporting lines, socialize and refine solution (SHUSA) |  | 10d | 2015-06-22 | 2015-07-03 |  | 515d | 0d | start no earlier than 2015-06-22 | ܁ࢹ | Late |
| 310 | 1.1.2.3.1.1.2 | Define implications of reporting lines (for Performance assessment and hiring/firing authority) (SHUSA) |  | 10d | 2015-06-29 | 2015-07-10 | 309FS-5d | 515d |  | start no earlier than 2015-06-29 | ܁ࢹ | Late |
| 311 | 1.1.2.3.1.1.3 | Design 1st LoD Risk organization leadership structure including the role of RCO (SHUSA) |  | 25d | 2015-06-22 | 2015-07-24 |  | 505d |  | start no earlier than 2015-06-22 | ܁ࢹ | Late |
| 312 | 1.1.2.3.1.1.4 | Risk organizational structure charts and subsidiary reporting schemes submitted to CRO for approval (SHUSA) | milestone | 0d | 2015-07-24 | 2015-07-24 |  | 506d | 26d | start no earlier than 2015-07-24 | ܁ࢹ | Late |

| ID | WBS | Task | Type | Duration | Start | Finish | Predecessors | Total slack | Free slack | Constraint | Entity | Tracking Status |
| --- | --- | --- | --- | --- | --- | --- | --- | --- | --- | --- | --- | --- |
| 313 | 1.1.2.4 | **Design Target Operating Model aligned with 3LoD principles - by risk type** |  | 260d | 2015-06-22 | 2016-06-20 |  | 270d |  |  | ܁ࢹ |  |
| 314 | 1.1.2.4.1 | Review of existing 1st LoD structure and capabilities |  | 20d | 2015-06-22 | 2015-07-17 |  | 510d |  | start no earlier than 2015-06-22 | ܁ࢹ | Late |
| 315 | 1.1.2.4.2 | **DELIVERABLE: Risk type A (Most likely Credit)** |  | 60d | 2015-06-22 | 2015-09-14 |  | 270d |  |  | ܁ࢹ |  |
| 316 | 1.1.2.4.2.1 | **MILESTONE: Risk type A (Most likely Credit)** |  | 60d | 2015-06-22 | 2015-09-14 |  | 270d |  |  | ܁ࢹ |  |
| 317 | 1.1.2.4.2.1.1 | Framework update with refined roles and responsibilities splits |  | 10d | 2015-06-22 | 2015-07-03 |  | 270d | 0d | start no earlier than 2015-06-22 | ܁ࢹ | Late |
| 318 | 1.1.2.4.2.1.2 | Formalized Risk group org. structure with aligned talent assessment and development |  | 25d | 2015-07-06 | 2015-08-07 | 317 | 270d | 0d | start no earlier than 2015-07-06 | ܁ࢹ | Late |
| 319 | 1.1.2.4.2.1.3 | Implementation planning, specification of interrelationships |  | 25d | 2015-08-10 | 2015-09-11 | 318 | 270d | 0d | start no earlier than 2015-08-10 | ܁ࢹ | Late |
| 320 | 1.1.2.4.2.1.4 | MILESTONE | milestone | 0d | 2015-09-14 | 2015-09-14 | 319 | 470d | 200d | start no earlier than 2015-09-14 | ܁ࢹ | Late |
| 321 | 1.1.2.4.3 | **DELIVERABLE: Risk type B (Most likely ERM + RAS + Strategic)** |  | 60d | 2015-06-22 | 2015-09-14 |  | 315d |  |  | ܁ࢹ |  |
| 322 | 1.1.2.4.3.1 | **MILESTONE: Risk type B (Most likely ERM + RAS + Strategic)** |  | 60d | 2015-06-22 | 2015-09-14 |  | 315d |  |  | ܁ࢹ |  |
| 323 | 1.1.2.4.3.1.1 | Framework update with refined roles and responsibilities splits |  | 10d | 2015-06-22 | 2015-07-03 |  | 315d | 0d | start no earlier than 2015-06-22 | ܁ࢹ | Late |
| 324 | 1.1.2.4.3.1.2 | Formalized Risk group org. structure with aligned talent assessment and development |  | 25d | 2015-07-06 | 2015-08-07 | 323 | 315d | 0d | start no earlier than 2015-07-06 | ܁ࢹ | Late |
| 325 | 1.1.2.4.3.1.3 | Implementation planning, specification of interrelationships |  | 25d | 2015-08-10 | 2015-09-11 | 324 | 315d | 0d | start no earlier than 2015-08-10 | ܁ࢹ | Late |
| 326 | 1.1.2.4.3.1.4 | MILESTONE | milestone | 0d | 2015-09-14 | 2015-09-14 | 325 | 470d | 200d | start no earlier than 2015-09-14 | ܁ࢹ | Late |
| 327 | 1.1.2.4.4 | **DELIVERABLE: Risk type C (Most likely Market & Liquidity)** |  | 60d | 2015-09-14 | 2015-12-07 |  | 350d |  |  | ܁ࢹ |  |
| 328 | 1.1.2.4.4.1 | **MILESTONE: Risk type C (Most likely Market & Liquidity)** |  | 60d | 2015-09-14 | 2015-12-07 |  | 350d |  |  | ܁ࢹ |  |
| 329 | 1.1.2.4.4.1.1 | Framework update with refined roles and responsibilities splits |  | 10d | 2015-09-14 | 2015-09-25 | 319 | 350d | 0d | start no earlier than 2015-09-14 | ܁ࢹ | Late |
| 330 | 1.1.2.4.4.1.2 | Formalized Risk group org. structure with aligned talent assessment and development |  | 25d | 2015-09-28 | 2015-10-30 | 329 | 350d | 0d | start no earlier than 2015-09-28 | ܁ࢹ | Late |
| 331 | 1.1.2.4.4.1.3 | Implementation planning, specification of interrelationships |  | 25d | 2015-11-02 | 2015-12-04 | 330 | 350d | 0d | start no earlier than 2015-11-02 | ܁ࢹ | Late |
| 332 | 1.1.2.4.4.1.4 | MILESTONE | milestone | 0d | 2015-12-07 | 2015-12-07 | 331 | 410d | 140d | start no earlier than 2015-12-07 | ܁ࢹ | Late |
| 333 | 1.1.2.4.5 | **DELIVERABLE: Risk type D (Most likely Compliance)** |  | 60d | 2015-09-14 | 2015-12-07 |  | 315d |  |  | ܁ࢹ |  |
| 334 | 1.1.2.4.5.1 | **MILESTONE: Risk type D (Most likely Compliance)** |  | 60d | 2015-09-14 | 2015-12-07 |  | 315d |  |  | ܁ࢹ |  |
| 335 | 1.1.2.4.5.1.1 | Framework update with refined roles and responsibilities splits |  | 10d | 2015-09-14 | 2015-09-25 | 325 | 315d | 0d | start no earlier than 2015-09-14 | ܁ࢹ | Late |
| 336 | 1.1.2.4.5.1.2 | Formalized Risk group org. structure with aligned talent assessment and development |  | 25d | 2015-09-28 | 2015-10-30 | 335 | 315d | 0d | start no earlier than 2015-09-28 | ܁ࢹ | Late |
| 337 | 1.1.2.4.5.1.3 | Implementation planning, specification of interrelationships |  | 25d | 2015-11-02 | 2015-12-04 | 336 | 315d | 0d | start no earlier than 2015-11-02 | ܁ࢹ | Late |
| 338 | 1.1.2.4.5.1.4 | MILESTONE | milestone | 0d | 2015-12-07 | 2015-12-07 | 337 | 410d | 140d | start no earlier than 2015-12-07 | ܁ࢹ | Late |

| ID | WBS | Task | Type | Duration | Start | Finish | Predecessors | Total slack | Free slack | Constraint | Entity | Tracking Status |
| --- | --- | --- | --- | --- | --- | --- | --- | --- | --- | --- | --- | --- |
| 339 | 1.1.2.4.6 | **DELIVERABLE: Risk type E (Most likely Risk Management Information)** |  | 60d | 2015-12-07 | 2016-02-29 |  | 350d |  |  | ܁ࢹ |  |
| 340 | 1.1.2.4.6.1 | **MILESTONE: Risk type E (Most likely Risk Management Information)** |  | 60d | 2015-12-07 | 2016-02-29 |  | 350d |  |  | ܁ࢹ |  |
| 341 | 1.1.2.4.6.1.1 | Framework update with refined roles and responsibilities splits |  | 10d | 2015-12-07 | 2015-12-18 | 331 | 350d | 0d | start no earlier than 2015-12-07 | ܁ࢹ | Late |
| 342 | 1.1.2.4.6.1.2 | Formalized Risk group org. structure with aligned talent assessment and development |  | 25d | 2015-12-21 | 2016-01-22 | 341 | 350d | 0d | start no earlier than 2015-12-21 | ܁ࢹ | Late |
| 343 | 1.1.2.4.6.1.3 | Implementation planning, specification of interrelationships |  | 25d | 2016-01-25 | 2016-02-26 | 342 | 350d | 0d | start no earlier than 2016-01-25 | ܁ࢹ | Late |
| 344 | 1.1.2.4.6.1.4 | MILESTONE | milestone | 0d | 2016-02-29 | 2016-02-29 | 343 | 350d | 80d | start no earlier than 2016-02-29 | ܁ࢹ | Late |
| 345 | 1.1.2.4.7 | **DELIVERABLE: Risk type F (Most likely Capital Risk)** |  | 60d | 2015-12-07 | 2016-02-29 |  | 315d |  |  | ܁ࢹ |  |
| 346 | 1.1.2.4.7.1 | **MILESTONE: Risk type F (Most likely Capital Risk)** |  | 60d | 2015-12-07 | 2016-02-29 |  | 315d |  |  | ܁ࢹ |  |
| 347 | 1.1.2.4.7.1.1 | Framework update with refined roles and responsibilities splits |  | 10d | 2015-12-07 | 2015-12-18 | 337 | 315d | 0d | start no earlier than 2015-12-07 | ܁ࢹ | Late |
| 348 | 1.1.2.4.7.1.2 | Formalized Risk group org. structure with aligned talent assessment and development |  | 25d | 2015-12-21 | 2016-01-22 | 347 | 315d | 0d | start no earlier than 2015-12-21 | ܁ࢹ | Late |
| 349 | 1.1.2.4.7.1.3 | Implementation planning, specification of interrelationships |  | 25d | 2016-01-25 | 2016-02-26 | 348 | 315d | 0d | start no earlier than 2016-01-25 | ܁ࢹ | Late |
| 350 | 1.1.2.4.7.1.4 | MILESTONE | milestone | 0d | 2016-02-29 | 2016-02-29 | 349 | 350d | 80d | start no earlier than 2016-02-29 | ܁ࢹ | Late |
| 351 | 1.1.2.4.8 | **DELIVERABLE: 1st Round Post Implementation Review Conducted** |  | 20d | 2015-12-07 | 2016-01-04 |  | 270d |  |  | ܁ࢹ |  |
| 352 | 1.1.2.4.8.1 | **MILESTONE: 1st Round Post Implementation Review Conducted** |  | 20d | 2015-12-07 | 2016-01-04 |  | 270d |  |  | ܁ࢹ |  |
| 353 | 1.1.2.4.8.1.1 | Post Implementation Review (First Round) |  | 20d | 2015-12-07 | 2016-01-01 | 319FS+60d | 270d | 0d | start no earlier than 2015-12-07 | ܁ࢹ | Late |
| 354 | 1.1.2.4.8.1.2 | MILESTONE: 1st Round Post Implementation Review Conducted | milestone | 0d | 2016-01-04 | 2016-01-04 | 353 | 390d | 120d | start no earlier than 2016-01-04 | ܁ࢹ | Late |
| 355 | 1.1.2.4.9 | **DELIVERABLE: 2nd Round Post Implementation Review Conducted** |  | 20d | 2016-02-29 | 2016-03-25 |  | 270d |  |  | ܁ࢹ |  |
| 356 | 1.1.2.4.9.1 | **MILESTONE: 2nd Round Post Implementation Review Conducted** |  | 20d | 2016-02-29 | 2016-03-25 |  | 270d |  |  | ܁ࢹ |  |
| 357 | 1.1.2.4.9.1.1 | Post Implementation Review (Second Round) |  | 20d | 2016-02-29 | 2016-03-25 | 353SS+60d | 270d | 0d |  | ܁ࢹ | Late |
| 358 | 1.1.2.4.9.1.2 | MILESTONE: 2nd Round Post Implementation Review Conducted |  | 20d | 2016-02-29 | 2016-03-25 |  | 330d | 60d | start no earlier than 2016-02-29 | ܁ࢹ | Late |
| 359 | 1.1.2.4.10 | **DELIVERABLE: 3rd Round Post Implementation Review Conducted** |  | 20d | 2016-05-23 | 2016-06-20 |  | 270d |  |  | ܁ࢹ |  |
| 360 | 1.1.2.4.10.1 | **MILESTONE: 3rd Round Post Implementation Review Conducted** |  | 20d | 2016-05-23 | 2016-06-20 |  | 270d |  |  | ܁ࢹ |  |
| 361 | 1.1.2.4.10.1.1 | Post Implementation Review (Third Round) |  | 20d | 2016-05-23 | 2016-06-17 | 357SS+60d | 270d | 0d | start no earlier than 2016-05-23 | ܁ࢹ | Late |
| 362 | 1.1.2.4.10.1.2 | MILESTONE: 3rd Round Post Implementation Review Conducted | milestone | 0d | 2016-06-20 | 2016-06-20 | 361 | 270d | 0d | start no earlier than 2016-06-20 | ܁ࢹ | Late |

| ID | WBS | Task | Type | Duration | Start | Finish | Predecessors | Total slack | Free slack | Constraint | Entity | Tracking Status |
| --- | --- | --- | --- | --- | --- | --- | --- | --- | --- | --- | --- | --- |
| 363 | 1.1.2.4.11 | **DELIVERABLE: Strong and Desired Risk Culture Defined** |  | 35d | 2016-02-29 | 2016-04-18 |  | 315d |  |  | ܁ࢹ |  |
| 364 | 1.1.2.4.11.1 | **MILESTONE: Strong and Desired Risk Culture Defined** |  | 35d | 2016-02-29 | 2016-04-18 |  | 315d |  |  | ܁ࢹ |  |
| 365 | 1.1.2.4.11.1.1 | Define Strong and desired Risk culture |  | 35d | 2016-02-29 | 2016-04-15 | 349 | 315d | 0d | start no earlier than 2016-02-29 | ܁ࢹ | Late |
| 366 | 1.1.2.4.11.1.2 | MILESTONE: Strong and Desired Risk Culture Instilled | milestone | 0d | 2016-04-18 | 2016-04-18 | 365 | 315d | 45d | start no earlier than 2016-04-18 | ܁ࢹ | Late |
| 367 | 1.1.2.5 | **Year 2 and Year 3 Priorities** |  | 328d? | 2016-01-01 | 2017-04-04 |  | 63d |  |  |  |  |
| 368 | 1.1.1.4.1 | **DELIVERABLE: Rollout Performance Assessment and Compensation Frameworks across the Organization** |  | 197d? | 2016-04-01 | 2017-01-02 |  | 129d |  |  | ܁ࢹ |  |
| 369 | 1.1.2.5.1.1 | **MILESTONE: Design risk-based compensation framework** |  | 65d | 2016-04-01 | 2016-06-30 |  | 261d |  |  | ܁ࢹ |  |
| 370 | 1.1.1.4.1.1.1 | Benchmark of risk-based compensation practices in the industry |  | 65d | 2016-04-01 | 2016-06-30 |  | 261d |  | start no earlier than 2016-04-01 | ܁ࢹ | Late |
| 371 | 1.1.1.4.1.1.2 | Risk-based compensation proposals and refinement with stakeholders |  | 65d | 2016-04-01 | 2016-06-30 |  | 261d |  | start no earlier than 2016-04-01 | ܁ࢹ | Late |
| 372 | 1.1.1.4.1.1.3 | Impact analysis of new frameworks on compensation levels |  | 65d | 2016-04-01 | 2016-06-30 |  | 261d |  | start no earlier than 2016-04-01 | ܁ࢹ | Late |
| 373 | 1.1.1.4.1.1.4 | Formalization of new risk-based compensation framework |  | 65d | 2016-04-01 | 2016-06-30 |  | 261d |  | start no earlier than 2016-04-01 | ܁ࢹ | Late |
| 374 | 1.1.2.5.1.1.5 | Risk-based compensation structure complete | milestone | 0d | 2016-06-30 | 2016-06-30 |  | 262d |  | start no earlier than 2016-06-30 | ܁ࢹ | Late |
| 375 | 1.1.2.5.1.2 | **MILESTONE: Communication and stakeholder engagement** |  | 131d? | 2016-04-01 | 2016-09-30 |  | 195d |  |  | ܁ࢹ |  |
| 376 | 1.1.1.4.1.2.1 | Design of communication plan |  | 65d? | 2016-04-01 | 2016-06-30 |  | 261d |  | start no earlier than 2016-04-01 | ܁ࢹ | Late |
| 377 | 1.1.1.4.1.2.2 | Writing of communication materials |  | 65d? | 2016-04-01 | 2016-06-30 |  | 261d |  | start no earlier than 2016-04-01 | ܁ࢹ | Late |
| 378 | 1.1.1.4.1.2.3 | Execution of communication plan |  | 67d? | 2016-06-30 | 2016-09-30 |  | 195d |  | start no earlier than 2016-06-30 | ܁ࢹ | Late |
| 379 | 1.1.2.5.1.2.4 | Stakeholder communication complete | milestone | 0d | 2016-09-30 | 2016-09-30 |  | 196d |  | start no earlier than 2016-09-30 | ܁ࢹ | Late |
| 380 | 1.1.2.5.1.3 | **MILESTONE: Updates to performance assessment templates** |  | 132d? | 2016-07-01 | 2017-01-02 |  | 129d |  |  | ܁ࢹ |  |
| 381 | 1.1.1.4.1.3.1 | Inventory of performance assessment templates at SHUSA, SBNA and SCUSA |  | 66d? | 2016-07-01 | 2016-09-30 |  | 195d |  | start no earlier than 2016-07-01 | ܁ࢹ | Late |
| 382 | 1.1.1.4.1.3.2 | Update of template in accordance with risk-based compensation framework |  | 66d? | 2016-07-01 | 2016-09-30 |  | 195d |  | start no earlier than 2016-07-01 | ܁ࢹ | Late |
| 383 | 1.1.1.4.1.3.3 | Socialization, training to stakeholders and roll-out of new templates |  | 67d? | 2016-09-30 | 2017-01-02 |  | 129d |  | start no earlier than 2016-09-30 | ܁ࢹ | Late |
| 384 | 1.1.2.5.1.3.4 | Performance assessment templates updated | milestone | 0d | 2016-12-31 | 2016-12-31 |  | 130d |  | start no earlier than 2016-12-31 | ܁ࢹ | Late |
| 385 | 1.1.1.4.2 | **DELIVERABLE: Communication and training for organizational changes related to 3 LOD** |  | 262d? | 2016-01-01 | 2017-01-02 |  | 129d |  |  | ܁ࢹ |  |
| 386 | 1.1.2.5.2.1 | **MILESTONE: Communications to emphasize progress being made / share best practices** |  | 65d | 2016-01-01 | 2016-03-31 |  | 326d |  |  | ܁ࢹ |  |
| 387 | 1.1.1.4.2.1.1 | Assessment of progress being made & best practices |  | 65d | 2016-01-01 | 2016-03-31 |  | 326d |  | start no earlier than 2016-01-01 | ܁ࢹ | Late |
| 388 | 1.1.1.4.2.1.2 | Design of communication plan |  | 65d | 2016-01-01 | 2016-03-31 |  | 326d |  | start no earlier than 2016-01-01 | ܁ࢹ | Late |
| 389 | 1.1.1.4.2.1.3 | Development of communications materials |  | 65d | 2016-01-01 | 2016-03-31 |  | 326d |  | start no earlier than 2016-01-01 | ܁ࢹ | Late |
| 390 | 1.1.1.4.2.1.4 | Delivery of communication plan |  | 65d | 2016-01-01 | 2016-03-31 |  | 326d |  | start no earlier than 2016-01-01 | ܁ࢹ | Late |
| 391 | 1.1.2.5.2.1.5 | Progress communications delivered | milestone | 0d | 2016-03-31 | 2016-03-31 |  | 327d |  | start no earlier than 2016-03-31 | ܁ࢹ | Late |

| ID | WBS | Task | Type | Duration | Start | Finish | Total slack | Constraint | Entity | Tracking Status |
| --- | --- | --- | --- | --- | --- | --- | --- | --- | --- | --- |
| 392 | 1.1.2.5.2.2 | **MILESTONE: Convey organizational changes to the enterprise** |  | 65d | 2016-04-01 | 2016-06-30 | 261d |  | ܁ࢹ |  |
| 393 | 1.1.1.4.2.2.1 | Development of materials |  | 65d | 2016-04-01 | 2016-06-30 | 261d | start no earlier than 2016-04-01 | ܁ࢹ | Late |
| 394 | 1.1.1.4.2.2.2 | Delivery of communication to stakeholders |  | 65d | 2016-04-01 | 2016-06-30 | 261d | start no earlier than 2016-04-01 | ܁ࢹ | Late |
| 395 | 1.1.2.5.2.2.3 | Organizational changes communicated to enterprise | milestone | 0d | 2016-06-30 | 2016-06-30 | 262d | start no earlier than 2016-06-30 | ܁ࢹ | Late |
| 396 | 1.1.2.5.2.3 | **MILESTONE: Enterprise-wide training and development of job descriptions with explicit focus on three lines of defense** |  | 132d? | 2016-07-01 | 2017-01-02 | 129d |  | ܁ࢹ |  |
| 397 | 1.1.1.4.2.3.1 | Design of training curriculum & idenfification of key recepients as a result of post-implementation reviews |  | 66d? | 2016-07-01 | 2016-09-30 | 195d | start no earlier than 2016-07-01 | ܁ࢹ | Late |
| 398 | 1.1.1.4.2.3.2 | Development of training materials |  | 66d? | 2016-07-01 | 2016-09-30 | 195d | start no earlier than 2016-07-01 | ܁ࢹ | Late |
| 399 | 1.1.1.4.2.3.3 | Delivery of training to priority recepients |  | 67d? | 2016-09-30 | 2017-01-02 | 129d | start no earlier than 2016-09-30 | ܁ࢹ | Late |
| 400 | 1.1.1.4.2.3.4 | Identification of key functions requiring job description updates |  | 66d? | 2016-07-01 | 2016-09-30 | 195d | start no earlier than 2016-07-01 | ܁ࢹ | Late |
| 401 | 1.1.1.4.2.3.5 | Development of job descriptions with explicit focus on three lines of defense |  | 67d? | 2016-09-30 | 2017-01-02 | 129d | start no earlier than 2016-09-30 | ܁ࢹ | Late |
| 402 | 1.1.2.5.2.3.6 | Job descriptions complete and enterprise-wide training delivered | milestone | 0d | 2016-12-31 | 2016-12-31 | 130d | start no earlier than 2016-12-31 | ܁ࢹ | Late |
| 403 | 1.1.1.4.3 | **DELIVERABLE: Design recruitment and retention mechanisms** |  | 198d? | 2016-07-01 | 2017-04-04 | 63d |  | ܁ࢹ |  |
| 404 | 1.1.2.5.3.1 | **MILESTONE: Recruitment and retention mechanisms (e.g. Professional development and job rotation programs, job satisfaction assessments, and compensation structure)** |  | 66d | 2016-07-01 | 2016-09-30 | 195d |  | ܁ࢹ |  |
| 405 | 1.1.1.4.3.1.1 | Diagnostic of retention challenges |  | 66d | 2016-07-01 | 2016-09-30 | 195d | start no earlier than 2016-07-01 | ܁ࢹ | Late |
| 406 | 1.1.1.4.3.1.2 | Design of new possible retention mechanisms |  | 66d | 2016-07-01 | 2016-09-30 | 195d | start no earlier than 2016-07-01 | ܁ࢹ | Late |
| 407 | 1.1.2.5.3.1.3 | Design of new retention mechanisms complete | milestone | 0d | 2016-09-30 | 2016-09-30 | 196d | start no earlier than 2016-09-30 | ܁ࢹ | Late |
| 408 | 1.1.2.5.3.2 | **MILESTONE: Action plans for necessary remediation efforts** |  | 132d? | 2016-10-03 | 2017-04-04 | 63d |  | ܁ࢹ |  |
| 409 | 1.1.1.4.3.2.1 | Selection of key remediation initiatives with key stakeholders |  | 68d? | 2016-10-03 | 2017-01-04 | 127d | start no earlier than 2016-10-03 | ܁ࢹ | Late |
| 410 | 1.1.1.4.3.2.2 | Planning of initiatives between SHUSA and its subsidiaries |  | 68d? | 2016-10-03 | 2017-01-04 | 127d | start no earlier than 2016-10-03 | ܁ࢹ | Late |
| 411 | 1.1.1.4.3.2.3 | Rollout of initiatives at SHUSA |  | 68d? | 2016-10-03 | 2017-01-04 | 127d | start no earlier than 2016-10-03 | ܁ࢹ | Late |
| 412 | 1.1.1.4.3.2.4 | Rollout of initiatives at other subsidiaries |  | 67d | 2017-01-02 | 2017-04-04 | 63d | start no earlier than 2017-01-02 | ܁ࢹ | Late |
| 413 | 1.1.2.5.3.2.5 | Recruitment and retention intiatives introduced throughout enterprise | milestone | 0d | 2017-03-31 | 2017-03-31 | 66d | start no earlier than 2017-03-31 | ܁ࢹ | Late |
| 414 | 1.1.2.5.3.3 | **MILESTONE: Assess Risk Culture across the Organization** |  | 66d | 2016-07-01 | 2016-09-30 | 195d |  | ܁ࢹ |  |
| 415 | 1.1.1.4.4.1 | Diagnostic of current risk culture |  | 66d | 2016-07-01 | 2016-09-30 | 195d | start no earlier than 2016-07-01 | ܁ࢹ | Late |
| 416 | 1.1.1.4.4.2 | Definition of a multi-year plan to achieve a sound, well-respected risk culture |  | 66d | 2016-07-01 | 2016-09-30 | 195d | start no earlier than 2016-07-01 | ܁ࢹ | Late |
| 417 | 1.1.2.5.3.3.3 | Ongoing diagnostics of risk culture and development of multi-year plan to achieve premier risk culture in place | milestone | 0d | 2016-09-30 | 2016-09-30 | 196d | start no earlier than 2016-09-30 | ܁ࢹ | Late |

| ID | WBS | Task | Type | Duration | Start | Finish | Predecessors | Total slack | Constraint | Resources | Work | Entity | Tracking Status | Dependency |
| --- | --- | --- | --- | --- | --- | --- | --- | --- | --- | --- | --- | --- | --- | --- |
| 418 | 1.1.3 | **Risk Measurement** |  | 427d? | 2015-05-28 | 2017-01-13 |  | 67d |  |  | 10160h |  |  |  |
| 419 | 1.1.3.1 | **Risk Measurement Deliverables** |  | 383d | 2015-07-28 | 2017-01-13 |  | 121d |  |  |  |  |  |  |
| 420 | 1.1.3.1.1 | DELIVERABLE: Business Entity Material Risk Program Established for SHUSA | milestone | 0d | 2015-12-10 | 2015-12-10 | 511 | 407d | start no earlier than 2015-12-10 |  |  | ܁ࢹ | Late |  |
| 421 | 1.1.3.1.2 | DELIVERABLE: Business Entity Material Risk Program Established for SBNA | milestone | 0d | 2015-07-28 | 2015-07-28 | 644 | 504d | start no earlier than 2015-07-28 |  |  | ܁ࢺ | Late |  |
| 422 | 1.1.3.1.3 | DELIVERABLE: Business Entity Material Risk Program Established for SCUSA | milestone | 0d | 2015-07-28 | 2015-07-28 | 710 | 504d | start no earlier than 2015-07-28 |  |  | ܁ࢻ | Late |  |
| 423 | 1.1.3.1.4 | DELIVERABLE: Business Entity Material Risk Program Established for New York(SIS) | milestone | 0d | 2015-07-28 | 2015-07-28 | 796 | 504d | start no earlier than 2015-07-28 |  |  | ܁ࣅ | Late |  |
| 424 | 1.1.3.1.5 | DELIVERABLE: Business Entity Material Risk Program Established for Puerto Rico | milestone | 0d | 2015-07-28 | 2015-07-28 | 929 | 504d | start no earlier than 2015-07-28 |  |  | ܁ࢾ | Late |  |
| 425 | 1.1.3.1.6 | DELIVERABLE: Business Entity Material Risk Program Established for Miami | milestone | 0d | 2015-07-28 | 2015-07-28 | 996 | 504d | start no earlier than 2015-07-28 |  |  | ܁ࣄ | Late |  |
| 426 | 1.1.3.1.7 | DELIVERABLE: Assess Foundational Risk Processes and ensure complete foundational risk inventory is in place | milestone | 0d | 2016-01-29 | 2016-01-29 |  | 371d | start no earlier than 2016-01-29 |  |  |  | Late |  |
| 427 | 1.1.3.1.8 | DELIVERABLE: Review each Foundational Risk Process, identify deficient processes, and use gap analyses to determine how to optimize processes | milestone | 0d | 2016-03-14 | 2016-03-14 |  | 340d | start no earlier than 2016-03-14 |  |  |  | Late |  |
| 428 | 1.1.3.1.9 | DELIVERABLE: Develop remediation of Foundational Risk Process plan | milestone | 0d | 2016-03-28 | 2016-03-28 |  | 330d | start no earlier than 2016-03-28 |  |  |  | Late |  |
| 429 | 1.1.3.1.10 | DELIVERABLE: Updated risk taxonomy | milestone | 0d | 2015-11-30 | 2015-11-30 |  | 415d | start no earlier than 2015-11-30 |  |  |  | Late |  |
| 430 | 1.1.3.1.11 | DELIVERABLE: Updated material risk inventory template and guidance | milestone | 0d | 2015-12-31 | 2015-12-31 |  | 392d | start no earlier than 2015-12-31 |  |  |  | Late |  |
| 431 | 1.1.3.1.12 | DELIVERABLE: Automated interface for risk inventory template | milestone | 0d | 2016-03-31 | 2016-03-31 |  | 327d | start no earlier than 2016-03-31 |  |  |  | Late |  |
| 432 | 1.1.3.1.13 | DELIVERABLE: Training materials, policies and procedures based on updated process | milestone | 0d | 2016-05-31 | 2016-05-31 |  | 284d | start no earlier than 2016-05-31 |  |  |  | Late |  |
| 433 | 1.1.3.1.14 | DELIVERABLE: Database for foundational inputs and data sources for risk ID | milestone | 0d | 2016-11-15 | 2016-11-15 |  | 164d | start no earlier than 2016-11-15 |  |  |  | Late |  |
| 434 | 1.1.3.1.15 | DELIVERABLE: Training materials, policies and procedures for risk ID database and process | milestone | 0d | 2017-01-13 | 2017-01-13 |  | 121d | start no earlier than 2017-01-13 |  |  |  | Late |  |
| 435 | 1.1.3.2 | **Material Risk Program** |  | 140d? | 2015-05-28 | 2015-12-10 |  | 67d |  |  | 10160h |  |  |  |
| 436 | 1.1.3.2.1 | **DELIVERABLE: SHUSA - Business Entity Material Risk Program** |  | 72d? | 2015-09-01 | 2015-12-10 |  | 45d |  |  | 1152h | ܁ࢹ |  |  |
| 437 | 1.1.3.2.1.1 | **MILESTONE: Preparation for Aggregation to Create SHUSA Material Risk Inventory** |  | 10d? | 2015-09-01 | 2015-09-15 |  | 469d |  |  | 128h | ܁ࢹ |  |  |
| 438 | 1.1.3.2.1.1.1 | **TASK:Preparation for Aggregation to Create SHUSA Material Risk Inventory** |  | 10d? | 2015-09-01 | 2015-09-15 |  | 469d |  |  | 128h | ܁ࢹ |  |  |
| 439 | 1.1.3.2.1.1.1.1 | ERM Collects Risk Inventories from Entity Risk Managers |  | 5d? | 2015-09-01 | 2015-09-07 |  | 474d | start no earlier than 2015-09-01 | D. Mael | 40h | ܁ࢹ | Late |  |
| 440 | 1.1.3.2.1.1.1.2 | ERM Sorts risks and groups by Risk Type |  | 5d? | 2015-09-01 | 2015-09-07 |  | 474d | start no earlier than 2015-09-01 | D. Mael | 40h | ܁ࢹ | Late |  |
| 441 | 1.1.3.2.1.1.1.3 | ERM Creates pre-Workshop, pre-read Materials and instructions for SHUSA Risk Managers |  | 5d? | 2015-09-01 | 2015-09-07 |  | 474d | start no earlier than 2015-09-01 | D. Mael | 40h | ܁ࢹ | Late |  |
| 442 | 1.1.3.2.1.1.1.4 | ERM Distributes Workshop Materials to Responsible parties |  | 1d? | 2015-09-08 | 2015-09-08 |  | 473d | start no earlier than 2015-09-08 | D. Mael | 8h | ܁ࢹ | Late |  |
| 443 | 1.1.3.2.1.1.1.5 | Aggregation to Create SHUSA Material Risk Inventory Prepared | milestone | 0d | 2015-09-15 | 2015-09-15 |  | 469d | start no earlier than 2015-09-15 |  |  | ܁ࢹ | Late | ܁д |

Notes:
- 443: Technology

| ID | WBS | Task | Type | Duration | Start | Finish | Total slack | Constraint | Resources | Work | Entity | Tracking Status |
| --- | --- | --- | --- | --- | --- | --- | --- | --- | --- | --- | --- | --- |
| 444 | 1.1.3.2.1.2 | **MILESTONE: SHUSA Aggregation Workshops** |  | 12d? | 2015-09-09 | 2015-09-25 | 461d |  |  | 1024h | ܁ࢹ |  |
| 445 | 1.1.3.2.1.2.1 | **TASK: Credit Risk Material Risk Aggregation** |  | 12d? | 2015-09-09 | 2015-09-25 | 461d |  |  | 128h | ܁ࢹ |  |
| 446 | 1.1.3.2.1.2.1.1 | Credit Risk performs pre-Read and analysis |  | 4d? | 2015-09-09 | 2015-09-14 | 469d | start no earlier than 2015-09-09 | A. de Castro | 32h | ܁ࢹ | Late |
| 447 | 1.1.3.2.1.2.1.2 | Risk Managers Conduct Credit pre-Workshop Enrichment and Aggregation Activites |  | 4d? | 2015-09-09 | 2015-09-14 | 469d | start no earlier than 2015-09-09 | A. de Castro | 32h | ܁ࢹ | Late |
| 448 | 1.1.3.2.1.2.1.3 | ERM facilitates Credit Aggregation and Enrichment Workshop |  | 6d? | 2015-09-15 | 2015-09-22 | 463d | start no earlier than 2015-09-15 | K. Martelon | 48h | ܁ࢹ | Late |
| 449 | 1.1.3.2.1.2.1.4 | Present to Level II Subcommittees |  | 2d? | 2015-09-23 | 2015-09-24 | 461d | start no earlier than 2015-09-23 | A. de Castro | 16h | ܁ࢹ | Late |
| 450 | 1.1.3.2.1.2.1.5 | Credit Risk Material Risk Aggregation Prepared | milestone | 0d | 2015-09-25 | 2015-09-25 | 461d | start no earlier than 2015-09-25 |  |  | ܁ࢹ | Late |
| 451 | 1.1.3.2.1.2.2 | **TASK: Operational Risk Material Risk Aggregation** |  | 12d? | 2015-09-09 | 2015-09-25 | 461d |  |  | 128h | ܁ࢹ |  |
| 452 | 1.1.3.2.1.2.2.1 | Operational Risk performs pre-Read and analysis |  | 4d? | 2015-09-09 | 2015-09-14 | 469d | start no earlier than 2015-09-09 | S. Bhatti | 32h | ܁ࢹ | Late |
| 453 | 1.1.3.2.1.2.2.2 | Risk Managers Conduct Operational Risk pre-Workshop Enrichment and Aggregation Activites |  | 4d? | 2015-09-09 | 2015-09-14 | 469d | start no earlier than 2015-09-09 | S. Bhatti | 32h | ܁ࢹ | Late |
| 454 | 1.1.3.2.1.2.2.3 | ERM facilitates Operational Risk Aggregation and Enrichment Workshop |  | 6d? | 2015-09-15 | 2015-09-22 | 463d | start no earlier than 2015-09-15 | J. Christie | 48h | ܁ࢹ | Late |
| 455 | 1.1.3.2.1.2.2.4 | Present to Level II Subcommittees |  | 2d? | 2015-09-23 | 2015-09-24 | 461d | start no earlier than 2015-09-23 | S. Bhatti | 16h | ܁ࢹ | Late |
| 456 | 1.1.3.2.1.2.2.5 | Operational Risk Material Risk Aggregation Prepared | milestone | 0d | 2015-09-25 | 2015-09-25 | 461d | start no earlier than 2015-09-25 |  |  | ܁ࢹ | Late |
| 457 | 1.1.3.2.1.2.3 | **TASK: Compliance Material Risk Aggregation** |  | 12d? | 2015-09-09 | 2015-09-25 | 461d |  |  | 128h | ܁ࢹ |  |
| 458 | 1.1.3.2.1.2.3.1 | Compliance performs pre-Read and analysis |  | 4d? | 2015-09-09 | 2015-09-14 | 469d | start no earlier than 2015-09-09 | C. Hunley | 32h | ܁ࢹ | Late |
| 459 | 1.1.3.2.1.2.3.2 | Risk Managers Conduct Compliance pre-Workshop Enrichment and Aggregation Activites |  | 4d? | 2015-09-09 | 2015-09-14 | 469d | start no earlier than 2015-09-09 | C. Hunley | 32h | ܁ࢹ | Late |
| 460 | 1.1.3.2.1.2.3.3 | ERM facilitates Compliance Aggregation and Enrichment Workshop |  | 6d? | 2015-09-15 | 2015-09-22 | 463d | start no earlier than 2015-09-15 | J. Christie | 48h | ܁ࢹ | Late |
| 461 | 1.1.3.2.1.2.3.4 | Present to Level II Subcommittees |  | 2d? | 2015-09-23 | 2015-09-24 | 461d | start no earlier than 2015-09-23 | C. Hunley | 16h | ܁ࢹ | Late |
| 462 | 1.1.3.2.1.2.3.5 | Compliance Material Risk Aggregation Prepared | milestone | 0d | 2015-09-25 | 2015-09-25 | 461d | start no earlier than 2015-09-25 |  |  | ܁ࢹ | Late |
| 463 | 1.1.3.2.1.2.4 | **TASK: Model Material Risk Aggregation** |  | 12d? | 2015-09-09 | 2015-09-25 | 461d |  |  | 128h | ܁ࢹ |  |
| 464 | 1.1.3.2.1.2.4.1 | Model Risk performs pre-Read and analysis |  | 4d? | 2015-09-09 | 2015-09-14 | 469d | start no earlier than 2015-09-09 | R. Fahs | 32h | ܁ࢹ | Late |
| 465 | 1.1.3.2.1.2.4.2 | Risk Managers Conduct Model pre-Workshop Enrichment and Aggregation Activites |  | 4d? | 2015-09-09 | 2015-09-14 | 469d | start no earlier than 2015-09-09 | R. Fahs | 32h | ܁ࢹ | Late |
| 466 | 1.1.3.2.1.2.4.3 | ERM facilitates Model Aggregation and Enrichment Workshop |  | 6d? | 2015-09-15 | 2015-09-22 | 463d | start no earlier than 2015-09-15 | D. Mael | 48h | ܁ࢹ | Late |
| 467 | 1.1.3.2.1.2.4.4 | Present to Level II Subcommittees |  | 2d? | 2015-09-23 | 2015-09-24 | 461d | start no earlier than 2015-09-23 | R. Fahs | 16h | ܁ࢹ | Late |
| 468 | 1.1.3.2.1.2.4.5 | Model Material Risk Aggregation Prepared | milestone | 0d | 2015-09-25 | 2015-09-25 | 461d | start no earlier than 2015-09-25 |  |  | ܁ࢹ | Late |

| ID | WBS | Task | Type | Duration | Start | Finish | Total slack | Constraint | Resources | Work | Entity | Tracking Status |
| --- | --- | --- | --- | --- | --- | --- | --- | --- | --- | --- | --- | --- |
| 469 | 1.1.3.2.1.2.5 | **TASK: Market Material Risk Aggregation2** |  | 12d? | 2015-09-09 | 2015-09-25 | 461d |  |  | 128h | ܁ࢹ |  |
| 470 | 1.1.3.2.1.2.5.1 | Market Risk performs pre-Read and analysis |  | 4d? | 2015-09-09 | 2015-09-14 | 469d | start no earlier than 2015-09-09 | M. Lasso | 32h | ܁ࢹ | Late |
| 471 | 1.1.3.2.1.2.5.2 | Risk Managers Conduct Market pre-Workshop Enrichment and Aggregation Activites |  | 4d? | 2015-09-09 | 2015-09-14 | 469d | start no earlier than 2015-09-09 | M. Lasso | 32h | ܁ࢹ | Late |
| 472 | 1.1.3.2.1.2.5.3 | ERM facilitates Market Aggregation and Enrichment Workshop |  | 6d? | 2015-09-15 | 2015-09-22 | 463d | start no earlier than 2015-09-15 | R. Ballou | 48h | ܁ࢹ | Late |
| 473 | 1.1.3.2.1.2.5.4 | Present to Level II Subcommittees |  | 2d? | 2015-09-23 | 2015-09-24 | 461d | start no earlier than 2015-09-23 | M. Lasso | 16h | ܁ࢹ | Late |
| 474 | 1.1.3.2.1.2.5.5 | Market Material Risk Aggregation Prepared | milestone | 0d | 2015-09-25 | 2015-09-25 | 461d | start no earlier than 2015-09-25 |  |  | ܁ࢹ | Late |
| 475 | 1.1.3.2.1.2.6 | **TASK: Liquidity Material Risk Aggregation** |  | 12d? | 2015-09-09 | 2015-09-25 | 461d |  |  | 128h | ܁ࢹ |  |
| 476 | 1.1.3.2.1.2.6.1 | Liquidity Risk performs pre-Read and analysis |  | 4d? | 2015-09-09 | 2015-09-14 | 469d | start no earlier than 2015-09-09 | M. Lasso | 32h | ܁ࢹ | Late |
| 477 | 1.1.3.2.1.2.6.2 | Risk Managers Conduct Liquidity pre-Workshop Enrichment and Aggregation Activites |  | 4d? | 2015-09-09 | 2015-09-14 | 469d | start no earlier than 2015-09-09 | M. Lasso | 32h | ܁ࢹ | Late |
| 478 | 1.1.3.2.1.2.6.3 | ERM facilitates Liquidity Aggregation and Enrichment Workshop |  | 6d? | 2015-09-15 | 2015-09-22 | 463d | start no earlier than 2015-09-15 | R. Ballou | 48h | ܁ࢹ | Late |
| 479 | 1.1.3.2.1.2.6.4 | Present to Level II Subcommittees |  | 2d? | 2015-09-23 | 2015-09-24 | 461d | start no earlier than 2015-09-23 | M. Lasso | 16h | ܁ࢹ | Late |
| 480 | 1.1.3.2.1.2.6.5 | Liquidity Material Risk Aggregation Prepared | milestone | 0d | 2015-09-25 | 2015-09-25 | 461d | start no earlier than 2015-09-25 |  |  | ܁ࢹ | Late |
| 481 | 1.1.3.2.1.2.7 | **TASK: Strategic Material Risk Aggregation** |  | 12d? | 2015-09-09 | 2015-09-25 | 461d |  |  | 128h | ܁ࢹ |  |
| 482 | 1.1.3.2.1.2.7.1 | Strategic Risk performs pre-Read and analysis |  | 4d? | 2015-09-09 | 2015-09-14 | 469d | start no earlier than 2015-09-09 | TBD | 32h | ܁ࢹ | Late |
| 483 | 1.1.3.2.1.2.7.2 | Risk Managers Conduct Strategic pre-Workshop Enrichment and Aggregation Activites |  | 4d? | 2015-09-09 | 2015-09-14 | 469d | start no earlier than 2015-09-09 | TBD | 32h | ܁ࢹ | Late |
| 484 | 1.1.3.2.1.2.7.3 | ERM facilitates Strategic Aggregation and Enrichment Workshop |  | 6d? | 2015-09-15 | 2015-09-22 | 463d | start no earlier than 2015-09-15 | TBD | 48h | ܁ࢹ | Late |
| 485 | 1.1.3.2.1.2.7.4 | Present to Level II Subcommittees |  | 2d? | 2015-09-23 | 2015-09-24 | 461d | start no earlier than 2015-09-23 | TBD | 16h | ܁ࢹ | Late |
| 486 | 1.1.3.2.1.2.7.5 | Strategic Material Risk Aggregation Prepared | milestone | 0d | 2015-09-25 | 2015-09-25 | 461d | start no earlier than 2015-09-25 |  |  | ܁ࢹ | Late |
| 487 | 1.1.3.2.1.2.8 | **TASK: Reputational Material Risk Aggregation** |  | 12d? | 2015-09-09 | 2015-09-25 | 461d |  |  | 128h | ܁ࢹ |  |
| 488 | 1.1.3.2.1.2.8.1 | Reputational Risk performs pre-Read and analysis |  | 4d? | 2015-09-09 | 2015-09-14 | 469d | start no earlier than 2015-09-09 | TBD | 32h | ܁ࢹ | Late |
| 489 | 1.1.3.2.1.2.8.2 | Risk Managers Conduct Reputational pre-Workshop Enrichment and Aggregation Activites |  | 4d? | 2015-09-09 | 2015-09-14 | 469d | start no earlier than 2015-09-09 | TBD | 32h | ܁ࢹ | Late |
| 490 | 1.1.3.2.1.2.8.3 | ERM facilitates Reputational Aggregation and Enrichment Workshop |  | 6d? | 2015-09-15 | 2015-09-22 | 463d | start no earlier than 2015-09-15 | TBD | 48h | ܁ࢹ | Late |
| 491 | 1.1.3.2.1.2.8.4 | Present to Level II Subcommittees |  | 2d? | 2015-09-23 | 2015-09-24 | 461d | start no earlier than 2015-09-23 | TBD | 16h | ܁ࢹ | Late |
| 492 | 1.1.3.2.1.2.8.5 | Reputational Material Risk Aggregation Prepared | milestone | 0d | 2015-09-25 | 2015-09-25 | 461d | start no earlier than 2015-09-25 |  |  | ܁ࢹ | Late |

| ID | WBS | Task | Type | Duration | Start | Finish | Predecessors | Total slack | Free slack | Constraint | Resources | Work | Entity | Tracking Status | Dependency |
| --- | --- | --- | --- | --- | --- | --- | --- | --- | --- | --- | --- | --- | --- | --- | --- |
| 493 | 1.1.3.2.1.3 | **MILESTONE:SHUSA Top Down Aggregation** |  | 10d? | 2015-09-25 | 2015-10-09 |  | 451d |  |  |  |  | ܁ࢹ |  |  |
| 494 | 1.1.3.2.1.3.1 | **TASK:SHUSA Top Down Aggregation** |  | 10d? | 2015-09-25 | 2015-10-09 |  | 451d |  |  |  |  | ܁ࢹ |  |  |
| 495 | 1.1.3.2.1.3.1.1 | ERM consolidates risks into SHUSA Inventory |  | 1d? | 2015-09-25 | 2015-09-25 |  | 460d |  | start no earlier than 2015-09-25 |  |  | ܁ࢹ | Late |  |
| 496 | 1.1.3.2.1.3.1.2 | ERM distributes inventory to SHUSA Business and Risk executives |  | 2d? | 2015-09-28 | 2015-09-29 |  | 458d |  | start no earlier than 2015-09-28 |  |  | ܁ࢹ | Late |  |
| 497 | 1.1.3.2.1.3.1.3 | ERM incorporates final risks into SHUSA Inventory |  | 4d? | 2015-10-05 | 2015-10-08 |  | 451d |  | start no earlier than 2015-10-05 |  |  | ܁ࢹ | Late |  |
| 498 | 1.1.3.2.1.3.1.4 | SHUSA Top Down Aggregation Prepared | milestone | 0d | 2015-10-09 | 2015-10-09 |  | 451d |  | start no earlier than 2015-10-09 |  |  | ܁ࢹ | Late |  |
| 499 | 1.1.3.2.1.4 | **MILESTONE:Material Risk SHUSA Approval** |  | 17d? | 2015-10-09 | 2015-11-03 |  | 17d |  |  |  |  | ܁ࢹ |  |  |
| 500 | 1.1.3.2.1.4.1 | **TASK:Material Risk SHUSA Approval** |  | 17d? | 2015-10-09 | 2015-11-03 |  | 17d |  |  |  |  | ܁ࢹ |  |  |
| 501 | 1.1.3.2.1.4.1.1 | Present SHUSA Material Risks to BERC |  | 5d? | 2015-10-09 | 2015-10-15 |  | 446d |  | start no earlier than 2015-10-09 |  |  | ܁ࢹ | Late |  |
| 502 | 1.1.3.2.1.4.1.2 | Present SHUSA Material Risks to ERMC |  | 10d? | 2015-10-16 | 2015-10-29 |  | 436d |  | start no earlier than 2015-10-16 |  |  | ܁ࢹ | Late |  |
| 503 | 1.1.3.2.1.4.1.3 | Present SHUSA Material Risks to CCAR |  | 1d? | 2015-10-30 | 2015-10-30 |  | 435d | 1d | start no earlier than 2015-10-30 |  |  | ܁ࢹ | Late |  |
| 504 | 1.1.3.2.1.4.1.4 | Deliver SHUSA Material Risks to CCAR and Capital Plan | milestone, manual | 0d | 2015-11-03 | 2015-11-03 | 503 |  |  |  |  |  |  | Late | ܁д |
| 505 | 1.1.3.2.1.4.1.5 | Material Risk SHUSA Approval | milestone | 0d | 2015-10-30 | 2015-10-30 |  | 436d |  | start no earlier than 2015-10-30 |  |  | ܁ࢹ | Late |  |
| 506 | 1.1.3.2.1.5 | **MILESTONE:Risk ID and Assessment Policy** |  | 54d? | 2015-09-25 | 2015-12-10 |  | 407d |  |  |  |  | ܁ࢹ |  |  |
| 507 | 1.1.3.2.1.5.1 | **TASK:Risk ID and Assessment Policy** |  | 54d? | 2015-09-25 | 2015-12-10 |  | 407d |  |  |  |  | ܁ࢹ |  |  |
| 508 | 1.1.3.2.1.5.1.1 | Risk ID and Assessment group drafts policy |  | 25d? | 2015-09-25 | 2015-10-29 |  | 436d |  | start no earlier than 2015-09-25 |  |  | ܁ࢹ | Late |  |
| 509 | 1.1.3.2.1.5.1.2 | Risk ID and Assessment group presents draft to ERMC for approval |  | 5d? | 2015-10-30 | 2015-11-05 |  | 431d |  | start no earlier than 2015-10-30 |  |  | ܁ࢹ | Late |  |
| 510 | 1.1.3.2.1.5.1.3 | Risk ID and Assessment group presents to Risk Committee (BERC) |  | 28d? | 2015-11-02 | 2015-12-09 |  | 407d |  | start no earlier than 2015-11-02 |  |  | ܁ࢹ | Late |  |
| 511 | 1.1.3.2.1.5.1.4 | Risk ID and Assessment Policy | milestone | 0d | 2015-12-10 | 2015-12-10 |  | 407d | 0d | start no earlier than 2015-12-10 |  |  | ܁ࢹ | Late |  |
| 512 | 1.1.3.2.2 | **DELIVERABLE: SBNA - Business Entity Material Risk Program** |  | 68d? | 2015-05-28 | 2015-09-01 |  | 67d |  |  |  | 2144h | ܁ࢺ | Late |  |
| 513 | 1.1.3.2.2.1 | **MILESTONE:Retail Banking Material Risk Inventory** |  | 2d | 2015-06-29 | 2015-06-30 |  | 523d |  |  |  | 96h | ܁ࢺ | Late |  |
| 514 | 1.1.3.2.2.1.1 | **TASK: Small Business Banking Material Risk Inventory** |  | 2d | 2015-06-29 | 2015-06-30 |  | 523d |  |  |  | 16h | ܁ࢺ |  |  |
| 515 | 1.1.3.2.2.1.1.1 | Deliver Final Inventory to SBNA and SHUSA ERM |  | 2d | 2015-06-29 | 2015-06-30 |  | 523d |  | start no earlier than 2015-06-29 | M. Tedesco | 16h | ܁ࢺ | Late |  |
| 516 | 1.1.3.2.2.1.1.2 | Small Business Banking Material Risk Inventory Prepared | milestone | 0d | 2015-06-30 | 2015-06-30 |  | 524d |  | start no earlier than 2015-06-30 |  |  | ܁ࢺ | Late |  |

Notes:
- 506: Technology

| ID | WBS | Task | Type | Duration | Start | Finish | Total slack | Constraint | Resources | Work | Entity | Tracking Status |
| --- | --- | --- | --- | --- | --- | --- | --- | --- | --- | --- | --- | --- |
| 517 | 1.1.3.2.2.1.2 | **TASK: Cards Material Risk Inventory** |  | 2d | 2015-06-29 | 2015-06-30 | 523d |  |  | 16h | ܁ࢺ |  |
| 518 | 1.1.3.2.2.1.2.1 | Deliver Final Inventory to SBNA and SHUSA ERM |  | 2d | 2015-06-29 | 2015-06-30 | 523d | start no earlier than 2015-06-29 | M. Tedesco | 16h | ܁ࢺ | Late |
| 519 | 1.1.3.2.2.1.2.2 | Cards Material Risk Inventory Prepared | milestone | 0d | 2015-06-30 | 2015-06-30 | 524d | start no earlier than 2015-06-30 |  |  | ܁ࢺ | Late |
| 520 | 1.1.3.2.2.1.3 | **TASK: Mortgages Material Risk Inventory** |  | 2d | 2015-06-29 | 2015-06-30 | 523d |  |  | 16h | ܁ࢺ |  |
| 521 | 1.1.3.2.2.1.3.1 | Deliver Final Inventory to SBNA and SHUSA ERM |  | 2d | 2015-06-29 | 2015-06-30 | 523d | start no earlier than 2015-06-29 | M. Tedesco | 16h | ܁ࢺ | Late |
| 522 | 1.1.3.2.2.1.3.2 | Mortgages Material Risk Inventory Prepared | milestone | 0d | 2015-06-30 | 2015-06-30 | 524d | start no earlier than 2015-06-30 |  |  | ܁ࢺ | Late |
| 523 | 1.1.3.2.2.1.4 | **TASK: Purchased Portfolios (RV/Marine) Material Risk Inventory** |  | 2d | 2015-06-29 | 2015-06-30 | 523d |  |  | 16h | ܁ࢺ |  |
| 524 | 1.1.3.2.2.1.4.1 | Deliver Final Inventory to SBNA and SHUSA ERM |  | 2d | 2015-06-29 | 2015-06-30 | 523d | start no earlier than 2015-06-29 | M. Tedesco | 16h | ܁ࢺ | Late |
| 525 | 1.1.3.2.2.1.4.2 | Purchased Portfolios (RV/Marine) Material Risk Inventory Prepared | milestone | 0d | 2015-06-30 | 2015-06-30 | 524d | start no earlier than 2015-06-30 |  |  | ܁ࢺ | Late |
| 526 | 1.1.3.2.2.1.5 | **TASK: Individual Material Risk Inventory** |  | 2d | 2015-06-29 | 2015-06-30 | 523d |  |  | 16h | ܁ࢺ |  |
| 527 | 1.1.3.2.2.1.5.1 | Deliver Final Inventory to SBNA and SHUSA ERM |  | 2d | 2015-06-29 | 2015-06-30 | 523d | start no earlier than 2015-06-29 | M. Tedesco | 16h | ܁ࢺ | Late |
| 528 | 1.1.3.2.2.1.5.2 | Individual Material Risk Inventory Prepared | milestone | 0d | 2015-06-30 | 2015-06-30 | 524d | start no earlier than 2015-06-30 |  |  | ܁ࢺ | Late |
| 529 | 1.1.3.2.2.1.6 | **TASK: Wealth Management Material Risk Inventory** |  | 2d | 2015-06-29 | 2015-06-30 | 523d |  |  | 16h | ܁ࢺ |  |
| 530 | 1.1.3.2.2.1.6.1 | Deliver Final Inventory to SBNA and SHUSA ERM |  | 2d | 2015-06-29 | 2015-06-30 | 523d | start no earlier than 2015-06-29 | M. Tedesco | 16h | ܁ࢺ | Late |
| 531 | 1.1.3.2.2.1.6.2 | Wealth Management Material Risk Inventory Prepared | milestone | 0d | 2015-06-30 | 2015-06-30 | 524d | start no earlier than 2015-06-30 |  |  | ܁ࢺ | Late |
| 532 | 1.1.3.2.2.2 | **MILESTONE:Retail: Create Retail Banking Material Risk Inventory** |  | 24d | 2015-05-28 | 2015-06-30 | 523d |  |  | 208h | ܁ࢺ |  |
| 533 | 1.1.3.2.2.2.1 | **TASK: Retail: Create Retail Banking Material Risk Inventory** |  | 24d | 2015-05-28 | 2015-06-30 | 523d |  |  | 208h | ܁ࢺ |  |
| 534 | 1.1.3.2.2.2.1.1 | Create Segment Material Risk Inventory (Aggregation) |  | 24d | 2015-05-28 | 2015-06-30 | 523d | start no earlier than 2015-05-28 | M. Tedesco | 192h | ܁ࢺ | Late |
| 535 | 1.1.3.2.2.2.1.2 | Segment head presents inventory to ERMC |  | 2d | 2015-06-29 | 2015-06-30 | 523d | start no earlier than 2015-06-29 | M. Tedesco | 16h | ܁ࢺ | Late |
| 536 | 1.1.3.2.2.2.1.3 | Retail: Create Retail Banking Material Risk Inventory Prepared | milestone | 0d | 2015-06-30 | 2015-06-30 | 524d | start no earlier than 2015-06-30 |  |  | ܁ࢺ | Late |
| 537 | 1.1.3.2.2.3 | **MILESTONE:Commercial Banking Material Risk Inventory** |  | 2d | 2015-06-29 | 2015-06-30 | 523d |  |  | 48h | ܁ࢺ |  |
| 538 | 1.1.3.2.2.3.1 | **TASK: Commercial and Industrial Material Risk Inventory** |  | 2d | 2015-06-29 | 2015-06-30 | 523d |  |  | 16h | ܁ࢺ |  |
| 539 | 1.1.3.2.2.3.1.1 | Deliver Final Inventory to SBNA and SHUSA ERM |  | 2d | 2015-06-29 | 2015-06-30 | 523d | start no earlier than 2015-06-29 | C. Letters | 16h | ܁ࢺ | Late |
| 540 | 1.1.3.2.2.3.1.2 | Commercial and Industrial Material Risk Inventory Prepared | milestone | 0d | 2015-06-30 | 2015-06-30 | 524d | start no earlier than 2015-06-30 |  |  | ܁ࢺ | Late |

| ID | WBS | Task | Type | Duration | Start | Finish | Total slack | Constraint | Resources | Work | Entity | Tracking Status |
| --- | --- | --- | --- | --- | --- | --- | --- | --- | --- | --- | --- | --- |
| 541 | 1.1.3.2.2.3.2 | **TASK: Specialties Material Risk Inventory** |  | 2d | 2015-06-29 | 2015-06-30 | 523d |  |  | 16h | ܁ࢺ |  |
| 542 | 1.1.3.2.2.3.2.1 | Deliver Final Inventory to SBNA and SHUSA ERM |  | 2d | 2015-06-29 | 2015-06-30 | 523d | start no earlier than 2015-06-29 | C. Letters | 16h | ܁ࢺ | Late |
| 543 | 1.1.3.2.2.3.2.2 | Specialties Material Risk Inventory Prepared | milestone | 0d | 2015-06-30 | 2015-06-30 | 524d | start no earlier than 2015-06-30 |  |  | ܁ࢺ | Late |
| 544 | 1.1.3.2.2.3.3 | **TASK: Government Banking Material Risk Inventory** |  | 2d | 2015-06-29 | 2015-06-30 | 523d |  |  | 16h | ܁ࢺ |  |
| 545 | 1.1.3.2.2.3.3.1 | Deliver Final Inventory to SBNA and SHUSA ERM |  | 2d | 2015-06-29 | 2015-06-30 | 523d | start no earlier than 2015-06-29 | C. Letters | 16h | ܁ࢺ | Late |
| 546 | 1.1.3.2.2.3.3.2 | Government Banking Material Risk Inventory Prepared | milestone | 0d | 2015-06-30 | 2015-06-30 | 524d | start no earlier than 2015-06-30 |  |  | ܁ࢺ | Late |
| 547 | 1.1.3.2.2.4 | **MILESTONE: Commercial: Create Commercial Banking Material Risk Inventory** |  | 24d | 2015-05-28 | 2015-06-30 | 523d |  |  | 208h | ܁ࢺ |  |
| 548 | 1.1.3.2.2.4.1 | **TASK: Commercial: Create Commercial Banking Material Risk Inventory** |  | 24d | 2015-05-28 | 2015-06-30 | 523d |  |  | 208h | ܁ࢺ |  |
| 549 | 1.1.3.2.2.4.1.1 | Create Segment Material Risk Inventory (Aggregation) |  | 24d | 2015-05-28 | 2015-06-30 | 523d | start no earlier than 2015-05-28 | C. Letters | 192h | ܁ࢺ | Late |
| 550 | 1.1.3.2.2.4.1.2 | Segment head presents inventory to ERMC |  | 2d | 2015-06-29 | 2015-06-30 | 523d | start no earlier than 2015-06-29 | C. Letters | 16h | ܁ࢺ | Late |
| 551 | 1.1.3.2.2.4.1.3 | Create Commercial Banking Material Risk Inventory Prepared | milestone | 0d | 2015-06-30 | 2015-06-30 | 524d | start no earlier than 2015-06-30 |  |  | ܁ࢺ | Late |
| 552 | 1.1.3.2.2.5 | **MILESTONE:Global Banking Material Risk Inventory** |  | 2d | 2015-06-29 | 2015-06-30 | 523d |  |  | 32h | ܁ࢺ |  |
| 553 | 1.1.3.2.2.5.1 | **TASK: MRG Material Risk Inventory** |  | 2d | 2015-06-29 | 2015-06-30 | 523d |  |  | 16h | ܁ࢺ |  |
| 554 | 1.1.3.2.2.5.1.1 | Deliver Final Inventory to SBNA and SHUSA ERM |  | 2d | 2015-06-29 | 2015-06-30 | 523d | start no earlier than 2015-06-29 | F. Papa | 16h | ܁ࢺ | Late |
| 555 | 1.1.3.2.2.5.1.2 | MRG Material Risk Inventory Prepared | milestone | 0d | 2015-06-30 | 2015-06-30 | 524d | start no earlier than 2015-06-30 |  |  | ܁ࢺ | Late |
| 556 | 1.1.3.2.2.5.2 | **TASK: Large Corporates Material Risk Inventory** |  | 2d | 2015-06-29 | 2015-06-30 | 523d |  |  | 16h | ܁ࢺ |  |
| 557 | 1.1.3.2.2.5.2.1 | Deliver Final Inventory to SBNA and SHUSA ERM |  | 2d | 2015-06-29 | 2015-06-30 | 523d | start no earlier than 2015-06-29 | F. Papa | 16h | ܁ࢺ | Late |
| 558 | 1.1.3.2.2.5.2.2 | Large Corporates Material Risk Inventory Prepared | milestone | 0d | 2015-06-30 | 2015-06-30 | 524d | start no earlier than 2015-06-30 |  |  | ܁ࢺ | Late |
| 559 | 1.1.3.2.2.6 | **MILESTONE:Global: Create Global Banking Material Risk Inventory** |  | 24d | 2015-05-28 | 2015-06-30 | 523d |  |  | 208h | ܁ࢺ |  |
| 560 | 1.1.3.2.2.6.1 | **TASK: Global: Create Global Banking Material Risk Inventory** |  | 24d | 2015-05-28 | 2015-06-30 | 523d |  |  | 208h | ܁ࢺ |  |
| 561 | 1.1.3.2.2.6.1.1 | Create Segment Material Risk Inventory (Aggregation) |  | 24d | 2015-05-28 | 2015-06-30 | 523d | start no earlier than 2015-05-28 | F. Papa | 192h | ܁ࢺ | Late |
| 562 | 1.1.3.2.2.6.1.2 | Segment head presents inventory to ERMC |  | 2d | 2015-06-29 | 2015-06-30 | 523d | start no earlier than 2015-06-29 | F. Papa | 16h | ܁ࢺ | Late |
| 563 | 1.1.3.2.2.6.1.3 | Global: Create Global Banking Material Risk Inventory Prepared | milestone | 0d | 2015-06-30 | 2015-06-30 | 524d | start no earlier than 2015-06-30 |  |  | ܁ࢺ | Late |
| 564 | 1.1.3.2.2.7 | **MILESTONE:Automotive Finance Material Risk Inventory** |  | 2d | 2015-06-29 | 2015-06-30 | 523d |  |  | 48h | ܁ࢺ |  |
| 565 | 1.1.3.2.2.7.1 | **TASK: CEVF Material Risk Inventory** |  | 2d | 2015-06-29 | 2015-06-30 | 523d |  |  | 16h | ܁ࢺ |  |
| 566 | 1.1.3.2.2.7.1.1 | Deliver Final Inventory to SBNA and SHUSA ERM |  | 2d | 2015-06-29 | 2015-06-30 | 523d | start no earlier than 2015-06-29 | J. Murphy | 16h | ܁ࢺ | Late |
| 567 | 1.1.3.2.2.7.1.2 | CEVF Material Risk Inventory Prepared | milestone | 0d | 2015-06-30 | 2015-06-30 | 524d | start no earlier than 2015-06-30 |  |  | ܁ࢺ | Late |

| ID | WBS | Task | Type | Duration | Start | Finish | Total slack | Constraint | Resources | Work | Entity | Tracking Status |
| --- | --- | --- | --- | --- | --- | --- | --- | --- | --- | --- | --- | --- |
| 568 | 1.1.3.2.2.7.2 | **TASK: Leasing Material Risk Inventory** |  | 2d | 2015-06-29 | 2015-06-30 | 523d |  |  | 16h | ܁ࢺ |  |
| 569 | 1.1.3.2.2.7.2.1 | Deliver Final Inventory to SBNA and SHUSA ERM |  | 2d | 2015-06-29 | 2015-06-30 | 523d | start no earlier than 2015-06-29 | J. Murphy | 16h | ܁ࢺ | Late |
| 570 | 1.1.3.2.2.7.2.2 | Leasing Material Risk Inventory Prepared | milestone | 0d | 2015-06-30 | 2015-06-30 | 524d | start no earlier than 2015-06-30 |  |  | ܁ࢺ | Late |
| 571 | 1.1.3.2.2.7.3 | **TASK: Dealer Floor Plan Material Risk Inventory** |  | 2d | 2015-06-29 | 2015-06-30 | 523d |  |  | 16h | ܁ࢺ |  |
| 572 | 1.1.3.2.2.7.3.1 | Deliver Final Inventory to SBNA and SHUSA ERM |  | 2d | 2015-06-29 | 2015-06-30 | 523d | start no earlier than 2015-06-29 | J. Murphy | 16h | ܁ࢺ | Late |
| 573 | 1.1.3.2.2.7.3.2 | Dealer Floor Plan Material Risk Inventory Prepared | milestone | 0d | 2015-06-30 | 2015-06-30 | 524d | start no earlier than 2015-06-30 |  |  | ܁ࢺ | Late |
| 574 | 1.1.3.2.2.8 | **MILESTONE: Automotive: Create Automotive Finance Material Risk Inventory** |  | 24d | 2015-05-28 | 2015-06-30 | 523d |  |  | 208h | ܁ࢺ |  |
| 575 | 1.1.3.2.2.8.1 | **TASK: Automotive: Create Automotive Finance Material Risk Inventory** |  | 24d | 2015-05-28 | 2015-06-30 | 523d |  |  | 208h | ܁ࢺ |  |
| 576 | 1.1.3.2.2.8.1.1 | Create Segment Material Risk Inventory (Aggregation) |  | 24d | 2015-05-28 | 2015-06-30 | 523d | start no earlier than 2015-05-28 | J. Murphy | 192h | ܁ࢺ | Late |
| 577 | 1.1.3.2.2.8.1.2 | Segment head presents inventory to ERMC |  | 2d | 2015-06-29 | 2015-06-30 | 523d | start no earlier than 2015-06-29 | J. Murphy | 16h | ܁ࢺ | Late |
| 578 | 1.1.3.2.2.8.1.3 | Automotive Finance Material Risk Inventory Prepared | milestone | 0d | 2015-06-30 | 2015-06-30 | 524d | start no earlier than 2015-06-30 |  |  | ܁ࢺ | Late |
| 579 | 1.1.3.2.2.9 | **MILESTONE: Commerical Real Estate Material Risk Inventory** |  | 3d | 2015-06-26 | 2015-06-30 | 523d |  |  | 32h | ܁ࢺ |  |
| 580 | 1.1.3.2.2.9.1 | **TASK: Commerical Real Estate Material Risk Inventory** |  | 3d | 2015-06-26 | 2015-06-30 | 523d |  |  | 32h | ܁ࢺ |  |
| 581 | 1.1.3.2.2.9.1.1 | Deliver Final Inventory to SBNA and SHUSA ERM |  | 2d | 2015-06-26 | 2015-06-29 | 524d | start no earlier than 2015-06-26 | M. Lee | 16h | ܁ࢺ | Late |
| 582 | 1.1.3.2.2.9.1.2 | Present inventory to ERMC |  | 2d | 2015-06-29 | 2015-06-30 | 523d | start no earlier than 2015-06-29 | M. Lee | 16h | ܁ࢺ | Late |
| 583 | 1.1.3.2.2.9.1.3 | Commerical Real Estate Material Risk Inventory Prepared | milestone | 0d | 2015-06-30 | 2015-06-30 | 524d | start no earlier than 2015-06-30 |  |  | ܁ࢺ | Late |
| 584 | 1.1.3.2.2.10 | **MILESTONE:Financial Management Material Risk Inventory** |  | 3d | 2015-06-26 | 2015-06-30 | 523d |  |  | 32h | ܁ࢺ |  |
| 585 | 1.1.3.2.2.10.1 | **TASK: Financial Management Material Risk Inventory** |  | 3d | 2015-06-26 | 2015-06-30 | 523d |  |  | 32h | ܁ࢺ |  |
| 586 | 1.1.3.2.2.10.1.1 | Deliver Final Inventory to SBNA and SHUSA ERM |  | 2d | 2015-06-26 | 2015-06-29 | 524d | start no earlier than 2015-06-26 | W. Brundige | 16h | ܁ࢺ | Late |
| 587 | 1.1.3.2.2.10.1.2 | Present inventory to ERMC |  | 2d | 2015-06-29 | 2015-06-30 | 523d | start no earlier than 2015-06-29 | W. Brundige | 16h | ܁ࢺ | Late |
| 588 | 1.1.3.2.2.10.1.3 | Financial Management Material Risk Inventory Prepared | milestone | 0d | 2015-06-30 | 2015-06-30 | 524d | start no earlier than 2015-06-30 |  |  | ܁ࢺ | Late |
| 589 | 1.1.3.2.2.11 | **MILESTONE:Corporate Center Material Risk Inventory** |  | 3d | 2015-06-26 | 2015-06-30 | 523d |  |  | 32h | ܁ࢺ |  |
| 590 | 1.1.3.2.2.11.1 | **TASK: Corporate Center Material Risk Inventory** |  | 3d | 2015-06-26 | 2015-06-30 | 523d |  |  | 32h | ܁ࢺ |  |
| 591 | 1.1.3.2.2.11.1.1 | Deliver Final Inventory to SBNA and SHUSA ERM |  | 2d | 2015-06-26 | 2015-06-29 | 524d | start no earlier than 2015-06-26 | TBD | 16h | ܁ࢺ | Late |
| 592 | 1.1.3.2.2.11.1.2 | Present inventory to ERMC |  | 2d | 2015-06-29 | 2015-06-30 | 523d | start no earlier than 2015-06-29 | TBD | 16h | ܁ࢺ | Late |
| 593 | 1.1.3.2.2.11.1.3 | Corporate Center Material Risk Inventory Prepared | milestone | 0d | 2015-06-30 | 2015-06-30 | 524d | start no earlier than 2015-06-30 |  |  | ܁ࢺ | Late |

| ID | WBS | Task | Type | Duration | Start | Finish | Predecessors | Total slack | Free slack | Constraint | Resources | Work | Entity | Tracking Status |
| --- | --- | --- | --- | --- | --- | --- | --- | --- | --- | --- | --- | --- | --- | --- |
| 594 | 1.1.3.2.2.12 | **MILESTONE: Legal Material Risk Inventory** |  | 3d | 2015-06-26 | 2015-06-30 |  | 523d |  |  |  | 32h | ܁ࢺ |  |
| 595 | 1.1.3.2.2.12.1 | **TASK: Legal Material Risk Inventory** |  | 3d | 2015-06-26 | 2015-06-30 |  | 523d |  |  |  | 32h | ܁ࢺ |  |
| 596 | 1.1.3.2.2.12.1.1 | Deliver Final Inventory to SBNA and SHUSA ERM |  | 2d | 2015-06-26 | 2015-06-29 |  | 524d |  | start no earlier than 2015-06-26 | L. O'Hara | 16h | ܁ࢺ | Late |
| 597 | 1.1.3.2.2.12.1.2 | Present inventory to ERMC |  | 2d | 2015-06-29 | 2015-06-30 |  | 523d |  | start no earlier than 2015-06-29 | L. O'Hara | 16h | ܁ࢺ | Late |
| 598 | 1.1.3.2.2.12.1.3 | Legal Material Risk Inventory Prepared | milestone | 0d | 2015-06-30 | 2015-06-30 |  | 524d |  | start no earlier than 2015-06-30 |  |  | ܁ࢺ | Late |
| 599 | 1.1.3.2.2.13 | **MILESTONE:HR Material Risk Inventory** |  | 3d | 2015-06-26 | 2015-06-30 |  | 523d |  |  |  | 32h | ܁ࢺ |  |
| 600 | 1.1.3.2.2.13.1 | **TASK: HR Material Risk Inventory** |  | 3d | 2015-06-26 | 2015-06-30 |  | 523d |  |  |  | 32h | ܁ࢺ |  |
| 601 | 1.1.3.2.2.13.1.1 | Deliver Final Inventory to SBNA and SHUSA ERM |  | 2d | 2015-06-26 | 2015-06-29 |  | 524d |  | start no earlier than 2015-06-26 | L. VanRoekel | 16h | ܁ࢺ | Late |
| 602 | 1.1.3.2.2.13.1.2 | Present inventory to ERMC |  | 2d | 2015-06-29 | 2015-06-30 |  | 523d |  | start no earlier than 2015-06-29 | L. VanRoekel | 16h | ܁ࢺ | Late |
| 603 | 1.1.3.2.2.13.1.3 | HR Material Risk Inventory Prepared | milestone | 0d | 2015-06-30 | 2015-06-30 |  | 524d |  | start no earlier than 2015-06-30 |  |  | ܁ࢺ | Late |
| 604 | 1.1.3.2.2.14 | **MILESTONE:Tech and Operations Material Risk Inventory** |  | 3d | 2015-06-26 | 2015-06-30 |  | 523d |  |  |  | 32h | ܁ࢺ |  |
| 605 | 1.1.3.2.2.14.1 | **TASK: Tech and Operations Material Risk Inventory** |  | 3d | 2015-06-26 | 2015-06-30 |  | 523d |  |  |  | 32h | ܁ࢺ |  |
| 606 | 1.1.3.2.2.14.1.1 | Deliver Final Inventory to SBNA and SHUSA ERM |  | 2d | 2015-06-26 | 2015-06-29 |  | 524d |  | start no earlier than 2015-06-26 | D. Chaos | 16h | ܁ࢺ | Late |
| 607 | 1.1.3.2.2.14.1.2 | Present inventory to ERMC |  | 2d | 2015-06-29 | 2015-06-30 |  | 523d |  | start no earlier than 2015-06-29 | D. Chaos | 16h | ܁ࢺ | Late |
| 608 | 1.1.3.2.2.14.1.3 | Tech and Operations Material Risk Inventory Prepared | milestone | 0d | 2015-06-30 | 2015-06-30 |  | 524d |  | start no earlier than 2015-06-30 |  |  | ܁ࢺ | Late |
| 609 | 1.1.3.2.2.15 | **MILESTONE:Finance Material Risk Inventory** |  | 3d | 2015-06-26 | 2015-06-30 |  | 523d |  |  |  | 32h | ܁ࢺ |  |
| 610 | 1.1.3.2.2.15.1 | **TASK: Finance Material Risk Inventory** |  | 3d | 2015-06-26 | 2015-06-30 |  | 523d |  |  |  | 32h | ܁ࢺ |  |
| 611 | 1.1.3.2.2.15.1.1 | Deliver Final Inventory to SBNA and SHUSA ERM |  | 2d | 2015-06-26 | 2015-06-29 |  | 524d |  | start no earlier than 2015-06-26 | M. Ballenger | 16h | ܁ࢺ | Late |
| 612 | 1.1.3.2.2.15.1.2 | Present inventory to ERMC |  | 2d | 2015-06-29 | 2015-06-30 |  | 523d |  | start no earlier than 2015-06-29 | M. Ballenger | 16h | ܁ࢺ | Late |
| 613 | 1.1.3.2.2.15.1.3 | Finance Material Risk Inventory Prepared | milestone | 0d | 2015-06-30 | 2015-06-30 |  | 524d |  | start no earlier than 2015-06-30 |  |  | ܁ࢺ | Late |
| 614 | 1.1.3.2.2.16 | **MILESTONE:SBNA Aggregation Workshops** |  | 44d? | 2015-07-01 | 2015-09-01 |  | 43d |  |  |  | 864h | ܁ࢺ |  |
| 615 | 1.1.3.2.2.16.1 | **TASK: Credit Risk Aggregation** |  | 19d? | 2015-07-01 | 2015-07-28 |  | 504d |  |  |  | 144h | ܁ࢺ |  |
| 616 | 1.1.3.2.2.16.1.1 | ERM disseminates Workshop Pre-Read Materials to Risk Managers |  | 7d? | 2015-07-01 | 2015-07-09 |  | 506d | 1d | start no earlier than 2015-07-01 | R. Alhadeff | 56h | ܁ࢺ | Late |
| 617 | 1.1.3.2.2.16.1.2 | ERM facilitates Aggregation and Enrichment Activities |  | 10d? | 2015-07-13 | 2015-07-24 | 616 | 505d |  | start no earlier than 2015-07-13 | R. Alhadeff | 80h | ܁ࢺ | Late |
| 618 | 1.1.3.2.2.16.1.3 | Risk Manager presents inventory to level II subcommittee |  | 1d? | 2015-07-27 | 2015-07-27 |  | 504d |  | start no earlier than 2015-07-27 | D. Spector | 8h | ܁ࢺ | Late |
| 619 | 1.1.3.2.2.16.1.4 | Credit Risk Aggregation Prepared | milestone | 0d | 2015-07-28 | 2015-07-28 |  | 504d |  | start no earlier than 2015-07-28 |  |  | ܁ࢺ | Late |

| ID | WBS | Task | Type | Duration | Start | Finish | Predecessors | Total slack | Free slack | Constraint | Resources | Work | Entity | Tracking Status | Dependency |
| --- | --- | --- | --- | --- | --- | --- | --- | --- | --- | --- | --- | --- | --- | --- | --- |
| 620 | 1.1.3.2.2.16.2 | **TASK: Operational Risk Material Risk Aggregation** |  | 19d? | 2015-07-01 | 2015-07-28 |  | 504d |  |  |  | 144h | ܁ࢺ |  |  |
| 621 | 1.1.3.2.2.16.2.1 | ERM disseminates Workshop Pre-Read Materials to Risk Managers |  | 7d? | 2015-07-01 | 2015-07-09 |  | 506d | 1d | start no earlier than 2015-07-01 | R. Alhadeff | 56h | ܁ࢺ | Late |  |
| 622 | 1.1.3.2.2.16.2.2 | ERM facilitates Aggregation and Enrichment Activities |  | 10d? | 2015-07-13 | 2015-07-24 | 621 | 505d |  | start no earlier than 2015-07-13 | R. Alhadeff | 80h | ܁ࢺ | Late |  |
| 623 | 1.1.3.2.2.16.2.3 | Risk Manager presents inventory to level II subcommittee |  | 1d? | 2015-07-27 | 2015-07-27 |  | 504d |  | start no earlier than 2015-07-27 | M. Lima | 8h | ܁ࢺ | Late |  |
| 624 | 1.1.3.2.2.16.2.4 | Operational Risk Material Risk Aggregation Prepared | milestone | 0d | 2015-07-28 | 2015-07-28 |  | 504d |  | start no earlier than 2015-07-28 |  |  | ܁ࢺ | Late |  |
| 625 | 1.1.3.2.2.16.3 | **TASK: Compliance Material Risk Aggregation** |  | 19d? | 2015-07-01 | 2015-07-28 |  | 504d |  |  |  | 144h | ܁ࢺ |  |  |
| 626 | 1.1.3.2.2.16.3.1 | ERM disseminates Workshop Pre-Read Materials to Risk Managers |  | 7d? | 2015-07-01 | 2015-07-09 |  | 506d | 1d | start no earlier than 2015-07-01 | R. Alhadeff | 56h | ܁ࢺ | Late |  |
| 627 | 1.1.3.2.2.16.3.2 | ERM facilitates Aggregation and Enrichment Activities |  | 10d? | 2015-07-13 | 2015-07-24 | 626 | 505d |  | start no earlier than 2015-07-13 | R. Alhadeff | 80h | ܁ࢺ | Late |  |
| 628 | 1.1.3.2.2.16.3.3 | Risk Manager presents inventory to level II subcommittee |  | 1d? | 2015-07-27 | 2015-07-27 |  | 504d |  | start no earlier than 2015-07-27 | C. Roberts | 8h | ܁ࢺ | Late |  |
| 629 | 1.1.3.2.2.16.3.4 | Compliance Material Risk Aggregation Prepared | milestone | 0d | 2015-07-28 | 2015-07-28 |  | 504d |  | start no earlier than 2015-07-28 |  |  | ܁ࢺ | Late |  |
| 630 | 1.1.3.2.2.16.4 | **TASK: Model Material Risk Aggregation** |  | 19d? | 2015-07-01 | 2015-07-28 |  | 504d |  |  |  | 144h | ܁ࢺ |  |  |
| 631 | 1.1.3.2.2.16.4.1 | ERM disseminates Workshop Pre-Read Materials to Risk Managers |  | 7d? | 2015-07-01 | 2015-07-09 |  | 506d | 1d | start no earlier than 2015-07-01 | R. Alhadeff | 56h | ܁ࢺ | Late |  |
| 632 | 1.1.3.2.2.16.4.2 | ERM facilitates Aggregation and Enrichment Activities |  | 10d? | 2015-07-13 | 2015-07-24 | 631 | 505d |  | start no earlier than 2015-07-13 | R. Alhadeff | 80h | ܁ࢺ | Late |  |
| 633 | 1.1.3.2.2.16.4.3 | Risk Manager presents inventory to level II subcommittee |  | 1d? | 2015-07-27 | 2015-07-27 |  | 504d |  | start no earlier than 2015-07-27 | L. Fairweather | 8h | ܁ࢺ | Late |  |
| 634 | 1.1.3.2.2.16.4.4 | Model Material Risk Aggregation Prepared | milestone | 0d | 2015-07-28 | 2015-07-28 |  | 504d |  | start no earlier than 2015-07-28 |  |  | ܁ࢺ | Late |  |
| 635 | 1.1.3.2.2.16.5 | **TASK: Liquidity/Market Material Risk Aggregation** |  | 19d? | 2015-07-01 | 2015-07-28 |  | 504d |  |  |  | 144h | ܁ࢺ |  |  |
| 636 | 1.1.3.2.2.16.5.1 | ERM disseminates Workshop Pre-Read Materials to Risk Managers |  | 7d? | 2015-07-01 | 2015-07-09 |  | 506d | 1d | start no earlier than 2015-07-01 | R. Alhadeff | 56h | ܁ࢺ | Late |  |
| 637 | 1.1.3.2.2.16.5.2 | ERM facilitates Aggregation and Enrichment Activities |  | 10d? | 2015-07-13 | 2015-07-24 | 636 | 505d |  | start no earlier than 2015-07-13 | R. Alhadeff | 80h | ܁ࢺ | Late |  |
| 638 | 1.1.3.2.2.16.5.3 | Risk Manager presents inventory to level II subcommittee |  | 1d? | 2015-07-27 | 2015-07-27 |  | 504d |  | start no earlier than 2015-07-27 | J. McClernan | 8h | ܁ࢺ | Late |  |
| 639 | 1.1.3.2.2.16.5.4 | Liquidity/Market Material Risk Aggregation Prepared | milestone | 0d | 2015-07-28 | 2015-07-28 |  | 504d |  | start no earlier than 2015-07-28 |  |  | ܁ࢺ | Late |  |
| 640 | 1.1.3.2.2.16.6 | **TASK: Reputational/Strategic Material Risk Aggregation** |  | 19d? | 2015-07-01 | 2015-07-28 |  | 504d |  |  |  | 144h | ܁ࢺ |  |  |
| 641 | 1.1.3.2.2.16.6.1 | ERM disseminates Workshop Pre-Read Materials to Risk Managers |  | 7d? | 2015-07-01 | 2015-07-09 |  | 506d | 1d | start no earlier than 2015-07-01 | R. Alhadeff | 56h | ܁ࢺ | Late |  |
| 642 | 1.1.3.2.2.16.6.2 | ERM facilitates Aggregation and Enrichment Workshop |  | 10d? | 2015-07-13 | 2015-07-24 | 641 | 505d |  | start no earlier than 2015-07-13 | R. Alhadeff | 80h | ܁ࢺ | Late |  |
| 643 | 1.1.3.2.2.16.6.3 | Risk Manager presents inventory to level II subcommittee |  | 1d? | 2015-07-27 | 2015-07-27 |  | 504d |  | start no earlier than 2015-07-27 | M. Carbone | 8h | ܁ࢺ | Late |  |
| 644 | 1.1.3.2.2.16.6.4 | Reputational/Strategic Material Risk Aggregation Prepared | milestone | 0d | 2015-07-28 | 2015-07-28 |  | 504d | 0d | start no earlier than 2015-07-28 |  |  | ܁ࢺ | Late |  |
| 645 | 1.1.3.2.2.16.7 | Present Results to SBNA ERMC |  | 24d | 2015-07-28 | 2015-08-28 |  | 480d |  | start no earlier than 2015-07-28 |  |  | ܁ࢺ | Late |  |
| 646 | 1.1.3.2.2.16.8 | Present Results to SBNA BERC |  | 24d | 2015-07-28 | 2015-08-28 |  | 480d | 1d | start no earlier than 2015-07-28 |  |  | ܁ࢺ | Late |  |
| 647 | 1.1.3.2.2.16.9 | Present SBNA Results to CCAR | manual | 1d | 2015-08-31 | 2015-08-31 |  |  |  |  |  |  |  | Late |  |
| 648 | 1.1.3.2.2.16.10 | Deliver SBNA Material Risks to CCAR and Capital Plan | milestone, manual | 0d | 2015-09-01 | 2015-09-01 | 646 |  |  |  |  |  |  | Late | ܁д |

| ID | WBS | Task | Type | Duration | Start | Finish | Total slack | Constraint | Resources | Work | Entity | Text13 | Tracking Status |
| --- | --- | --- | --- | --- | --- | --- | --- | --- | --- | --- | --- | --- | --- |
| 649 | 1.1.3.2.3 | **DELIVERABLE: SCUSA - Business Entity Material Risk Program** |  | 47d? | 2015-06-29 | 2015-09-02 | 46d |  |  | 1408h | ܁ࢻ | J. Smith |  |
| 650 | 1.1.3.2.3.1 | **MILESTONE: Automotive Finance Material Risk Inventory** |  | 2d | 2015-06-29 | 2015-06-30 | 523d |  |  | 32h | ܁ࢻ |  |  |
| 651 | 1.1.3.2.3.1.1 | **TASK:Automotive Finance Material Risk Inventory** |  | 2d | 2015-06-29 | 2015-06-30 | 523d |  |  | 32h | ܁ࢻ |  |  |
| 652 | 1.1.3.2.3.1.1.1 | Deliver Final Inventory to SCUSA SHUSA ERM |  | 2d | 2015-06-29 | 2015-06-30 | 523d | start no earlier than 2015-06-29 | Grubb/Martin | 16h | ܁ࢻ |  | Late |
| 653 | 1.1.3.2.3.1.1.2 | Present inventory to ERMC |  | 2d | 2015-06-29 | 2015-06-30 | 523d | start no earlier than 2015-06-29 | Grubb/Martin | 16h | ܁ࢻ |  | Late |
| 654 | 1.1.3.2.3.1.1.3 | Automotive Finance Material Risk Inventory Prepared | milestone | 0d | 2015-06-30 | 2015-06-30 | 524d | start no earlier than 2015-06-30 |  |  | ܁ࢻ |  | Late |
| 655 | 1.1.3.2.3.2 | **MILESTONE: Personal Lending Material Risk Inventory** |  | 2d | 2015-06-29 | 2015-06-30 | 523d |  |  | 32h | ܁ࢻ |  |  |
| 656 | 1.1.3.2.3.2.1 | **TASK:Personal Lending Material Risk Inventory** |  | 2d | 2015-06-29 | 2015-06-30 | 523d |  |  | 32h | ܁ࢻ |  |  |
| 657 | 1.1.3.2.3.2.1.1 | Deliver Final Inventory to SCUSA SHUSA ERM |  | 2d | 2015-06-29 | 2015-06-30 | 523d | start no earlier than 2015-06-29 | G. Schmelzel | 16h | ܁ࢻ |  | Late |
| 658 | 1.1.3.2.3.2.1.2 | Present inventory to ERMC |  | 2d | 2015-06-29 | 2015-06-30 | 523d | start no earlier than 2015-06-29 | G. Schmelzel | 16h | ܁ࢻ |  | Late |
| 659 | 1.1.3.2.3.2.1.3 | Personal Lending Material Risk Inventory Prepared | milestone | 0d | 2015-06-30 | 2015-06-30 | 524d | start no earlier than 2015-06-30 |  |  | ܁ࢻ |  | Late |
| 660 | 1.1.3.2.3.3 | **MILESTONE: Human Resources Material Risk Inventory** |  | 2d | 2015-06-29 | 2015-06-30 | 523d |  |  | 32h | ܁ࢻ |  |  |
| 661 | 1.1.3.2.3.3.1 | **TASK:Human Resources Material Risk Inventory** |  | 2d | 2015-06-29 | 2015-06-30 | 523d |  |  | 32h | ܁ࢻ |  |  |
| 662 | 1.1.3.2.3.3.1.1 | Deliver Final Inventory to SCUSA SHUSA ERM |  | 2d | 2015-06-29 | 2015-06-30 | 523d | start no earlier than 2015-06-29 | M. Whatley | 16h | ܁ࢻ |  | Late |
| 663 | 1.1.3.2.3.3.1.2 | Present inventory to ERMC |  | 2d | 2015-06-29 | 2015-06-30 | 523d | start no earlier than 2015-06-29 | M. Whatley | 16h | ܁ࢻ |  | Late |
| 664 | 1.1.3.2.3.3.1.3 | Human Resources Material Risk Inventory Prepared | milestone | 0d | 2015-06-30 | 2015-06-30 | 524d | start no earlier than 2015-06-30 |  |  | ܁ࢻ |  | Late |
| 665 | 1.1.3.2.3.4 | **MILESTONE: Finance and Accounting Material Risk Inventory** |  | 2d | 2015-06-29 | 2015-06-30 | 523d |  |  | 32h | ܁ࢻ |  |  |
| 666 | 1.1.3.2.3.4.1 | **TASK:Finance and Accounting Material Risk Inventory** |  | 2d | 2015-06-29 | 2015-06-30 | 523d |  |  | 32h | ܁ࢻ |  |  |
| 667 | 1.1.3.2.3.4.1.1 | Deliver Final Inventory to SCUSA SHUSA ERM |  | 2d | 2015-06-29 | 2015-06-30 | 523d | start no earlier than 2015-06-29 | J. Kulas | 16h | ܁ࢻ |  | Late |
| 668 | 1.1.3.2.3.4.1.2 | Present inventory to ERMC |  | 2d | 2015-06-29 | 2015-06-30 | 523d | start no earlier than 2015-06-29 | J. Kulas | 16h | ܁ࢻ |  | Late |
| 669 | 1.1.3.2.3.4.1.3 | Finance and Accounting Material Risk Inventory Prepared | milestone | 0d | 2015-06-30 | 2015-06-30 | 524d | start no earlier than 2015-06-30 |  |  | ܁ࢻ |  | Late |
| 670 | 1.1.3.2.3.5 | **MILESTONE: Technology and Operations Material Risk Inventory** |  | 2d | 2015-06-29 | 2015-06-30 | 523d |  |  | 32h | ܁ࢻ |  |  |
| 671 | 1.1.3.2.3.5.1 | **TASK:Technology and Operations Material Risk Inventory** |  | 2d | 2015-06-29 | 2015-06-30 | 523d |  |  | 32h | ܁ࢻ |  |  |
| 672 | 1.1.3.2.3.5.1.1 | Deliver Final Inventory to SCUSA SHUSA ERM |  | 2d | 2015-06-29 | 2015-06-30 | 523d | start no earlier than 2015-06-29 | J. Fugitt | 16h | ܁ࢻ |  | Late |
| 673 | 1.1.3.2.3.5.1.2 | Present inventory to ERMC |  | 2d | 2015-06-29 | 2015-06-30 | 523d | start no earlier than 2015-06-29 | J. Fugitt | 16h | ܁ࢻ |  | Late |
| 674 | 1.1.3.2.3.5.1.3 | Technology and Operations Material Risk Inventory Prepared | milestone | 0d | 2015-06-30 | 2015-06-30 | 524d | start no earlier than 2015-06-30 |  |  | ܁ࢻ |  | Late |

| ID | WBS | Task | Type | Duration | Start | Finish | Predecessors | Total slack | Free slack | Constraint | Resources | Work | Entity | Tracking Status | Text13 |
| --- | --- | --- | --- | --- | --- | --- | --- | --- | --- | --- | --- | --- | --- | --- | --- |
| 675 | 1.1.3.2.3.6 | **MILESTONE: Legal Material Risk Inventory** |  | 2d | 2015-06-29 | 2015-06-30 |  | 523d |  |  |  | 32h | ܁ࢻ |  |  |
| 676 | 1.1.3.2.3.6.1 | **TASK:Legal Material Risk Inventory** |  | 2d | 2015-06-29 | 2015-06-30 |  | 523d |  |  |  | 32h | ܁ࢻ |  |  |
| 677 | 1.1.3.2.3.6.1.1 | Deliver Final Inventory to SCUSA SHUSA ERM |  | 2d | 2015-06-29 | 2015-06-30 |  | 523d |  | start no earlier than 2015-06-29 | E. Burns | 16h | ܁ࢻ | Late |  |
| 678 | 1.1.3.2.3.6.1.2 | Present inventory to ERMC |  | 2d | 2015-06-29 | 2015-06-30 |  | 523d |  | start no earlier than 2015-06-29 | E. Burns | 16h | ܁ࢻ | Late |  |
| 679 | 1.1.3.2.3.6.1.3 | Legal Material Risk Inventory Prepared | milestone | 0d | 2015-06-30 | 2015-06-30 |  | 524d |  | start no earlier than 2015-06-30 |  |  | ܁ࢻ | Late |  |
| 680 | 1.1.3.2.3.7 | **MILESTONE: SCUSA Aggregation Workshops** |  | 19d? | 2015-07-01 | 2015-07-28 |  | 504d |  |  |  | 816h | ܁ࢻ |  | J. Smith |
| 681 | 1.1.3.2.3.7.1 | **TASK: Credit Risk Aggregation** |  | 19d? | 2015-07-01 | 2015-07-28 |  | 504d |  |  |  | 144h | ܁ࢻ |  | J. Smith |
| 682 | 1.1.3.2.3.7.1.1 | ERM disseminates Workshop Pre-Read Materials to Risk Managers |  | 7d? | 2015-07-01 | 2015-07-09 |  | 506d | 1d | start no earlier than 2015-07-01 | T. Ploetz | 56h | ܁ࢻ | Late | J. Smith |
| 683 | 1.1.3.2.3.7.1.2 | ERM facilitates Aggregation and Enrichment Activities |  | 10d? | 2015-07-13 | 2015-07-24 | 682 | 505d |  | start no earlier than 2015-07-13 | T. Ploetz | 80h | ܁ࢻ | Late | J. Smith |
| 684 | 1.1.3.2.3.7.1.3 | Risk Manager presents inventory to level II subcommittee |  | 1d? | 2015-07-27 | 2015-07-27 |  | 504d |  | start no earlier than 2015-07-27 | A. Chawla | 8h | ܁ࢻ | Late | J. Smith |
| 685 | 1.1.3.2.3.7.1.4 | Credit Risk Aggregation Prepared | milestone | 0d | 2015-07-28 | 2015-07-28 |  | 504d |  | start no earlier than 2015-07-28 |  |  | ܁ࢻ | Late |  |
| 686 | 1.1.3.2.3.7.2 | **TASK: Operational Risk Material Risk Aggregation** |  | 19d? | 2015-07-01 | 2015-07-28 |  | 504d |  |  |  | 144h | ܁ࢻ |  | J. Smith |
| 687 | 1.1.3.2.3.7.2.1 | ERM disseminates Workshop Pre-Read Materials to Risk Managers |  | 7d? | 2015-07-01 | 2015-07-09 |  | 506d | 1d | start no earlier than 2015-07-01 | T. Ploetz | 56h | ܁ࢻ | Late | J. Smith |
| 688 | 1.1.3.2.3.7.2.2 | ERM facilitates Aggregation and Enrichment Activities |  | 10d? | 2015-07-13 | 2015-07-24 | 687 | 505d |  | start no earlier than 2015-07-13 | T. Ploetz | 80h | ܁ࢻ | Late | J. Smith |
| 689 | 1.1.3.2.3.7.2.3 | Risk Manager presents inventory to level II subcommittee |  | 1d? | 2015-07-27 | 2015-07-27 |  | 504d |  | start no earlier than 2015-07-27 | C. Hicks | 8h | ܁ࢻ | Late | J. Smith |
| 690 | 1.1.3.2.3.7.2.4 | Operational Risk Material Risk Aggregation Prepared | milestone | 0d | 2015-07-28 | 2015-07-28 |  | 504d |  | start no earlier than 2015-07-28 |  |  | ܁ࢻ | Late |  |
| 691 | 1.1.3.2.3.7.3 | **TASK: Compliance Material Risk Aggregation** |  | 19d? | 2015-07-01 | 2015-07-28 |  | 504d |  |  |  | 144h | ܁ࢻ |  | J. Smith |
| 692 | 1.1.3.2.3.7.3.1 | ERM disseminates Workshop Pre-Read Materials to Risk Managers |  | 7d? | 2015-07-01 | 2015-07-09 |  | 506d | 1d | start no earlier than 2015-07-01 | T. Ploetz | 56h | ܁ࢻ | Late | J. Smith |
| 693 | 1.1.3.2.3.7.3.2 | ERM facilitates Aggregation and Enrichment Activities |  | 10d? | 2015-07-13 | 2015-07-24 | 692 | 505d |  | start no earlier than 2015-07-13 | T. Ploetz | 80h | ܁ࢻ | Late | J. Smith |
| 694 | 1.1.3.2.3.7.3.3 | Risk Manager presents inventory to level II subcommittee |  | 1d? | 2015-07-27 | 2015-07-27 |  | 504d |  | start no earlier than 2015-07-27 | M. Rodgers | 8h | ܁ࢻ | Late | J. Smith |
| 695 | 1.1.3.2.3.7.3.4 | Compliance Material Risk Aggregation Prepared | milestone | 0d | 2015-07-28 | 2015-07-28 |  | 504d |  | start no earlier than 2015-07-28 |  |  | ܁ࢻ | Late |  |
| 696 | 1.1.3.2.3.7.4 | **TASK: Model Material Risk Aggregation** |  | 19d? | 2015-07-01 | 2015-07-28 |  | 504d |  |  |  | 144h | ܁ࢻ |  | J. Smith |
| 697 | 1.1.3.2.3.7.4.1 | ERM disseminates Workshop Pre-Read Materials to Risk Managers |  | 7d? | 2015-07-01 | 2015-07-09 |  | 506d | 1d | start no earlier than 2015-07-01 | T. Ploetz | 56h | ܁ࢻ | Late | J. Smith |
| 698 | 1.1.3.2.3.7.4.2 | ERM facilitates Aggregation and Enrichment Activities |  | 10d? | 2015-07-13 | 2015-07-24 | 697 | 505d |  | start no earlier than 2015-07-13 | T. Ploetz | 80h | ܁ࢻ | Late | J. Smith |
| 699 | 1.1.3.2.3.7.4.3 | Risk Manager presents inventory to level II subcommittee |  | 1d? | 2015-07-27 | 2015-07-27 |  | 504d |  | start no earlier than 2015-07-27 | R. Fahs | 8h | ܁ࢻ | Late | J. Smith |
| 700 | 1.1.3.2.3.7.4.4 | Model Material Risk Aggregation Prepared | milestone | 0d | 2015-07-28 | 2015-07-28 |  | 504d |  | start no earlier than 2015-07-28 |  |  | ܁ࢻ | Late |  |

| ID | WBS | Task | Type | Duration | Start | Finish | Predecessors | Total slack | Free slack | Constraint | Resources | Work | Entity | Text13 | Tracking Status | Dependency |
| --- | --- | --- | --- | --- | --- | --- | --- | --- | --- | --- | --- | --- | --- | --- | --- | --- |
| 701 | 1.1.3.2.3.7.5 | **TASK: Liquidity/Market Material Risk Aggregation** |  | 19d? | 2015-07-01 | 2015-07-28 |  | 504d |  |  |  | 144h | ܁ࢻ | J. Smith |  |  |
| 702 | 1.1.3.2.3.7.5.1 | ERM disseminates Workshop Pre-Read Materials to Risk Managers |  | 7d? | 2015-07-01 | 2015-07-09 |  | 506d | 1d | start no earlier than 2015-07-01 | T. Ploetz | 56h | ܁ࢻ | J. Smith | Late |  |
| 703 | 1.1.3.2.3.7.5.2 | ERM facilitates Aggregation and Enrichment Activities |  | 10d? | 2015-07-13 | 2015-07-24 | 702 | 505d |  | start no earlier than 2015-07-13 | T. Ploetz | 80h | ܁ࢻ | J. Smith | Late |  |
| 704 | 1.1.3.2.3.7.5.3 | Risk Manager presents inventory to level II subcommittee |  | 1d? | 2015-07-27 | 2015-07-27 |  | 504d |  | start no earlier than 2015-07-27 | N. Rihman | 8h | ܁ࢻ | J. Smith | Late |  |
| 705 | 1.1.3.2.3.7.5.4 | Liquidity/Market Material Risk Aggregation Prepared | milestone | 0d | 2015-07-28 | 2015-07-28 |  | 504d |  | start no earlier than 2015-07-28 |  |  | ܁ࢻ |  | Late |  |
| 706 | 1.1.3.2.3.7.6 | **TASK: Reputational/Strategic Material Risk Aggregation** |  | 19d? | 2015-07-01 | 2015-07-28 |  | 504d |  |  |  | 96h | ܁ࢻ | J. Smith |  |  |
| 707 | 1.1.3.2.3.7.6.1 | ERM disseminates Workshop Pre-Read Materials to Risk Managers |  | 7d? | 2015-07-01 | 2015-07-09 |  | 516d |  | start no earlier than 2015-07-01 | T. Ploetz | 56h | ܁ࢻ | J. Smith | Late |  |
| 708 | 1.1.3.2.3.7.6.2 | ERM facilitates Aggregation and Enrichment Workshop |  | 4d? | 2015-07-20 | 2015-07-23 |  | 506d |  | start no earlier than 2015-07-20 | T. Ploetz | 32h | ܁ࢻ | J. Smith | Late |  |
| 709 | 1.1.3.2.3.7.6.3 | Risk Manager presents inventory to level II subcommittee |  | 1d? | 2015-07-27 | 2015-07-27 |  | 504d |  | start no earlier than 2015-07-27 | T. Ploetz | 8h | ܁ࢻ | J. Smith | Late |  |
| 710 | 1.1.3.2.3.7.6.4 | Reputational/Strategic Material Risk Aggregation Prepared | milestone | 0d | 2015-07-28 | 2015-07-28 |  | 504d | 0d | start no earlier than 2015-07-28 |  |  | ܁ࢻ |  | Late |  |
| 711 | 1.1.3.2.3.8 | MILESTONE:Present Results to SCUSA ERMC |  | 25d | 2015-07-28 | 2015-08-31 |  | 479d |  | start no earlier than 2015-07-28 | T. Ploetz | 200h | ܁ࢻ | J. Smith | Late |  |
| 712 | 1.1.3.2.3.9 | MILESTONE:Present Results to SCUSA BERC |  | 25d | 2015-07-28 | 2015-08-31 |  | 479d |  | start no earlier than 2015-07-28 | T. Ploetz | 200h | ܁ࢻ | J. Smith | Late |  |
| 713 | 1.1.3.2.3.10 | Present SCUSA Material Risks to CCAR | manual | 1d | 2015-09-01 | 2015-09-01 |  |  |  |  |  |  |  |  | Late |  |
| 714 | 1.1.3.2.3.11 | Deliver SCUSA Material Risks to CCAR and Capital Plan | milestone, manual | 0d | 2015-09-02 | 2015-09-02 | 713 |  |  |  |  |  |  |  | Late | ܁д |
| 715 | 1.1.3.2.4 | **DELIVERABLE: New York Santander Investment Securities (SIS) - Business Entity Material Risk Program** |  | 47d? | 2015-06-29 | 2015-09-02 |  | 46d |  |  |  | 1584h | ܁ࣅ | M. Murphy |  |  |
| 716 | 1.1.3.2.4.1 | **MILESTONE:GBM-Cash Equities Brokerage Material Risk Inventory** |  | 2d | 2015-06-29 | 2015-06-30 |  | 523d |  |  |  | 32h | ܁ࣅ |  |  |  |
| 717 | 1.1.3.2.4.1.1 | **TASK:GBM-Cash Equities Brokerage Material Risk Inventory** |  | 2d | 2015-06-29 | 2015-06-30 |  | 523d |  |  |  | 32h | ܁ࣅ |  |  |  |
| 718 | 1.1.3.2.4.1.1.1 | Deliver Final Inventory to SIS and SHUSA ERM |  | 2d | 2015-06-29 | 2015-06-30 |  | 523d |  | start no earlier than 2015-06-29 | M. Souza | 16h | ܁ࣅ |  | Late |  |
| 719 | 1.1.3.2.4.1.1.2 | Present inventory to ERMC |  | 2d | 2015-06-29 | 2015-06-30 |  | 523d |  | start no earlier than 2015-06-29 | M. Souza | 16h | ܁ࣅ |  | Late |  |
| 720 | 1.1.3.2.4.1.1.3 | Cash Equities Brokerage Material Risk Inventory Prepared | milestone | 0d | 2015-06-30 | 2015-06-30 |  | 524d |  | start no earlier than 2015-06-30 |  |  | ܁ࣅ |  | Late |  |
| 721 | 1.1.3.2.4.2 | **MILESTONE:GBM- Debt Underwriting Material Risk Inventory** |  | 2d | 2015-06-29 | 2015-06-30 |  | 523d |  |  |  | 32h | ܁ࣅ |  |  |  |
| 722 | 1.1.3.2.4.2.1 | **TASK:GBM- Debt Underwriting Material Risk Inventory** |  | 2d | 2015-06-29 | 2015-06-30 |  | 523d |  |  |  | 32h | ܁ࣅ |  |  |  |
| 723 | 1.1.3.2.4.2.1.1 | Deliver Final Inventory to SIS and SHUSA ERM |  | 2d | 2015-06-29 | 2015-06-30 |  | 523d |  | start no earlier than 2015-06-29 | S. Lew | 16h | ܁ࣅ |  | Late |  |
| 724 | 1.1.3.2.4.2.1.2 | Present inventory to ERMC |  | 2d | 2015-06-29 | 2015-06-30 |  | 523d |  | start no earlier than 2015-06-29 | S. Lew | 16h | ܁ࣅ |  | Late |  |
| 725 | 1.1.3.2.4.2.1.3 | Debt Underwriting Material Risk Inventory Prepared | milestone | 0d | 2015-06-30 | 2015-06-30 |  | 524d |  | start no earlier than 2015-06-30 |  |  | ܁ࣅ |  | Late |  |

| ID | WBS | Task | Type | Duration | Start | Finish | Total slack | Constraint | Resources | Work | Entity | Tracking Status |
| --- | --- | --- | --- | --- | --- | --- | --- | --- | --- | --- | --- | --- |
| 726 | 1.1.3.2.4.3 | **MILESTONE:GBM Equity Underwriting Material Risk Inventory** |  | 2d | 2015-06-29 | 2015-06-30 | 523d |  |  | 32h | ܁ࣅ |  |
| 727 | 1.1.3.2.4.3.1 | **TASK:GBM Equity Underwriting Material Risk Inventory** |  | 2d | 2015-06-29 | 2015-06-30 | 523d |  |  | 32h | ܁ࣅ |  |
| 728 | 1.1.3.2.4.3.1.1 | Deliver Final Inventory to SIS and SHUSA ERM |  | 2d | 2015-06-29 | 2015-06-30 | 523d | start no earlier than 2015-06-29 | S. Lew | 16h | ܁ࣅ | Late |
| 729 | 1.1.3.2.4.3.1.2 | Present inventory to ERMC |  | 2d | 2015-06-29 | 2015-06-30 | 523d | start no earlier than 2015-06-29 | S. Lew | 16h | ܁ࣅ | Late |
| 730 | 1.1.3.2.4.3.1.3 | Equity Underwriting Material Risk Inventory Prepared | milestone | 0d | 2015-06-30 | 2015-06-30 | 524d | start no earlier than 2015-06-30 |  |  | ܁ࣅ | Late |
| 731 | 1.1.3.2.4.4 | **MILESTONE:GBM- Fixed Income/Bond TradingMaterial Risk Inventory** |  | 2d | 2015-06-29 | 2015-06-30 | 523d |  |  | 32h | ܁ࣅ |  |
| 732 | 1.1.3.2.4.4.1 | **TASK:GBM- Fixed Income/Bond TradingMaterial Risk Inventory** |  | 2d | 2015-06-29 | 2015-06-30 | 523d |  |  | 32h | ܁ࣅ |  |
| 733 | 1.1.3.2.4.4.1.1 | Deliver Final Inventory to SIS and SHUSA ERM |  | 2d | 2015-06-29 | 2015-06-30 | 523d | start no earlier than 2015-06-29 | J. Minuesa | 16h | ܁ࣅ | Late |
| 734 | 1.1.3.2.4.4.1.2 | Present inventory to ERMC |  | 2d | 2015-06-29 | 2015-06-30 | 523d | start no earlier than 2015-06-29 | J. Minuesa | 16h | ܁ࣅ | Late |
| 735 | 1.1.3.2.4.4.1.3 | Fixed Income/Bond TradingMaterial Risk Inventory Prepared | milestone | 0d | 2015-06-30 | 2015-06-30 | 524d | start no earlier than 2015-06-30 |  |  | ܁ࣅ | Late |
| 736 | 1.1.3.2.4.5 | **MILESTONE:GBM - Futures Brokerage Material Risk Inventory** |  | 2d | 2015-06-29 | 2015-06-30 | 523d |  |  | 32h | ܁ࣅ |  |
| 737 | 1.1.3.2.4.5.1 | **TASK:GBM - Futures Brokerage Material Risk Inventory** |  | 2d | 2015-06-29 | 2015-06-30 | 523d |  |  | 32h | ܁ࣅ |  |
| 738 | 1.1.3.2.4.5.1.1 | Deliver Final Inventory to SIS and SHUSA ERM |  | 2d | 2015-06-29 | 2015-06-30 | 523d | start no earlier than 2015-06-29 | I. Prada | 16h | ܁ࣅ | Late |
| 739 | 1.1.3.2.4.5.1.2 | Present inventory to ERMC |  | 2d | 2015-06-29 | 2015-06-30 | 523d | start no earlier than 2015-06-29 | I. Prada | 16h | ܁ࣅ | Late |
| 740 | 1.1.3.2.4.5.1.3 | Futures Brokerage Material Risk Inventory Prepared | milestone | 0d | 2015-06-30 | 2015-06-30 | 524d | start no earlier than 2015-06-30 |  |  | ܁ࣅ | Late |
| 741 | 1.1.3.2.4.6 | **MILESTONE:GBM - Fixed Income and Equity Research Material Risk Inventory** |  | 2d | 2015-06-29 | 2015-06-30 | 523d |  |  | 32h | ܁ࣅ |  |
| 742 | 1.1.3.2.4.6.1 | **TASK:GBM - Fixed Income and Equity Research Material Risk Inventory** |  | 2d | 2015-06-29 | 2015-06-30 | 523d |  |  | 32h | ܁ࣅ |  |
| 743 | 1.1.3.2.4.6.1.1 | Deliver Final Inventory to SIS and SHUSA ERM |  | 2d | 2015-06-29 | 2015-06-30 | 523d | start no earlier than 2015-06-29 | J. Gomez | 16h | ܁ࣅ | Late |
| 744 | 1.1.3.2.4.6.1.2 | Present inventory to ERMC |  | 2d | 2015-06-29 | 2015-06-30 | 523d | start no earlier than 2015-06-29 | J. Gomez | 16h | ܁ࣅ | Late |
| 745 | 1.1.3.2.4.6.1.3 | Fixed Income and Equity Research Material Risk Inventory Prepared | milestone | 0d | 2015-06-30 | 2015-06-30 | 524d | start no earlier than 2015-06-30 |  |  | ܁ࣅ | Late |
| 746 | 1.1.3.2.4.7 | **MILESTONE:Human Resources Material Risk Inventory** |  | 2d | 2015-06-29 | 2015-06-30 | 523d |  |  | 32h | ܁ࣅ |  |
| 747 | 1.1.3.2.4.7.1 | **TASK:Human Resources Material Risk Inventory** |  | 2d | 2015-06-29 | 2015-06-30 | 523d |  |  | 32h | ܁ࣅ |  |
| 748 | 1.1.3.2.4.7.1.1 | Deliver Final Inventory to SIS and SHUSA ERM |  | 2d | 2015-06-29 | 2015-06-30 | 523d | start no earlier than 2015-06-29 | S. Fernandez | 16h | ܁ࣅ | Late |
| 749 | 1.1.3.2.4.7.1.2 | Present inventory to ERMC |  | 2d | 2015-06-29 | 2015-06-30 | 523d | start no earlier than 2015-06-29 | S. Fernandez | 16h | ܁ࣅ | Late |
| 750 | 1.1.3.2.4.7.1.3 | Human Resources Material Risk Inventory Prepared | milestone | 0d | 2015-06-30 | 2015-06-30 | 524d | start no earlier than 2015-06-30 |  |  | ܁ࣅ | Late |

| ID | WBS | Task | Type | Duration | Start | Finish | Predecessors | Total slack | Free slack | Constraint | Resources | Work | Entity | Tracking Status | Text13 |
| --- | --- | --- | --- | --- | --- | --- | --- | --- | --- | --- | --- | --- | --- | --- | --- |
| 751 | 1.1.3.2.4.8 | **MILESTONE:Finance Material Risk Inventory** |  | 2d | 2015-06-29 | 2015-06-30 |  | 523d |  |  |  | 32h | ܁ࣅ |  |  |
| 752 | 1.1.3.2.4.8.1 | **TASK:Finance Material Risk Inventory** |  | 2d | 2015-06-29 | 2015-06-30 |  | 523d |  |  |  | 32h | ܁ࣅ |  |  |
| 753 | 1.1.3.2.4.8.1.1 | Deliver Final Inventory to SIS and SHUSA ERM |  | 2d | 2015-06-29 | 2015-06-30 |  | 523d |  | start no earlier than 2015-06-29 | F. Sempere | 16h | ܁ࣅ | Late |  |
| 754 | 1.1.3.2.4.8.1.2 | Present inventory to ERMC |  | 2d | 2015-06-29 | 2015-06-30 |  | 523d |  | start no earlier than 2015-06-29 | F. Sempere | 16h | ܁ࣅ | Late |  |
| 755 | 1.1.3.2.4.8.1.3 | Finance Material Risk Inventory Prepared | milestone | 0d | 2015-06-30 | 2015-06-30 |  | 524d |  | start no earlier than 2015-06-30 |  |  | ܁ࣅ | Late |  |
| 756 | 1.1.3.2.4.9 | **MILESTONE:Technology and Operations Material Risk Inventory** |  | 2d | 2015-06-29 | 2015-06-30 |  | 523d |  |  |  | 32h | ܁ࣅ |  |  |
| 757 | 1.1.3.2.4.9.1 | **TASK:Technology and Operations Material Risk Inventory** |  | 2d | 2015-06-29 | 2015-06-30 |  | 523d |  |  |  | 32h | ܁ࣅ |  |  |
| 758 | 1.1.3.2.4.9.1.1 | Deliver Final Inventory to SIS and SHUSA ERM |  | 2d | 2015-06-29 | 2015-06-30 |  | 523d |  | start no earlier than 2015-06-29 | J. Davila | 16h | ܁ࣅ | Late |  |
| 759 | 1.1.3.2.4.9.1.2 | Present inventory to ERMC |  | 2d | 2015-06-29 | 2015-06-30 |  | 523d |  | start no earlier than 2015-06-29 | J. Davila | 16h | ܁ࣅ | Late |  |
| 760 | 1.1.3.2.4.9.1.3 | Technology and Operations Material Risk Inventory Prepared | milestone | 0d | 2015-06-30 | 2015-06-30 |  | 524d |  | start no earlier than 2015-06-30 |  |  | ܁ࣅ | Late |  |
| 761 | 1.1.3.2.4.10 | **MILESTONE:Legal Material Risk Inventory** |  | 2d | 2015-06-29 | 2015-06-30 |  | 523d |  |  |  | 32h | ܁ࣅ |  |  |
| 762 | 1.1.3.2.4.10.1 | **TASK:Legal Material Risk Inventory** |  | 2d | 2015-06-29 | 2015-06-30 |  | 523d |  |  |  | 32h | ܁ࣅ |  |  |
| 763 | 1.1.3.2.4.10.1.1 | Deliver Final Inventory to SIS and SHUSA ERM |  | 2d | 2015-06-29 | 2015-06-30 |  | 523d |  | start no earlier than 2015-06-29 | J. Bathon | 16h | ܁ࣅ | Late |  |
| 764 | 1.1.3.2.4.10.1.2 | Present inventory to ERMC |  | 2d | 2015-06-29 | 2015-06-30 |  | 523d |  | start no earlier than 2015-06-29 | J. Bathon | 16h | ܁ࣅ | Late |  |
| 765 | 1.1.3.2.4.10.1.3 | Legal Material Risk Inventory Prepared | milestone | 0d | 2015-06-30 | 2015-06-30 |  | 524d |  | start no earlier than 2015-06-30 |  |  | ܁ࣅ | Late |  |
| 766 | 1.1.3.2.4.11 | **MILESTONE:NY SIS Aggregation Workshops** |  | 19d? | 2015-07-01 | 2015-07-28 |  | 504d |  |  |  | 864h | ܁ࣅ |  | M. Murphy |
| 767 | 1.1.3.2.4.11.1 | **TASK: Credit Risk Aggregation** |  | 19d? | 2015-07-01 | 2015-07-28 |  | 504d |  |  |  | 144h | ܁ࣅ |  | M. Murphy |
| 768 | 1.1.3.2.4.11.1.1 | ERM disseminates Workshop Pre-Read Materials to Risk Managers |  | 7d? | 2015-07-01 | 2015-07-09 |  | 506d | 1d | start no earlier than 2015-07-01 | J. Bathon | 56h | ܁ࣅ | Late | M. Murphy |
| 769 | 1.1.3.2.4.11.1.2 | ERM facilitates Aggregation and Enrichment Activities |  | 10d? | 2015-07-13 | 2015-07-24 | 768 | 505d |  | start no earlier than 2015-07-13 | J. Bathon | 80h | ܁ࣅ | Late | M. Murphy |
| 770 | 1.1.3.2.4.11.1.3 | Risk Manager presents inventory to level II subcommittee |  | 1d? | 2015-07-27 | 2015-07-27 |  | 504d |  | start no earlier than 2015-07-27 | R. Waltz-Cuccioli | 8h | ܁ࣅ | Late | M. Murphy |
| 771 | 1.1.3.2.4.11.1.4 | Credit Risk Aggregation Prepared | milestone | 0d | 2015-07-28 | 2015-07-28 |  | 504d |  | start no earlier than 2015-07-28 |  |  | ܁ࣅ | Late |  |
| 772 | 1.1.3.2.4.11.2 | **TASK: Operational Risk Material Risk Aggregation** |  | 19d? | 2015-07-01 | 2015-07-28 |  | 504d |  |  |  | 144h | ܁ࣅ |  | M. Murphy |
| 773 | 1.1.3.2.4.11.2.1 | ERM disseminates Workshop Pre-Read Materials to Risk Managers |  | 7d? | 2015-07-01 | 2015-07-09 |  | 506d | 1d | start no earlier than 2015-07-01 | J. Bathon | 56h | ܁ࣅ | Late | M. Murphy |
| 774 | 1.1.3.2.4.11.2.2 | ERM facilitates Aggregation and Enrichment Activities |  | 10d? | 2015-07-13 | 2015-07-24 | 773 | 505d |  | start no earlier than 2015-07-13 | J. Bathon | 80h | ܁ࣅ | Late | M. Murphy |
| 775 | 1.1.3.2.4.11.2.3 | Risk Manager presents inventory to level II subcommittee |  | 1d? | 2015-07-27 | 2015-07-27 |  | 504d |  | start no earlier than 2015-07-27 | A. Schwartz | 8h | ܁ࣅ | Late | M. Murphy |
| 776 | 1.1.3.2.4.11.2.4 | Operational Risk Material Risk Aggregation Prepared | milestone | 0d | 2015-07-28 | 2015-07-28 |  | 504d |  | start no earlier than 2015-07-28 |  |  | ܁ࣅ | Late |  |

| ID | WBS | Task | Type | Duration | Start | Finish | Predecessors | Total slack | Free slack | Constraint | Resources | Work | Entity | Text13 | Tracking Status | Dependency |
| --- | --- | --- | --- | --- | --- | --- | --- | --- | --- | --- | --- | --- | --- | --- | --- | --- |
| 777 | 1.1.3.2.4.11.3 | **TASK: Compliance Material Risk Aggregation** |  | 19d? | 2015-07-01 | 2015-07-28 |  | 504d |  |  |  | 144h | ܁ࣅ | M. Murphy |  |  |
| 778 | 1.1.3.2.4.11.3.1 | ERM disseminates Workshop Pre-Read Materials to Risk Managers |  | 7d? | 2015-07-01 | 2015-07-09 |  | 506d | 1d | start no earlier than 2015-07-01 | J. Bathon | 56h | ܁ࣅ | M. Murphy | Late |  |
| 779 | 1.1.3.2.4.11.3.2 | ERM facilitates Aggregation and Enrichment Activities |  | 10d? | 2015-07-13 | 2015-07-24 | 778 | 505d |  | start no earlier than 2015-07-13 | J. Bathon | 80h | ܁ࣅ | M. Murphy | Late |  |
| 780 | 1.1.3.2.4.11.3.3 | Risk Manager presents inventory to level II subcommittee |  | 1d? | 2015-07-27 | 2015-07-27 |  | 504d |  | start no earlier than 2015-07-27 | W. Delaney | 8h | ܁ࣅ | M. Murphy | Late |  |
| 781 | 1.1.3.2.4.11.3.4 | Compliance Material Risk Aggregation Prepared | milestone | 0d | 2015-07-28 | 2015-07-28 |  | 504d |  | start no earlier than 2015-07-28 |  |  | ܁ࣅ |  | Late |  |
| 782 | 1.1.3.2.4.11.4 | **TASK: Model Material Risk Aggregation** |  | 19d? | 2015-07-01 | 2015-07-28 |  | 504d |  |  |  | 144h | ܁ࣅ | M. Murphy |  |  |
| 783 | 1.1.3.2.4.11.4.1 | ERM disseminates Workshop Pre-Read Materials to Risk Managers |  | 7d? | 2015-07-01 | 2015-07-09 |  | 506d | 1d | start no earlier than 2015-07-01 | J. Bathon | 56h | ܁ࣅ | M. Murphy | Late |  |
| 784 | 1.1.3.2.4.11.4.2 | ERM facilitates Aggregation and Enrichment Workshop |  | 10d? | 2015-07-13 | 2015-07-24 | 783 | 505d |  | start no earlier than 2015-07-13 | J. Bathon | 80h | ܁ࣅ | M. Murphy | Late |  |
| 785 | 1.1.3.2.4.11.4.3 | Risk Manager presents inventory to level II subcommittee |  | 1d? | 2015-07-27 | 2015-07-27 |  | 504d |  | start no earlier than 2015-07-27 | R. Fahs | 8h | ܁ࣅ | M. Murphy | Late |  |
| 786 | 1.1.3.2.4.11.4.4 | Model Material Risk Aggregation Prepared | milestone | 0d | 2015-07-28 | 2015-07-28 |  | 504d |  | start no earlier than 2015-07-28 |  |  | ܁ࣅ |  | Late |  |
| 787 | 1.1.3.2.4.11.5 | **TASK: Liquidity/Market Material Risk Aggregation** |  | 19d? | 2015-07-01 | 2015-07-28 |  | 504d |  |  |  | 144h | ܁ࣅ | M. Murphy |  |  |
| 788 | 1.1.3.2.4.11.5.1 | ERM disseminates Workshop Pre-Read Materials to Risk Managers |  | 7d? | 2015-07-01 | 2015-07-09 |  | 506d | 1d | start no earlier than 2015-07-01 | J. Bathon | 56h | ܁ࣅ | M. Murphy | Late |  |
| 789 | 1.1.3.2.4.11.5.2 | ERM facilitates Aggregation and Enrichment Activities |  | 10d? | 2015-07-13 | 2015-07-24 | 788 | 505d |  | start no earlier than 2015-07-13 | J. Bathon | 80h | ܁ࣅ | M. Murphy | Late |  |
| 790 | 1.1.3.2.4.11.5.3 | Risk Manager presents inventory to level II subcommittee |  | 1d? | 2015-07-27 | 2015-07-27 |  | 504d |  | start no earlier than 2015-07-27 | J. Galan | 8h | ܁ࣅ | M. Murphy | Late |  |
| 791 | 1.1.3.2.4.11.5.4 | Liquidity/Market Material Risk Aggregation Prepared | milestone | 0d | 2015-07-28 | 2015-07-28 |  | 504d |  | start no earlier than 2015-07-28 |  |  | ܁ࣅ |  | Late |  |
| 792 | 1.1.3.2.4.11.6 | **TASK: Reputational/Strategic Material Risk Aggregation** |  | 19d? | 2015-07-01 | 2015-07-28 |  | 504d |  |  |  | 144h | ܁ࣅ | M. Murphy |  |  |
| 793 | 1.1.3.2.4.11.6.1 | ERM disseminates Workshop Pre-Read Materials to Risk Managers |  | 7d? | 2015-07-01 | 2015-07-09 |  | 506d | 1d | start no earlier than 2015-07-01 | J. Bathon | 56h | ܁ࣅ | M. Murphy | Late |  |
| 794 | 1.1.3.2.4.11.6.2 | ERM facilitates Aggregation and Enrichment Activities |  | 10d? | 2015-07-13 | 2015-07-24 | 793 | 505d |  | start no earlier than 2015-07-13 | J. Bathon | 80h | ܁ࣅ | M. Murphy | Late |  |
| 795 | 1.1.3.2.4.11.6.3 | Risk Manager presents inventory to level II subcommittee |  | 1d? | 2015-07-27 | 2015-07-27 |  | 504d |  | start no earlier than 2015-07-27 | J. Bathon | 8h | ܁ࣅ | M. Murphy | Late |  |
| 796 | 1.1.3.2.4.11.6.4 | Reputational/Strategic Material Risk Aggregation Prepared | milestone | 0d | 2015-07-28 | 2015-07-28 |  | 504d | 0d | start no earlier than 2015-07-28 |  |  | ܁ࣅ |  | Late |  |
| 797 | 1.1.3.2.4.12 | MILESTONE:Present Results to NY SIS ERMC |  | 25d | 2015-07-28 | 2015-08-31 |  | 479d |  | start no earlier than 2015-07-28 | J. Bathon | 200h | ܁ࣅ | M. Murphy | Late |  |
| 798 | 1.1.3.2.4.13 | MILESTONE:Present Results to NY SIS BERC |  | 25d | 2015-07-28 | 2015-08-31 |  | 479d |  | start no earlier than 2015-07-28 | J. Bathon | 200h | ܁ࣅ | M. Murphy | Late |  |
| 799 | 1.1.3.2.4.14 | Present NY SIS Material Risks to CCAR | manual | 1d | 2015-09-01 | 2015-09-01 |  |  |  |  |  |  |  |  | Late |  |
| 800 | 1.1.3.2.4.15 | Deliver NY SIS Material Risks to CCAR and Capital Plan | milestone, manual | 0d | 2015-09-02 | 2015-09-02 |  |  |  |  |  |  |  |  | Late | ܁д |

| ID | WBS | Task | Type | Duration | Start | Finish | Total slack | Constraint | Resources | Work | Entity | Text13 | Tracking Status |
| --- | --- | --- | --- | --- | --- | --- | --- | --- | --- | --- | --- | --- | --- |
| 801 | 1.1.3.2.5 | **DELIVERABLE: Puerto Rico - Business Entity Material Risk Program** |  | 69d? | 2015-05-28 | 2015-09-02 | 68d |  |  | 2280h | ܁ࢽ | D. Fabricio |  |
| 802 | 1.1.3.2.5.1 | **MILESTONE:Retail Banking Material Risk Inventory** |  | 2d | 2015-06-29 | 2015-06-30 | 523d |  |  | 80h | ܁ࢽ |  |  |
| 803 | 1.1.3.2.5.1.1 | **TASK: Personal Loans Banking Material Risk Inventory** |  | 2d | 2015-06-29 | 2015-06-30 | 523d |  |  | 16h | ܁ࢽ |  |  |
| 804 | 1.1.3.2.5.1.1.1 | Deliver Final Inventory to PR and SHUSA ERM |  | 2d | 2015-06-29 | 2015-06-30 | 523d | start no earlier than 2015-06-29 | R. Leal | 16h | ܁ࢽ |  | Late |
| 805 | 1.1.3.2.5.1.1.2 | Personal Loans Banking Material Risk Inventory Prepared | milestone | 0d | 2015-06-30 | 2015-06-30 | 524d | start no earlier than 2015-06-30 |  |  | ܁ࢽ |  | Late |
| 806 | 1.1.3.2.5.1.2 | **TASK: Small Business Banking Material Risk Inventory** |  | 2d | 2015-06-29 | 2015-06-30 | 523d |  |  | 16h | ܁ࢽ |  |  |
| 807 | 1.1.3.2.5.1.2.1 | Deliver Final Inventory to PR and SHUSA ERM |  | 2d | 2015-06-29 | 2015-06-30 | 523d | start no earlier than 2015-06-29 | R. Leal | 16h | ܁ࢽ |  | Late |
| 808 | 1.1.3.2.5.1.2.2 | Small Business Banking Material Risk Inventory Prepared | milestone | 0d | 2015-06-30 | 2015-06-30 | 524d | start no earlier than 2015-06-30 |  |  | ܁ࢽ |  | Late |
| 809 | 1.1.3.2.5.1.3 | **TASK: Santander Insurance Agency Material Risk Inventory** |  | 2d | 2015-06-29 | 2015-06-30 | 523d |  |  | 16h | ܁ࢽ |  |  |
| 810 | 1.1.3.2.5.1.3.1 | Deliver Final Inventory to PR and SHUSA ERM |  | 2d | 2015-06-29 | 2015-06-30 | 523d | start no earlier than 2015-06-29 | R. Leal | 16h | ܁ࢽ |  | Late |
| 811 | 1.1.3.2.5.1.3.2 | Santander Insurance Agency Material Risk Inventory Prepared | milestone | 0d | 2015-06-30 | 2015-06-30 | 524d | start no earlier than 2015-06-30 |  |  | ܁ࢽ |  | Late |
| 812 | 1.1.3.2.5.1.4 | **TASK: Credit Cards Material Risk Inventory** |  | 2d | 2015-06-29 | 2015-06-30 | 523d |  |  | 16h | ܁ࢽ |  |  |
| 813 | 1.1.3.2.5.1.4.1 | Deliver Final Inventory to PR and SHUSA ERM |  | 2d | 2015-06-29 | 2015-06-30 | 523d | start no earlier than 2015-06-29 | R. Leal | 16h | ܁ࢽ |  | Late |
| 814 | 1.1.3.2.5.1.4.2 | Credit Cards Material Risk Inventory Prepared | milestone | 0d | 2015-06-30 | 2015-06-30 | 524d | start no earlier than 2015-06-30 |  |  | ܁ࢽ |  | Late |
| 815 | 1.1.3.2.5.1.5 | **TASK: Mortgages Material Risk Inventory** |  | 2d | 2015-06-29 | 2015-06-30 | 523d |  |  | 16h | ܁ࢽ |  |  |
| 816 | 1.1.3.2.5.1.5.1 | Deliver Final Inventory to PR and SHUSA ERM |  | 2d | 2015-06-29 | 2015-06-30 | 523d | start no earlier than 2015-06-29 | R. Leal | 16h | ܁ࢽ |  | Late |
| 817 | 1.1.3.2.5.1.5.2 | Mortgages Material Risk Inventory Prepared | milestone | 0d | 2015-06-30 | 2015-06-30 | 524d | start no earlier than 2015-06-30 |  |  | ܁ࢽ |  | Late |
| 818 | 1.1.3.2.5.2 | **MILESTONE:Retail Banking: Create Retail Banking Material Risk Inventory** |  | 24d | 2015-05-28 | 2015-06-30 | 523d |  |  | 208h | ܁ࢽ |  |  |
| 819 | 1.1.3.2.5.2.1 | **TASK:Retail Banking: Create Retail Banking Material Risk Inventory** |  | 24d | 2015-05-28 | 2015-06-30 | 523d |  |  | 208h | ܁ࢽ |  |  |
| 820 | 1.1.3.2.5.2.1.1 | Create Segment Material Risk Inventory (Aggregation) |  | 24d | 2015-05-28 | 2015-06-30 | 523d | start no earlier than 2015-05-28 | R. Leal | 192h | ܁ࢽ |  | Late |
| 821 | 1.1.3.2.5.2.1.2 | Segment head presents inventory to ERMC |  | 2d | 2015-06-29 | 2015-06-30 | 523d | start no earlier than 2015-06-29 | R. Leal | 16h | ܁ࢽ |  | Late |
| 822 | 1.1.3.2.5.2.1.3 | Retail Banking Material Risk Inventory Prepared | milestone | 0d | 2015-06-30 | 2015-06-30 | 524d | start no earlier than 2015-06-30 |  |  | ܁ࢽ |  | Late |
| 823 | 1.1.3.2.5.3 | **MILESTONE:Global Banking/Commercial Banking and CRE/Speciality and Gov't Banking Material Risk Inventory** |  | 2d | 2015-06-29 | 2015-06-30 | 523d |  |  | 48h | ܁ࢽ |  |  |
| 824 | 1.1.3.2.5.3.1 | **TASK: GBM Material Risk Inventory** |  | 2d | 2015-06-29 | 2015-06-30 | 523d |  |  | 16h | ܁ࢽ |  |  |
| 825 | 1.1.3.2.5.3.1.1 | Deliver Final Inventory to PR and SHUSA ERM |  | 2d | 2015-06-29 | 2015-06-30 | 523d | start no earlier than 2015-06-29 | L. Diaz | 16h | ܁ࢽ |  | Late |
| 826 | 1.1.3.2.5.3.1.2 | GBM Material Risk Inventory Prepared | milestone | 0d | 2015-06-30 | 2015-06-30 | 524d | start no earlier than 2015-06-30 |  |  | ܁ࢽ |  | Late |

| ID | WBS | Task | Type | Duration | Start | Finish | Total slack | Constraint | Resources | Work | Entity | Tracking Status |
| --- | --- | --- | --- | --- | --- | --- | --- | --- | --- | --- | --- | --- |
| 827 | 1.1.3.2.5.3.2 | **TASK: Enterprise Material Risk Inventory** |  | 2d | 2015-06-29 | 2015-06-30 | 523d |  |  | 16h | ܁ࢽ |  |
| 828 | 1.1.3.2.5.3.2.1 | Deliver Final Inventory to PR and SHUSA ERM |  | 2d | 2015-06-29 | 2015-06-30 | 523d | start no earlier than 2015-06-29 | L. Diaz | 16h | ܁ࢽ | Late |
| 829 | 1.1.3.2.5.3.2.2 | Enterprise Material Risk Inventory Prepared | milestone | 0d | 2015-06-30 | 2015-06-30 | 524d | start no earlier than 2015-06-30 |  |  | ܁ࢽ | Late |
| 830 | 1.1.3.2.5.3.3 | **TASK: Institutional/Public Sector Material Risk Inventory** |  | 2d | 2015-06-29 | 2015-06-30 | 523d |  |  | 16h | ܁ࢽ |  |
| 831 | 1.1.3.2.5.3.3.1 | Deliver Final Inventory to PR and SHUSA ERM |  | 2d | 2015-06-29 | 2015-06-30 | 523d | start no earlier than 2015-06-29 | L. Diaz | 16h | ܁ࢽ | Late |
| 832 | 1.1.3.2.5.3.3.2 | Institutional/Public Sector Material Risk Inventory Prepared | milestone | 0d | 2015-06-30 | 2015-06-30 | 524d | start no earlier than 2015-06-30 |  |  | ܁ࢽ | Late |
| 833 | 1.1.3.2.5.4 | **MILESTONE:Global Banking/Commercial Banking/CRE & Speciality: Create Global Banking Material Risk Inventory** |  | 24d | 2015-05-28 | 2015-06-30 | 523d |  |  | 208h | ܁ࢽ |  |
| 834 | 1.1.3.2.5.4.1 | **TASK:Global Banking/Commercial Banking/CRE & Speciality: Create Global Banking Material Risk Inventory** |  | 24d | 2015-05-28 | 2015-06-30 | 523d |  |  | 208h | ܁ࢽ |  |
| 835 | 1.1.3.2.5.4.1.1 | Create Segment Material Risk Inventory (Aggregation) |  | 24d | 2015-05-28 | 2015-06-30 | 523d | start no earlier than 2015-05-28 | L. Diaz | 192h | ܁ࢽ | Late |
| 836 | 1.1.3.2.5.4.1.2 | Segment head presents inventory to ERMC |  | 2d | 2015-06-29 | 2015-06-30 | 523d | start no earlier than 2015-06-29 | L. Diaz | 16h | ܁ࢽ | Late |
| 837 | 1.1.3.2.5.4.1.3 | Global Banking Material Risk Inventory Prepared | milestone | 0d | 2015-06-30 | 2015-06-30 | 524d | start no earlier than 2015-06-30 |  |  | ܁ࢽ | Late |
| 838 | 1.1.3.2.5.5 | **MILESTONE:Mortgage Servicing Material Risk Inventory** |  | 2d | 2015-06-29 | 2015-06-30 | 523d |  |  | 32h | ܁ࢽ |  |
| 839 | 1.1.3.2.5.5.1 | **TASK:Mortgage Servicing Material Risk Inventory** |  | 2d | 2015-06-29 | 2015-06-30 | 523d |  |  | 32h | ܁ࢽ |  |
| 840 | 1.1.3.2.5.5.1.1 | Deliver Final Inventory to PR and SHUSA ERM |  | 2d | 2015-06-29 | 2015-06-30 | 523d | start no earlier than 2015-06-29 | Carreras/Cupril | 16h | ܁ࢽ | Late |
| 841 | 1.1.3.2.5.5.1.2 | Present inventory to ERMC |  | 2d | 2015-06-29 | 2015-06-30 | 523d | start no earlier than 2015-06-29 | Carreras/Cupril | 16h | ܁ࢽ | Late |
| 842 | 1.1.3.2.5.5.1.3 | Mortgage Servicing Material Risk Inventory Prepared | milestone | 0d | 2015-06-30 | 2015-06-30 | 524d | start no earlier than 2015-06-30 |  |  | ܁ࢽ | Late |
| 843 | 1.1.3.2.5.6 | **MILESTONE:Investment Services Material Risk Inventory** |  | 2d | 2015-06-29 | 2015-06-30 | 523d |  |  | 32h | ܁ࢽ |  |
| 844 | 1.1.3.2.5.6.1 | **TASK:Investment Services Material Risk Inventory** |  | 2d | 2015-06-29 | 2015-06-30 | 523d |  |  | 32h | ܁ࢽ |  |
| 845 | 1.1.3.2.5.6.1.1 | Deliver Final Inventory to PR and SHUSA ERM |  | 2d | 2015-06-29 | 2015-06-30 | 523d | start no earlier than 2015-06-29 | L. Roig | 16h | ܁ࢽ | Late |
| 846 | 1.1.3.2.5.6.1.2 | Present inventory to ERMC |  | 2d | 2015-06-29 | 2015-06-30 | 523d | start no earlier than 2015-06-29 | L. Roig | 16h | ܁ࢽ | Late |
| 847 | 1.1.3.2.5.6.1.3 | Investment Services Material Risk Inventory Prepared | milestone | 0d | 2015-06-30 | 2015-06-30 | 524d | start no earlier than 2015-06-30 |  |  | ܁ࢽ | Late |
| 848 | 1.1.3.2.5.7 | **MILESTONE:Trust Material Risk Inventory** |  | 2d | 2015-06-29 | 2015-06-30 | 523d |  |  | 32h | ܁ࢽ |  |
| 849 | 1.1.3.2.5.7.1 | **TASK:Trust Material Risk Inventory** |  | 2d | 2015-06-29 | 2015-06-30 | 523d |  |  | 32h | ܁ࢽ |  |
| 850 | 1.1.3.2.5.7.1.1 | Deliver Final Inventory to PR and SHUSA ERM |  | 2d | 2015-06-29 | 2015-06-30 | 523d | start no earlier than 2015-06-29 | W. Gonzalez | 16h | ܁ࢽ | Late |
| 851 | 1.1.3.2.5.7.1.2 | Present inventory to ERMC |  | 2d | 2015-06-29 | 2015-06-30 | 523d | start no earlier than 2015-06-29 | W. Gonzalez | 16h | ܁ࢽ | Late |
| 852 | 1.1.3.2.5.7.1.3 | Trust Material Risk Inventory Prepared | milestone | 0d | 2015-06-30 | 2015-06-30 | 524d | start no earlier than 2015-06-30 |  |  | ܁ࢽ | Late |

| ID | WBS | Task | Type | Duration | Start | Finish | Total slack | Constraint | Resources | Work | Entity | Tracking Status |
| --- | --- | --- | --- | --- | --- | --- | --- | --- | --- | --- | --- | --- |
| 853 | 1.1.3.2.5.8 | **MILESTONE:Pension Plan Material Risk Inventory** |  | 2d | 2015-06-29 | 2015-06-30 | 523d |  |  | 32h | ܁ࢽ |  |
| 854 | 1.1.3.2.5.8.1 | **TASK:Pension Plan Material Risk Inventory** |  | 2d | 2015-06-29 | 2015-06-30 | 523d |  |  | 32h | ܁ࢽ |  |
| 855 | 1.1.3.2.5.8.1.1 | Deliver Final Inventory to PR and SHUSA ERM |  | 2d | 2015-06-29 | 2015-06-30 | 523d | start no earlier than 2015-06-29 | C. Melendez | 16h | ܁ࢽ | Late |
| 856 | 1.1.3.2.5.8.1.2 | Present inventory to ERMC |  | 2d | 2015-06-29 | 2015-06-30 | 523d | start no earlier than 2015-06-29 | C. Melendez | 16h | ܁ࢽ | Late |
| 857 | 1.1.3.2.5.8.1.3 | Pension Plan Material Risk Inventory Prepared | milestone | 0d | 2015-06-30 | 2015-06-30 | 524d | start no earlier than 2015-06-30 |  |  | ܁ࢽ | Late |
| 858 | 1.1.3.2.5.9 | **MILESTONE:Foreign Accounts Material Risk Inventory** |  | 2d | 2015-06-29 | 2015-06-30 | 523d |  |  | 32h | ܁ࢽ |  |
| 859 | 1.1.3.2.5.9.1 | **TASK:Foreign Accounts Material Risk Inventory** |  | 2d | 2015-06-29 | 2015-06-30 | 523d |  |  | 32h | ܁ࢽ |  |
| 860 | 1.1.3.2.5.9.1.1 | Deliver Final Inventory to PR and SHUSA ERM |  | 2d | 2015-06-29 | 2015-06-30 | 523d | start no earlier than 2015-06-29 | M. Irurita | 16h | ܁ࢽ | Late |
| 861 | 1.1.3.2.5.9.1.2 | Present inventory to ERMC |  | 2d | 2015-06-29 | 2015-06-30 | 523d | start no earlier than 2015-06-29 | M. Irurita | 16h | ܁ࢽ | Late |
| 862 | 1.1.3.2.5.9.1.3 | Foreign Accounts Material Risk Inventory Prepared | milestone | 0d | 2015-06-30 | 2015-06-30 | 524d | start no earlier than 2015-06-30 |  |  | ܁ࢽ | Late |
| 863 | 1.1.3.2.5.10 | **MILESTONE:Human Resources Material Risk Inventory** |  | 24d | 2015-05-28 | 2015-06-30 | 523d |  |  | 168h | ܁ࢽ |  |
| 864 | 1.1.3.2.5.10.1 | **TASK:Human Resources Material Risk Inventory** |  | 24d | 2015-05-28 | 2015-06-30 | 523d |  |  | 168h | ܁ࢽ |  |
| 865 | 1.1.3.2.5.10.1.1 | Create risk Inventory |  | 17d | 2015-05-28 | 2015-06-19 | 530d | start no earlier than 2015-05-28 | C. Melendez | 136h | ܁ࢽ | Late |
| 866 | 1.1.3.2.5.10.1.2 | Deliver Final Inventory to PR and SHUSA ERM |  | 2d | 2015-06-29 | 2015-06-30 | 523d | start no earlier than 2015-06-29 | C. Melendez | 16h | ܁ࢽ | Late |
| 867 | 1.1.3.2.5.10.1.3 | Present inventory to ERMC |  | 2d | 2015-06-29 | 2015-06-30 | 523d | start no earlier than 2015-06-29 | C. Melendez | 16h | ܁ࢽ | Late |
| 868 | 1.1.3.2.5.10.1.4 | Human Resources Material Risk Inventory Prepared | milestone | 0d | 2015-06-30 | 2015-06-30 | 524d | start no earlier than 2015-06-30 |  |  | ܁ࢽ | Late |
| 869 | 1.1.3.2.5.11 | **MILESTONE:Technology and Operations Material Risk Inventory** |  | 2d | 2015-06-29 | 2015-06-30 | 523d |  |  | 32h | ܁ࢽ |  |
| 870 | 1.1.3.2.5.11.1 | **TASK:Technology and Operations Material Risk Inventory** |  | 2d | 2015-06-29 | 2015-06-30 | 523d |  |  | 32h | ܁ࢽ |  |
| 871 | 1.1.3.2.5.11.1.1 | Deliver Final Inventory to PR and SHUSA ERM |  | 2d | 2015-06-29 | 2015-06-30 | 523d | start no earlier than 2015-06-29 | J. Caceres | 16h | ܁ࢽ | Late |
| 872 | 1.1.3.2.5.11.1.2 | Present inventory to ERMC |  | 2d | 2015-06-29 | 2015-06-30 | 523d | start no earlier than 2015-06-29 | J. Caceres | 16h | ܁ࢽ | Late |
| 873 | 1.1.3.2.5.11.1.3 | Technology and Operations Material Risk Inventory Prepared | milestone | 0d | 2015-06-30 | 2015-06-30 | 524d | start no earlier than 2015-06-30 |  |  | ܁ࢽ | Late |
| 874 | 1.1.3.2.5.12 | **MILESTONE:Legal Material Risk Inventory** |  | 2d | 2015-06-29 | 2015-06-30 | 523d |  |  | 32h | ܁ࢽ |  |
| 875 | 1.1.3.2.5.12.1 | **TASK:Legal Material Risk Inventory** |  | 2d | 2015-06-29 | 2015-06-30 | 523d |  |  | 32h | ܁ࢽ |  |
| 876 | 1.1.3.2.5.12.1.1 | Deliver Final Inventory to PR and SHUSA ERM |  | 2d | 2015-06-29 | 2015-06-30 | 523d | start no earlier than 2015-06-29 | R. Bonilla | 16h | ܁ࢽ | Late |
| 877 | 1.1.3.2.5.12.1.2 | Present inventory to ERMC |  | 2d | 2015-06-29 | 2015-06-30 | 523d | start no earlier than 2015-06-29 | R. Bonilla | 16h | ܁ࢽ | Late |
| 878 | 1.1.3.2.5.12.1.3 | Legal Material Risk Inventory Prepared | milestone | 0d | 2015-06-30 | 2015-06-30 | 524d | start no earlier than 2015-06-30 |  |  | ܁ࢽ | Late |

| ID | WBS | Task | Type | Duration | Start | Finish | Predecessors | Total slack | Free slack | Constraint | Resources | Work | Entity | Tracking Status | Text13 |
| --- | --- | --- | --- | --- | --- | --- | --- | --- | --- | --- | --- | --- | --- | --- | --- |
| 879 | 1.1.3.2.5.13 | **MILESTONE:Finance Material Risk Inventory** |  | 2d | 2015-06-29 | 2015-06-30 |  | 523d |  |  |  | 32h | ܁ࢽ |  |  |
| 880 | 1.1.3.2.5.13.1 | **TASK:Finance Material Risk Inventory** |  | 2d | 2015-06-29 | 2015-06-30 |  | 523d |  |  |  | 32h | ܁ࢽ |  |  |
| 881 | 1.1.3.2.5.13.1.1 | Deliver Final Inventory to PR and SHUSA ERM |  | 2d | 2015-06-29 | 2015-06-30 |  | 523d |  | start no earlier than 2015-06-29 | A. Guzman | 16h | ܁ࢽ | Late |  |
| 882 | 1.1.3.2.5.13.1.2 | Present inventory to ERMC |  | 2d | 2015-06-29 | 2015-06-30 |  | 523d |  | start no earlier than 2015-06-29 | A. Guzman | 16h | ܁ࢽ | Late |  |
| 883 | 1.1.3.2.5.13.1.3 | Finance Material Risk Inventory Prepared | milestone | 0d | 2015-06-30 | 2015-06-30 |  | 524d |  | start no earlier than 2015-06-30 |  |  | ܁ࢽ | Late |  |
| 884 | 1.1.3.2.5.14 | **MILESTONE:SFS - Island Finance Material Risk Inventory** |  | 2d | 2015-06-29 | 2015-06-30 |  | 523d |  |  |  | 32h | ܁ࢽ |  |  |
| 885 | 1.1.3.2.5.14.1 | **TASK:SFS - Island Finance Material Risk Inventory** |  | 2d | 2015-06-29 | 2015-06-30 |  | 523d |  |  |  | 32h | ܁ࢽ |  |  |
| 886 | 1.1.3.2.5.14.1.1 | Deliver Final Inventory to PR and SHUSA ERM |  | 2d | 2015-06-29 | 2015-06-30 |  | 523d |  | start no earlier than 2015-06-29 | J. Villamil | 16h | ܁ࢽ | Late |  |
| 887 | 1.1.3.2.5.14.1.2 | Present inventory to ERMC |  | 2d | 2015-06-29 | 2015-06-30 |  | 523d |  | start no earlier than 2015-06-29 | J. Villamil | 16h | ܁ࢽ | Late |  |
| 888 | 1.1.3.2.5.14.1.3 | SFS - Island Finance Material Risk Inventory Prepared | milestone | 0d | 2015-06-30 | 2015-06-30 |  | 524d |  | start no earlier than 2015-06-30 |  |  | ܁ࢽ | Late |  |
| 889 | 1.1.3.2.5.15 | **MILESTONE:SFS - Special Assets Material Risk Inventory** |  | 2d | 2015-06-29 | 2015-06-30 |  | 523d |  |  |  | 32h | ܁ࢽ |  |  |
| 890 | 1.1.3.2.5.15.1 | **TASK:SFS - Special Assets Material Risk Inventory** |  | 2d | 2015-06-29 | 2015-06-30 |  | 523d |  |  |  | 32h | ܁ࢽ |  |  |
| 891 | 1.1.3.2.5.15.1.1 | Deliver Final Inventory to PR and SHUSA ERM |  | 2d | 2015-06-29 | 2015-06-30 |  | 523d |  | start no earlier than 2015-06-29 | M. Guiven | 16h | ܁ࢽ | Late |  |
| 892 | 1.1.3.2.5.15.1.2 | Present inventory to ERMC |  | 2d | 2015-06-29 | 2015-06-30 |  | 523d |  | start no earlier than 2015-06-29 | M. Guiven | 16h | ܁ࢽ | Late |  |
| 893 | 1.1.3.2.5.15.1.3 | SFS - Special Assets Material Risk Inventory Prepared | milestone | 0d | 2015-06-30 | 2015-06-30 |  | 524d |  | start no earlier than 2015-06-30 |  |  | ܁ࢽ | Late |  |
| 894 | 1.1.3.2.5.16 | **MILESTONE:Santander Overseas Bank - GBM Material Risk Inventory** |  | 2d | 2015-06-29 | 2015-06-30 |  | 523d |  |  |  | 32h | ܁ࢽ |  |  |
| 895 | 1.1.3.2.5.16.1 | **TASK:Santander Overseas Bank - GBM Material Risk Inventory** |  | 2d | 2015-06-29 | 2015-06-30 |  | 523d |  |  |  | 32h | ܁ࢽ |  |  |
| 896 | 1.1.3.2.5.16.1.1 | Deliver Final Inventory to PR and SHUSA ERM |  | 2d | 2015-06-29 | 2015-06-30 |  | 523d |  | start no earlier than 2015-06-29 | Diaz/Semidei | 16h | ܁ࢽ | Late |  |
| 897 | 1.1.3.2.5.16.1.2 | Present inventory to ERMC |  | 2d | 2015-06-29 | 2015-06-30 |  | 523d |  | start no earlier than 2015-06-29 | Diaz/Semidei | 16h | ܁ࢽ | Late |  |
| 898 | 1.1.3.2.5.16.1.3 | Santander Overseas Bank - GBM Material Risk Inventory Prepared | milestone | 0d | 2015-06-30 | 2015-06-30 |  | 524d |  | start no earlier than 2015-06-30 |  |  | ܁ࢽ | Late |  |
| 899 | 1.1.3.2.5.17 | **MILESTONE:Puerto Rico - Santander Bancorp Aggregation Workshops** |  | 19d? | 2015-07-01 | 2015-07-28 |  | 504d |  |  |  | 816h | ܁ࢽ |  | D. Fabricio |
| 900 | 1.1.3.2.5.17.1 | **TASK: Credit Risk Aggregation** |  | 19d? | 2015-07-01 | 2015-07-28 |  | 504d |  |  |  | 144h | ܁ࢽ |  | D. Fabricio |
| 901 | 1.1.3.2.5.17.1.1 | ERM disseminates Workshop Pre-Read Materials to Risk Managers |  | 7d? | 2015-07-01 | 2015-07-09 |  | 506d | 1d | start no earlier than 2015-07-01 | J. Jurado | 56h | ܁ࢽ | Late | D. Fabricio |
| 902 | 1.1.3.2.5.17.1.2 | ERM facilitates Aggregation and Enrichment Activities |  | 10d? | 2015-07-13 | 2015-07-24 | 901 | 505d |  | start no earlier than 2015-07-13 | J. Jurado | 80h | ܁ࢽ | Late | D. Fabricio |
| 903 | 1.1.3.2.5.17.1.3 | Risk Manager presents inventory to level II subcommittee |  | 1d? | 2015-07-27 | 2015-07-27 |  | 504d |  | start no earlier than 2015-07-27 | Cardona/Ramirez | 8h | ܁ࢽ | Late | D. Fabricio |
| 904 | 1.1.3.2.5.17.1.4 | Credit Risk Aggregation Prepared | milestone | 0d | 2015-07-28 | 2015-07-28 |  | 504d |  | start no earlier than 2015-07-28 |  |  | ܁ࢽ | Late |  |

| ID | WBS | Task | Type | Duration | Start | Finish | Predecessors | Total slack | Free slack | Constraint | Resources | Work | Entity | Text13 | Tracking Status | Dependency |
| --- | --- | --- | --- | --- | --- | --- | --- | --- | --- | --- | --- | --- | --- | --- | --- | --- |
| 905 | 1.1.3.2.5.17.2 | **TASK: Operational Risk Material Risk Aggregation** |  | 19d? | 2015-07-01 | 2015-07-28 |  | 504d |  |  |  | 144h | ܁ࢽ | D. Fabricio |  |  |
| 906 | 1.1.3.2.5.17.2.1 | ERM disseminates Workshop Pre-Read Materials to Risk Managers |  | 7d? | 2015-07-01 | 2015-07-09 |  | 506d | 1d | start no earlier than 2015-07-01 | J. Jurado | 56h | ܁ࢽ | D. Fabricio | Late |  |
| 907 | 1.1.3.2.5.17.2.2 | ERM facilitates Aggregation and Enrichment Activities |  | 10d? | 2015-07-13 | 2015-07-24 | 906 | 505d |  | start no earlier than 2015-07-13 | J. Jurado | 80h | ܁ࢽ | D. Fabricio | Late |  |
| 908 | 1.1.3.2.5.17.2.3 | Risk Manager presents inventory to level II subcommittee |  | 1d? | 2015-07-27 | 2015-07-27 |  | 504d |  | start no earlier than 2015-07-27 | G. Cupril | 8h | ܁ࢽ | D. Fabricio | Late |  |
| 909 | 1.1.3.2.5.17.2.4 | Operational Risk Material Risk Aggregation Prepared | milestone | 0d | 2015-07-28 | 2015-07-28 |  | 504d |  | start no earlier than 2015-07-28 |  |  | ܁ࢽ |  | Late |  |
| 910 | 1.1.3.2.5.17.3 | **TASK: Compliance Material Risk Aggregation** |  | 19d? | 2015-07-01 | 2015-07-28 |  | 504d |  |  |  | 144h | ܁ࢽ | D. Fabricio |  |  |
| 911 | 1.1.3.2.5.17.3.1 | ERM disseminates Workshop Pre-Read Materials to Risk Managers |  | 7d? | 2015-07-01 | 2015-07-09 |  | 506d | 1d | start no earlier than 2015-07-01 | J. Jurado | 56h | ܁ࢽ | D. Fabricio | Late |  |
| 912 | 1.1.3.2.5.17.3.2 | ERM facilitates Aggregation and Enrichment Workshop |  | 10d? | 2015-07-13 | 2015-07-24 | 911 | 505d |  | start no earlier than 2015-07-13 | J. Jurado | 80h | ܁ࢽ | D. Fabricio | Late |  |
| 913 | 1.1.3.2.5.17.3.3 | Risk Manager presents inventory to level II subcommittee |  | 1d? | 2015-07-27 | 2015-07-27 |  | 504d |  | start no earlier than 2015-07-27 | E. Rodriguez | 8h | ܁ࢽ | D. Fabricio | Late |  |
| 914 | 1.1.3.2.5.17.3.4 | Compliance Material Risk Aggregation Prepared | milestone | 0d | 2015-07-28 | 2015-07-28 |  | 504d |  | start no earlier than 2015-07-28 |  |  | ܁ࢽ |  | Late |  |
| 915 | 1.1.3.2.5.17.4 | **TASK: Model Material Risk Aggregation** |  | 19d? | 2015-07-01 | 2015-07-28 |  | 504d |  |  |  | 144h | ܁ࢽ | D. Fabricio |  |  |
| 916 | 1.1.3.2.5.17.4.1 | ERM disseminates Workshop Pre-Read Materials to Risk Managers |  | 7d? | 2015-07-01 | 2015-07-09 |  | 506d | 1d | start no earlier than 2015-07-01 | J. Jurado | 56h | ܁ࢽ | D. Fabricio | Late |  |
| 917 | 1.1.3.2.5.17.4.2 | ERM facilitates Aggregation and Enrichment Activities |  | 10d? | 2015-07-13 | 2015-07-24 | 916 | 505d |  | start no earlier than 2015-07-13 | J. Jurado | 80h | ܁ࢽ | D. Fabricio | Late |  |
| 918 | 1.1.3.2.5.17.4.3 | Risk Manager presents inventory to level II subcommittee |  | 1d? | 2015-07-27 | 2015-07-27 |  | 504d |  | start no earlier than 2015-07-27 | M. Bobonis | 8h | ܁ࢽ | D. Fabricio | Late |  |
| 919 | 1.1.3.2.5.17.4.4 | Model Material Risk Aggregation Prepared | milestone | 0d | 2015-07-28 | 2015-07-28 |  | 504d |  | start no earlier than 2015-07-28 |  |  | ܁ࢽ |  | Late |  |
| 920 | 1.1.3.2.5.17.5 | **TASK: Liquidity/Market Material Risk Aggregation** |  | 19d? | 2015-07-01 | 2015-07-28 |  | 504d |  |  |  | 144h | ܁ࢽ | D. Fabricio |  |  |
| 921 | 1.1.3.2.5.17.5.1 | ERM disseminates Workshop Pre-Read Materials to Risk Managers |  | 7d? | 2015-07-01 | 2015-07-09 |  | 506d | 1d | start no earlier than 2015-07-01 | J. Jurado | 56h | ܁ࢽ | D. Fabricio | Late |  |
| 922 | 1.1.3.2.5.17.5.2 | ERM facilitates Aggregation and Enrichment Activities |  | 10d? | 2015-07-13 | 2015-07-24 | 921 | 505d |  | start no earlier than 2015-07-13 | J. Jurado | 80h | ܁ࢽ | D. Fabricio | Late |  |
| 923 | 1.1.3.2.5.17.5.3 | Risk Manager presents inventory to level II subcommittee |  | 1d? | 2015-07-27 | 2015-07-27 |  | 504d |  | start no earlier than 2015-07-27 | Castro/Bruno | 8h | ܁ࢽ | D. Fabricio | Late |  |
| 924 | 1.1.3.2.5.17.5.4 | Liquidity/Market Material Risk Aggregation Prepared | milestone | 0d | 2015-07-28 | 2015-07-28 |  | 504d |  | start no earlier than 2015-07-28 |  |  | ܁ࢽ |  | Late |  |
| 925 | 1.1.3.2.5.17.6 | **TASK: Reputational/Strategic Material Risk Aggregation** |  | 19d? | 2015-07-01 | 2015-07-28 |  | 504d |  |  |  | 96h | ܁ࢽ | D. Fabricio |  |  |
| 926 | 1.1.3.2.5.17.6.1 | ERM disseminates Workshop Pre-Read Materials to Risk Managers |  | 7d? | 2015-07-01 | 2015-07-09 |  | 516d |  | start no earlier than 2015-07-01 | J. Jurado | 56h | ܁ࢽ | D. Fabricio | Late |  |
| 927 | 1.1.3.2.5.17.6.2 | ERM facilitates Aggregation and Enrichment Workshop |  | 4d? | 2015-07-20 | 2015-07-23 |  | 506d |  | start no earlier than 2015-07-20 | J. Jurado | 32h | ܁ࢽ | D. Fabricio | Late |  |
| 928 | 1.1.3.2.5.17.6.3 | Risk Manager presents inventory to level II subcommittee |  | 1d? | 2015-07-27 | 2015-07-27 |  | 504d |  | start no earlier than 2015-07-27 | A. Guzman | 8h | ܁ࢽ | D. Fabricio | Late |  |
| 929 | 1.1.3.2.5.17.6.4 | Reputational/Strategic Material Risk Aggregation Prepared | milestone | 0d | 2015-07-28 | 2015-07-28 |  | 504d | 0d | start no earlier than 2015-07-28 |  |  | ܁ࢽ |  | Late |  |
| 930 | 1.1.3.2.5.18 | MILESTONE:Present Results to PR Santander Bancorp ERMC |  | 25d | 2015-07-28 | 2015-08-31 |  | 479d |  | start no earlier than 2015-07-28 | J. Jurado | 200h | ܁ࢽ | D. Fabricio | Late |  |
| 931 | 1.1.3.2.5.19 | MILESTONE:Present Results to PR Santander Bancorp BERC |  | 25d | 2015-07-28 | 2015-08-31 |  | 479d |  | start no earlier than 2015-07-28 | J. Jurado | 200h | ܁ࢽ | D. Fabricio | Late |  |
| 932 | 1.1.3.2.5.20 | Present Puerto Rico Material Risks to CCAR | manual | 1d | 2015-09-01 | 2015-09-01 |  |  |  |  |  |  |  |  | Late |  |
| 933 | 1.1.3.2.5.21 | Deliver Puerto Rico Material Risks to CCAR and Capital Plan | milestone, manual | 0d | 2015-09-02 | 2015-09-02 |  |  |  |  |  |  |  |  | Late | ܁д |

| ID | WBS | Task | Type | Duration | Start | Finish | Total slack | Constraint | Resources | Work | Entity | Text13 | Tracking Status |
| --- | --- | --- | --- | --- | --- | --- | --- | --- | --- | --- | --- | --- | --- |
| 934 | 1.1.3.2.6 | **DELIVERABLE: Miami - Business Entity Material Risk Program** |  | 69d? | 2015-05-28 | 2015-09-02 | 68d |  |  | 1592h | ܁ࣄ | L. Madargia |  |
| 935 | 1.1.3.2.6.1 | **MILESTONE:Private Banking Material Risk Inventory** |  | 2d | 2015-06-29 | 2015-06-30 | 523d |  |  | 32h | ܁ࣄ |  |  |
| 936 | 1.1.3.2.6.1.1 | **TASK:Private Banking Material Risk Inventory** |  | 2d | 2015-06-29 | 2015-06-30 | 523d |  |  | 32h | ܁ࣄ |  |  |
| 937 | 1.1.3.2.6.1.1.1 | Deliver Final Inventory to Miami and SHUSA ERM |  | 2d | 2015-06-29 | 2015-06-30 | 523d | start no earlier than 2015-06-29 | Valdenbro/Moll/Alvarez | 16h | ܁ࣄ |  | Late |
| 938 | 1.1.3.2.6.1.1.2 | Present inventory to ERMC |  | 2d | 2015-06-29 | 2015-06-30 | 523d | start no earlier than 2015-06-29 | Valdenbro/Moll/Alvarez | 16h | ܁ࣄ |  | Late |
| 939 | 1.1.3.2.6.1.1.3 | Private Banking Material Risk Inventory Prepared | milestone | 0d | 2015-06-30 | 2015-06-30 | 524d | start no earlier than 2015-06-30 |  |  | ܁ࣄ |  | Late |
| 940 | 1.1.3.2.6.2 | **MILESTONE:Personal Lending Material Risk Inventory** |  | 2d | 2015-06-29 | 2015-06-30 | 523d |  |  | 32h | ܁ࣄ |  |  |
| 941 | 1.1.3.2.6.2.1 | **TASK:Personal Lending Material Risk Inventory** |  | 2d | 2015-06-29 | 2015-06-30 | 523d |  |  | 32h | ܁ࣄ |  |  |
| 942 | 1.1.3.2.6.2.1.1 | Deliver Final Inventory to Miami and SHUSA ERM |  | 2d | 2015-06-29 | 2015-06-30 | 523d | start no earlier than 2015-06-29 | F. Gonzales-Rivera | 16h | ܁ࣄ |  | Late |
| 943 | 1.1.3.2.6.2.1.2 | Present inventory to ERMC |  | 2d | 2015-06-29 | 2015-06-30 | 523d | start no earlier than 2015-06-29 | F. Gonzales-Rivera | 16h | ܁ࣄ |  | Late |
| 944 | 1.1.3.2.6.2.1.3 | Personal Lending Material Risk Inventory Prepared | milestone | 0d | 2015-06-30 | 2015-06-30 | 524d | start no earlier than 2015-06-30 |  |  | ܁ࣄ |  | Late |
| 945 | 1.1.3.2.6.3 | **MILESTONE:Human Resources Material Risk Inventory** |  | 2d | 2015-06-29 | 2015-06-30 | 523d |  |  | 32h | ܁ࣄ |  |  |
| 946 | 1.1.3.2.6.3.1 | **TASK:Human Resources Material Risk Inventory** |  | 2d | 2015-06-29 | 2015-06-30 | 523d |  |  | 32h | ܁ࣄ |  |  |
| 947 | 1.1.3.2.6.3.1.1 | Deliver Final Inventory to Miami and SHUSA ERM |  | 2d | 2015-06-29 | 2015-06-30 | 523d | start no earlier than 2015-06-29 | M. Mancini | 16h | ܁ࣄ |  | Late |
| 948 | 1.1.3.2.6.3.1.2 | Present inventory to ERMC |  | 2d | 2015-06-29 | 2015-06-30 | 523d | start no earlier than 2015-06-29 | M. Mancini | 16h | ܁ࣄ |  | Late |
| 949 | 1.1.3.2.6.3.1.3 | Human Resources Material Risk Inventory Prepared | milestone | 0d | 2015-06-30 | 2015-06-30 | 524d | start no earlier than 2015-06-30 |  |  | ܁ࣄ |  | Late |
| 950 | 1.1.3.2.6.4 | **MILESTONE:Finance and Accounting Material Risk Inventory** |  | 24d | 2015-05-28 | 2015-06-30 | 523d |  |  | 168h | ܁ࣄ |  |  |
| 951 | 1.1.3.2.6.4.1 | **TASK:Finance and Accounting Material Risk Inventory** |  | 24d | 2015-05-28 | 2015-06-30 | 523d |  |  | 168h | ܁ࣄ |  |  |
| 952 | 1.1.3.2.6.4.1.1 | Create risk Inventory |  | 17d | 2015-05-28 | 2015-06-19 | 530d | start no earlier than 2015-05-28 | E. Franco-Espinosa | 136h | ܁ࣄ |  | Late |
| 953 | 1.1.3.2.6.4.1.2 | Deliver Final Inventory to Miami and SHUSA ERM |  | 2d | 2015-06-29 | 2015-06-30 | 523d | start no earlier than 2015-06-29 | E. Franco-Espinosa | 16h | ܁ࣄ |  | Late |
| 954 | 1.1.3.2.6.4.1.3 | Present inventory to ERMC |  | 2d | 2015-06-29 | 2015-06-30 | 523d | start no earlier than 2015-06-29 | E. Franco-Espinosa | 16h | ܁ࣄ |  | Late |
| 955 | 1.1.3.2.6.4.1.4 | Finance and Accounting Material Risk Inventory Prepared | milestone | 0d | 2015-06-30 | 2015-06-30 | 524d | start no earlier than 2015-06-30 |  |  | ܁ࣄ |  | Late |
| 956 | 1.1.3.2.6.5 | **MILESTONE:Technology and Operations Material Risk Inventory** |  | 2d | 2015-06-29 | 2015-06-30 | 523d |  |  | 32h | ܁ࣄ |  |  |
| 957 | 1.1.3.2.6.5.1 | **TASK:Technology and Operations Material Risk Inventory** |  | 2d | 2015-06-29 | 2015-06-30 | 523d |  |  | 32h | ܁ࣄ |  |  |
| 958 | 1.1.3.2.6.5.1.1 | Deliver Final Inventory to Miami and SHUSA ERM |  | 2d | 2015-06-29 | 2015-06-30 | 523d | start no earlier than 2015-06-29 | R. Bucaro | 16h | ܁ࣄ |  | Late |
| 959 | 1.1.3.2.6.5.1.2 | Present inventory to ERMC |  | 2d | 2015-06-29 | 2015-06-30 | 523d | start no earlier than 2015-06-29 | R. Bucaro | 16h | ܁ࣄ |  | Late |
| 960 | 1.1.3.2.6.5.1.3 | Technology and Operations Material Risk Inventory Prepared | milestone | 0d | 2015-06-30 | 2015-06-30 | 524d | start no earlier than 2015-06-30 |  |  | ܁ࣄ |  | Late |

| ID | WBS | Task | Type | Duration | Start | Finish | Predecessors | Total slack | Free slack | Constraint | Resources | Work | Entity | Tracking Status |
| --- | --- | --- | --- | --- | --- | --- | --- | --- | --- | --- | --- | --- | --- | --- |
| 961 | 1.1.3.2.6.6 | **MILESTONE:Legal Material Risk Inventory** |  | 2d | 2015-06-29 | 2015-06-30 |  | 523d |  |  |  | 32h | ܁ࣄ |  |
| 962 | 1.1.3.2.6.6.1 | **TASK:Legal Material Risk Inventory** |  | 2d | 2015-06-29 | 2015-06-30 |  | 523d |  |  |  | 32h | ܁ࣄ |  |
| 963 | 1.1.3.2.6.6.1.1 | Deliver Final Inventory to Miami and SHUSA ERM |  | 2d | 2015-06-29 | 2015-06-30 |  | 523d |  | start no earlier than 2015-06-29 | J. Villamil-Morel | 16h | ܁ࣄ | Late |
| 964 | 1.1.3.2.6.6.1.2 | Present inventory to ERMC |  | 2d | 2015-06-29 | 2015-06-30 |  | 523d |  | start no earlier than 2015-06-29 | J. Villamil-Morel | 16h | ܁ࣄ | Late |
| 965 | 1.1.3.2.6.6.1.3 | Legal Material Risk Inventory Prepared | milestone | 0d | 2015-06-30 | 2015-06-30 |  | 524d |  | start no earlier than 2015-06-30 |  |  | ܁ࣄ | Late |
| 966 | 1.1.3.2.6.7 | **MILESTONE:Miami Aggregation Workshops** |  | 19d? | 2015-07-01 | 2015-07-28 |  | 504d |  |  |  | 864h | ܁ࣄ |  |
| 967 | 1.1.3.2.6.7.1 | **TASK: Credit Risk Aggregation** |  | 19d? | 2015-07-01 | 2015-07-28 |  | 504d |  |  |  | 144h | ܁ࣄ |  |
| 968 | 1.1.3.2.6.7.1.1 | ERM disseminates Workshop Pre-Read Materials to Risk Managers |  | 7d? | 2015-07-01 | 2015-07-09 |  | 506d | 1d | start no earlier than 2015-07-01 | P. Prado | 56h | ܁ࣄ | Late |
| 969 | 1.1.3.2.6.7.1.2 | ERM facilitates Aggregation and Enrichment Activities |  | 10d? | 2015-07-13 | 2015-07-24 | 968 | 505d |  | start no earlier than 2015-07-13 | P. Prado | 80h | ܁ࣄ | Late |
| 970 | 1.1.3.2.6.7.1.3 | Risk Manager presents inventory to level II subcommittee |  | 1d? | 2015-07-27 | 2015-07-27 |  | 504d |  | start no earlier than 2015-07-27 | F. Rivera | 8h | ܁ࣄ | Late |
| 971 | 1.1.3.2.6.7.1.4 | Credit Risk Aggregation Prepared | milestone | 0d | 2015-07-28 | 2015-07-28 |  | 504d |  | start no earlier than 2015-07-28 |  |  | ܁ࣄ | Late |
| 972 | 1.1.3.2.6.7.2 | **TASK: Operational Risk Material Risk Aggregation** |  | 19d? | 2015-07-01 | 2015-07-28 |  | 504d |  |  |  | 144h | ܁ࣄ |  |
| 973 | 1.1.3.2.6.7.2.1 | ERM disseminates Workshop Pre-Read Materials to Risk Managers |  | 7d? | 2015-07-01 | 2015-07-09 |  | 506d | 1d | start no earlier than 2015-07-01 | P. Prado | 56h | ܁ࣄ | Late |
| 974 | 1.1.3.2.6.7.2.2 | ERM facilitates Aggregation and Enrichment Activities |  | 10d? | 2015-07-13 | 2015-07-24 | 973 | 505d |  | start no earlier than 2015-07-13 | P. Prado | 80h | ܁ࣄ | Late |
| 975 | 1.1.3.2.6.7.2.3 | Risk Manager presents inventory to level II subcommittee |  | 1d? | 2015-07-27 | 2015-07-27 |  | 504d |  | start no earlier than 2015-07-27 | M. Galigarcia | 8h | ܁ࣄ | Late |
| 976 | 1.1.3.2.6.7.2.4 | Operational Risk Material Risk Aggregation Prepared | milestone | 0d | 2015-07-28 | 2015-07-28 |  | 504d |  | start no earlier than 2015-07-28 |  |  | ܁ࣄ | Late |
| 977 | 1.1.3.2.6.7.3 | **TASK: Compliance Material Risk Aggregation** |  | 19d? | 2015-07-01 | 2015-07-28 |  | 504d |  |  |  | 144h | ܁ࣄ |  |
| 978 | 1.1.3.2.6.7.3.1 | ERM disseminates Workshop Pre-Read Materials to Risk Managers |  | 7d? | 2015-07-01 | 2015-07-09 |  | 506d | 1d | start no earlier than 2015-07-01 | P. Prado | 56h | ܁ࣄ | Late |
| 979 | 1.1.3.2.6.7.3.2 | ERM facilitates Aggregation and Enrichment Activities |  | 10d? | 2015-07-13 | 2015-07-24 | 978 | 505d |  | start no earlier than 2015-07-13 | P. Prado | 80h | ܁ࣄ | Late |
| 980 | 1.1.3.2.6.7.3.3 | Risk Manager presents inventory to level II subcommittee |  | 1d? | 2015-07-27 | 2015-07-27 |  | 504d |  | start no earlier than 2015-07-27 | P. Prado | 8h | ܁ࣄ | Late |
| 981 | 1.1.3.2.6.7.3.4 | Compliance Material Risk Aggregation Prepared | milestone | 0d | 2015-07-28 | 2015-07-28 |  | 504d |  | start no earlier than 2015-07-28 |  |  | ܁ࣄ | Late |
| 982 | 1.1.3.2.6.7.4 | **TASK: Model Material Risk Aggregation** |  | 19d? | 2015-07-01 | 2015-07-28 |  | 504d |  |  |  | 144h | ܁ࣄ |  |
| 983 | 1.1.3.2.6.7.4.1 | ERM disseminates Workshop Pre-Read Materials to Risk Managers |  | 7d? | 2015-07-01 | 2015-07-09 |  | 506d | 1d | start no earlier than 2015-07-01 | P. Prado | 56h | ܁ࣄ | Late |
| 984 | 1.1.3.2.6.7.4.2 | ERM facilitates Aggregation and Enrichment Workshop |  | 10d? | 2015-07-13 | 2015-07-24 | 983 | 505d |  | start no earlier than 2015-07-13 | P. Prado | 80h | ܁ࣄ | Late |
| 985 | 1.1.3.2.6.7.4.3 | Risk Manager presents inventory to level II subcommittee |  | 1d? | 2015-07-27 | 2015-07-27 |  | 504d |  | start no earlier than 2015-07-27 | R. Fahs | 8h | ܁ࣄ | Late |
| 986 | 1.1.3.2.6.7.4.4 | Model Material Risk Aggregation Prepared | milestone | 0d | 2015-07-28 | 2015-07-28 |  | 504d |  | start no earlier than 2015-07-28 |  |  | ܁ࣄ | Late |

| ID | WBS | Task | Type | Duration | Start | Finish | Predecessors | Total slack | Free slack | Constraint | Resources | Work | Entity | Tracking Status | Dependency |
| --- | --- | --- | --- | --- | --- | --- | --- | --- | --- | --- | --- | --- | --- | --- | --- |
| 987 | 1.1.3.2.6.7.5 | **TASK: Liquidity/Market Material Risk Aggregation** |  | 19d? | 2015-07-01 | 2015-07-28 |  | 504d |  |  |  | 144h | ܁ࣄ |  |  |
| 988 | 1.1.3.2.6.7.5.1 | ERM disseminates Workshop Pre-Read Materials to Risk Managers |  | 7d? | 2015-07-01 | 2015-07-09 |  | 506d | 1d | start no earlier than 2015-07-01 | P. Prado | 56h | ܁ࣄ | Late |  |
| 989 | 1.1.3.2.6.7.5.2 | ERM facilitates Aggregation and Enrichment Activities |  | 10d? | 2015-07-13 | 2015-07-24 | 988 | 505d |  | start no earlier than 2015-07-13 | P. Prado | 80h | ܁ࣄ | Late |  |
| 990 | 1.1.3.2.6.7.5.3 | Risk Manager presents inventory to level II subcommittee |  | 1d? | 2015-07-27 | 2015-07-27 |  | 504d |  | start no earlier than 2015-07-27 | Rivera/Fernandez | 8h | ܁ࣄ | Late |  |
| 991 | 1.1.3.2.6.7.5.4 | Liquidity/Market Material Risk Aggregation Prepared | milestone | 0d | 2015-07-28 | 2015-07-28 |  | 504d |  | start no earlier than 2015-07-28 |  |  | ܁ࣄ | Late |  |
| 992 | 1.1.3.2.6.7.6 | **TASK: Reputational/Strategic Material Risk Aggregation** |  | 19d? | 2015-07-01 | 2015-07-28 |  | 504d |  |  |  | 144h | ܁ࣄ |  |  |
| 993 | 1.1.3.2.6.7.6.1 | ERM disseminates Workshop Pre-Read Materials to Risk Managers |  | 7d? | 2015-07-01 | 2015-07-09 |  | 506d | 1d | start no earlier than 2015-07-01 | P. Prado | 56h | ܁ࣄ | Late |  |
| 994 | 1.1.3.2.6.7.6.2 | ERM facilitates Aggregation and Enrichment Workshop |  | 10d? | 2015-07-13 | 2015-07-24 | 993 | 505d |  | start no earlier than 2015-07-13 | P. Prado | 80h | ܁ࣄ | Late |  |
| 995 | 1.1.3.2.6.7.6.3 | Risk Manager presents inventory to level II subcommittee |  | 1d? | 2015-07-27 | 2015-07-27 |  | 504d |  | start no earlier than 2015-07-27 | Rivera/Fernandez | 8h | ܁ࣄ | Late |  |
| 996 | 1.1.3.2.6.7.6.4 | Reputational/Strategic Material Risk Aggregation Prepared | milestone | 0d | 2015-07-28 | 2015-07-28 |  | 504d | 0d | start no earlier than 2015-07-28 |  |  | ܁ࣄ | Late |  |
| 997 | 1.1.3.2.6.8 | MILESTONE:Present Miami to SCUSA ERMC |  | 25d | 2015-07-28 | 2015-08-31 |  | 479d |  | start no earlier than 2015-07-28 | P. Prado | 200h | ܁ࣄ | Late |  |
| 998 | 1.1.3.2.6.9 | MILESTONE:Present Miami to SCUSA BERC |  | 25d | 2015-07-28 | 2015-08-31 |  | 479d |  | start no earlier than 2015-07-28 | P. Prado | 200h | ܁ࣄ | Late |  |
| 999 | 1.1.3.2.6.10 | Present Miami Material Risks to CCAR | manual | 1d | 2015-09-01 | 2015-09-01 |  |  |  |  |  |  |  | Late |  |
| 1000 | 1.1.3.2.6.11 | Deliver Miami Material Risks to CCAR and Capital Plan | milestone, manual | 0d | 2015-09-02 | 2015-09-02 |  |  |  |  |  |  |  | Late | ܁д |
| 1001 | 1.1.3.3 | **Review Foundational Risk ID Processes and Build Multi-Year Enhancement Objectives** |  | 51d | 2016-01-18 | 2016-03-28 |  | 329d |  |  |  |  | ܁ࢹ |  |  |
| 1002 | 1.1.3.3.1 | **DELIVERABLE: Assess Foundational Risk Processes and ensure complete foundational risk inventory is in place** |  | 10d | 2016-01-18 | 2016-01-29 |  | 370d |  |  |  |  | ܁ࢹ |  |  |
| 1003 | 1.1.3.3.1.1 | **MILESTONE: Assess Foundational Risk Processes and ensure complete foundational risk inventory is in place** |  | 10d | 2016-01-18 | 2016-01-29 |  | 370d |  |  |  |  | ܁ࢹ |  |  |
| 1004 | 1.1.3.3.1.1.1 | Identify existing Foundational Risk Processes |  | 10d | 2016-01-18 | 2016-01-29 |  | 370d |  | start no earlier than 2016-01-18 |  |  | ܁ࢹ | Late |  |
| 1005 | 1.1.3.3.1.1.2 | Confirm and validated foundational risk inventory - develop or enhance as needed |  | 10d | 2016-01-18 | 2016-01-29 |  | 370d |  | start no earlier than 2016-01-18 |  |  | ܁ࢹ | Late |  |
| 1006 | 1.1.3.3.1.1.3 | MILESTONE: Landscape of Foundational Risk Processes and risk inventory confirmed | milestone | 0d | 2016-01-29 | 2016-01-29 |  | 371d |  | start no earlier than 2016-01-29 |  |  | ܁ࢹ | Late |  |
| 1007 | 1.1.3.3.2 | **DELIVERABLE: Review each Foundational Risk Process, identify deficient processes, and use gap analyses to determine how to optimize processes** |  | 31d | 2016-02-01 | 2016-03-14 |  | 339d |  |  |  |  | ܁ࢹ |  |  |
| 1008 | 1.1.3.3.2.1 | **MILESTONE: Review each Foundational Risk Process, identify deficient processes, and use gap analyses to determine how to optimize processes** |  | 31d | 2016-02-01 | 2016-03-14 |  | 339d |  |  |  |  | ܁ࢹ |  |  |
| 1009 | 1.1.3.3.2.1.1 | Review and assess each Foundational Risk Process |  | 31d | 2016-02-01 | 2016-03-14 |  | 339d |  | start no earlier than 2016-02-01 |  |  | ܁ࢹ | Late |  |
| 1010 | 1.1.3.3.2.1.2 | Determine optimal future state for each process |  | 31d | 2016-02-01 | 2016-03-14 |  | 339d |  | start no earlier than 2016-02-01 |  |  | ܁ࢹ | Late |  |
| 1011 | 1.1.3.3.2.1.3 | Perform gap analyses for processes determined to be deficient |  | 31d | 2016-02-01 | 2016-03-14 |  | 339d |  | start no earlier than 2016-02-01 |  |  | ܁ࢹ | Late |  |
| 1012 | 1.1.3.3.2.1.4 | MILESTONE: Each Foundational Risk Process reviewed and assessed | milestone | 0d | 2016-03-14 | 2016-03-14 |  | 340d |  | start no earlier than 2016-03-14 |  |  | ܁ࢹ | Late |  |

| ID | WBS | Task | Type | Duration | Start | Finish | Total slack | Constraint | Entity | Tracking Status | Dependency |
| --- | --- | --- | --- | --- | --- | --- | --- | --- | --- | --- | --- |
| 1013 | 1.1.3.3.3 | **DELIVERABLE: Develop remediation of Foundational Risk Process plan** |  | 11d | 2016-03-14 | 2016-03-28 | 329d |  | ܁ࢹ |  |  |
| 1014 | 1.1.3.3.3.1 | **MILESTONE: Develop remediation of Foundational Risk Process plan** |  | 11d | 2016-03-14 | 2016-03-28 | 329d |  | ܁ࢹ |  |  |
| 1015 | 1.1.3.3.3.1.1 | Identify deficiencies in current plan |  | 11d | 2016-03-14 | 2016-03-28 | 329d | start no earlier than 2016-03-14 | ܁ࢹ | Late |  |
| 1016 | 1.1.3.3.3.1.2 | Determine optimal state for plan |  | 11d | 2016-03-14 | 2016-03-28 | 329d | start no earlier than 2016-03-14 | ܁ࢹ | Late |  |
| 1017 | 1.1.3.3.3.1.3 | Perform gap analysis in order to develop plan remediation |  | 11d | 2016-03-14 | 2016-03-28 | 329d | start no earlier than 2016-03-14 | ܁ࢹ | Late |  |
| 1018 | 1.1.3.3.3.1.4 | MILESTONE: Plan remediation developed | milestone | 0d | 2016-03-28 | 2016-03-28 | 330d | start no earlier than 2016-03-28 | ܁ࢹ | Late |  |
| 1019 | 1.1.3.4 | **Year 2 and Year 3 Priorities** |  | 315d | 2015-11-02 | 2017-01-13 | 59d |  | ܁ࢹ | Late |  |
| 1020 | 1.1.3.4.1 | **DELIVERABLE: Updated risk taxonomy** |  | 21d | 2015-11-02 | 2015-11-30 | 414d |  | ܁ࢹ |  |  |
| 1021 | 1.1.3.4.1.1 | MILESTONE: Draft of updated risk taxonomy based on 2015 results |  | 8d | 2015-11-02 | 2015-11-11 | 427d | start no earlier than 2015-11-02 | ܁ࢹ | Late |  |
| 1022 | 1.1.3.4.1.2 | MILESTONE: Final updated risk taxonomy based on 2015 results |  | 14d | 2015-11-11 | 2015-11-30 | 414d | start no earlier than 2015-11-11 | ܁ࢹ | Late |  |
| 1023 | 1.1.3.4.2 | **DELIVERABLE: Updated material risk inventory template and guidance** |  | 23d | 2015-12-01 | 2015-12-31 | 391d |  | ܁ࢹ |  |  |
| 1024 | 1.1.3.4.2.1 | MILESTONE: Updated material risk inventory template |  | 23d | 2015-12-01 | 2015-12-31 | 391d | start no earlier than 2015-12-01 | ܁ࢹ | Late |  |
| 1025 | 1.1.3.4.2.2 | MILESTONE: Updated material risk guidance |  | 23d | 2015-12-01 | 2015-12-31 | 391d | start no earlier than 2015-12-01 | ܁ࢹ | Late |  |
| 1026 | 1.1.3.4.2.3 | MILESTONE: Updated aggregation and enrichment guidance |  | 23d | 2015-12-01 | 2015-12-31 | 391d | start no earlier than 2015-12-01 | ܁ࢹ | Late |  |
| 1027 | 1.1.3.4.3 | **DELIVERABLE: Automated interface for risk inventory template** |  | 65d | 2016-01-01 | 2016-03-31 | 15d |  | ܁ࢹ |  |  |
| 1028 | 1.1.3.4.3.1 | MILESTONE: Technology requirements and BRD for risk inventory template web interface |  | 14d | 2016-01-01 | 2016-01-20 | 377d | start no earlier than 2016-01-01 | ܁ࢹ | Late |  |
| 1029 | 1.1.3.4.3.2 | Deliver Technology requirements and BRD for Risk inventory template web interface | milestone, manual | 0d | 2016-01-22 | 2016-01-22 |  |  |  | Late | ܁д |
| 1030 | 1.1.3.4.3.3 | MILESTONE: Implementation of web interface for risk inventory template |  | 24d | 2016-01-20 | 2016-02-22 | 354d | start no earlier than 2016-01-20 | ܁ࢹ | Late |  |
| 1031 | 1.1.3.4.3.4 | MILESTONE: Web interface pilot with selected business entities |  | 20d | 2016-02-22 | 2016-03-18 | 335d | start no earlier than 2016-02-22 | ܁ࢹ | Late |  |
| 1032 | 1.1.3.4.3.5 | MILESTONE: Roll out of web interface across business entities |  | 10d | 2016-03-18 | 2016-03-31 | 326d | start no earlier than 2016-03-18 | ܁ࢹ | Late |  |
| 1033 | 1.1.3.4.4 | **DELIVERABLE: Training materials, policies and procedures based on updated process** |  | 43d | 2016-04-01 | 2016-05-31 | 283d |  | ܁ࢹ |  |  |
| 1034 | 1.1.3.4.4.1 | MILESTONE: Development and rollout of training package for material risk ID process |  | 43d | 2016-04-01 | 2016-05-31 | 283d | start no earlier than 2016-04-01 | ܁ࢹ | Late |  |
| 1035 | 1.1.3.4.4.2 | MILESTONE: Update and rollout of Policies and procedures for material risk ID process |  | 43d | 2016-04-01 | 2016-05-31 | 283d | start no earlier than 2016-04-01 | ܁ࢹ | Late |  |
| 1036 | 1.1.3.4.5 | **DELIVERABLE: Database for foundational inputs and data sources for risk ID** |  | 176d | 2016-03-15 | 2016-11-15 | 163d |  | ܁ࢹ |  |  |
| 1037 | 1.1.3.4.5.1 | MILESTONE: Development of technology requirements and BRDs for database with business entity level foundational inputs and data sources |  | 24d | 2016-03-15 | 2016-04-15 | 315d | start no earlier than 2016-03-15 | ܁ࢹ | Late |  |
| 1038 | 1.1.3.4.5.2 | MILESTONE: Implementation of database for foundational inputs and data sources |  | 110d | 2016-03-15 | 2016-08-15 | 229d | start no earlier than 2016-03-15 | ܁ࢹ | Late |  |
| 1039 | 1.1.3.4.5.3 | MILESTONE: Database pilot for selected business entities |  | 23d | 2016-08-15 | 2016-09-14 | 207d | start no earlier than 2016-08-15 | ܁ࢹ | Late |  |
| 1040 | 1.1.3.4.5.4 | MILESTONE: Roll out of database across business entities |  | 45d | 2016-09-14 | 2016-11-15 | 163d | start no earlier than 2016-09-14 | ܁ࢹ | Late |  |

| ID | WBS | Task | Type | Duration | Start | Finish | Predecessors | Complete | Remaining | Total slack | Free slack | Constraint | Work | Actual work | Entity | Tracking Status |
| --- | --- | --- | --- | --- | --- | --- | --- | --- | --- | --- | --- | --- | --- | --- | --- | --- |
| 1041 | 1.1.3.4.6 | **DELIVERABLE: Training materials, policies and procedures for risk ID database and process** |  | 44d | 2016-11-15 | 2017-01-13 |  |  |  | 120d |  |  |  |  | ܁ࢹ |  |
| 1042 | 1.1.3.4.6.1 | MILESTONE: Training package for material risk ID database and process developed and rolled out |  | 44d | 2016-11-15 | 2017-01-13 |  |  |  | 120d |  | start no earlier than 2016-11-15 |  |  | ܁ࢹ | Late |
| 1043 | 1.1.3.4.6.2 | MILESTONE: Policies and procedures for material risk ID process updated and rolled out |  | 44d | 2016-11-15 | 2017-01-13 |  |  |  | 120d |  | start no earlier than 2016-11-15 |  |  | ܁ࢹ | Late |
| 1044 | 1.1.4 | **Risk Management Processes** |  | 512d | 2014-10-02 A | 2016-09-16 |  | 31% | 352.24d | 205d |  |  | 7408h | 2632h |  | Late |
| 1045 | 1.1.4.1 | **Risk Management Processes Deliverables** |  | 202d | 2015-12-09 | 2016-09-16 |  |  |  | 206d |  |  |  |  |  |  |
| 1046 | 1.1.4.1.1 | DELIVERABLE: Wave 1 Risk Types A and B Implemented at SHUSA, SBNA, SCUSA and Other Entities | milestone | 0d | 2015-12-09 | 2015-12-09 |  |  |  | 408d |  | start no earlier than 2015-12-09 |  |  |  | Late |
| 1047 | 1.1.4.1.2 | DELIVERABLE: Wave 2 Risk Types C and D Implemented at SHUSA, SBNA, SCUSA and Other Entities | milestone | 0d | 2016-03-01 | 2016-03-01 |  |  |  | 349d |  | start no earlier than 2016-03-01 |  |  |  | Late |
| 1048 | 1.1.4.1.3 | DELIVERABLE: Wave 3 Risk Types E and F Implemented at SHUSA, SBNA, SCUSA and Other Entities | milestone | 0d | 2016-05-24 | 2016-05-24 |  |  |  | 289d |  | start no earlier than 2016-05-24 |  |  |  | Late |
| 1049 | 1.1.4.1.4 | DELIVERABLE: Implementation of new ratings to reflect statistically valid rating methodology (CRE Q1-16 /C&I Q2-16) | milestone | 0d | 2016-03-31 | 2016-03-31 |  |  |  | 327d |  | start no earlier than 2016-03-31 |  |  |  | Late |
| 1050 | 1.1.4.1.5 | DELIVERABLE: Liquidity Stress Test Challenge Process Framework | milestone | 0d | 2015-12-31 | 2015-12-31 |  |  |  | 392d |  | start no earlier than 2015-12-31 |  |  |  | Late |
| 1051 | 1.1.4.1.6 | DELIVERABLE: Targeted, high-level review of wholesale credit | milestone | 0d | 2016-04-29 | 2016-04-29 |  |  |  | 306d |  | start no earlier than 2016-04-29 |  |  |  | Late |
| 1052 | 1.1.4.1.7 | DELIVERABLE: Gap analyses and remediation plans for the management of credit, market and trading, interest rate and strategic/reputational risk | milestone | 0d | 2016-09-16 | 2016-09-16 |  |  |  | 206d |  | start no earlier than 2016-09-16 |  |  |  | Late |
| 1053 | 1.1.4.2 | **Risk Type Implementation for SHUSA, SBNA, and SCUSA (6 Risk Types)** |  | 182d | 2015-09-11 | 2016-05-24 |  |  |  | 289d |  |  |  |  |  |  |
| 1054 | 1.1.4.2.1 | **DELIVERABLE: Wave 1 Risk Types A and B Implemented at SHUSA, SBNA, SCUSA and Other Entities** |  | 63d | 2015-09-11 | 2015-12-09 |  |  |  | 408d |  |  |  |  |  |  |
| 1055 | 1.1.4.2.1.1 | **MILESTONE: Risk type A (Most likely Credit) Framework Implemented at SHUSA, SBNA, and SCUSA** |  | 63d | 2015-09-11 | 2015-12-09 |  |  |  | 408d |  |  |  |  |  |  |
| 1056 | 1.1.4.2.1.1.1 | Implement Risk type A (Most likely Credit) Framework at SHUSA |  | 63d | 2015-09-11 | 2015-12-08 |  |  |  | 408d | 0d | start no earlier than 2015-09-11 |  |  | ܁ࢹ | Late |
| 1057 | 1.1.4.2.1.1.2 | Implement Risk type A (Most likely Credit) Framework at SBNA |  | 63d | 2015-09-11 | 2015-12-08 |  |  |  | 408d | 0d | start no earlier than 2015-09-11 |  |  | ܁ࢺ | Late |
| 1058 | 1.1.4.2.1.1.3 | Implement Risk type A (Most likely Credit) Framework at SCUSA |  | 63d | 2015-09-11 | 2015-12-08 |  |  |  | 408d | 0d | start no earlier than 2015-09-11 |  |  | ܁ࢻ | Late |
| 1059 | 1.1.4.2.1.1.4 | Risk type A (Most likely Credit) Framework Implemented at SHUSA, SBNA, and SCUSA | milestone | 0d | 2015-12-09 | 2015-12-09 | 1058, 1057, 1056 |  |  | 408d |  | start no earlier than 2015-12-09 |  |  |  | Late |
| 1060 | 1.1.4.2.1.2 | **MILESTONE: Risk type B (Most likely ERM + RAS + Strategic) Framework Implemented at SHUSA, SBNA, and SCUSA** |  | 63d | 2015-09-11 | 2015-12-09 |  |  |  | 408d |  |  |  |  |  |  |
| 1061 | 1.1.4.2.1.2.1 | Implement Risk type B (Most likely ERM + RAS + Strategic)) Framework at SHUSA |  | 63d | 2015-09-11 | 2015-12-08 |  |  |  | 408d | 0d | start no earlier than 2015-09-11 |  |  | ܁ࢹ | Late |
| 1062 | 1.1.4.2.1.2.2 | Implement Risk type B (Most likely ERM + RAS + Strategic) Framework at SBNA |  | 63d | 2015-09-11 | 2015-12-08 |  |  |  | 408d | 0d | start no earlier than 2015-09-11 |  |  | ܁ࢺ | Late |
| 1063 | 1.1.4.2.1.2.3 | Implement Risk type B (Most likely ERM + RAS + Strategic) Framework at SCUSA |  | 63d | 2015-09-11 | 2015-12-08 |  |  |  | 408d | 0d | start no earlier than 2015-09-11 |  |  | ܁ࢻ | Late |
| 1064 | 1.1.4.2.1.2.4 | Risk type B (Most likely ERM + RAS + Strategic) Framework Implemented at SHUSA, SBNA, and SCUSA | milestone | 0d | 2015-12-09 | 2015-12-09 | 1063, 1062, 1061 |  |  | 408d |  | start no earlier than 2015-12-09 |  |  |  | Late |

Notes:
- 1044: The Implementation Plan for these risk frameworks is created as part of the the Governance and Organization Sub Workstream. Current estimates are 3 months implementation period beginning as of the finish date for the corresponding implementation planning task.
- 1054: The Implementation Plan for these risk frameworks is created as part of the the Governance and Organization Sub Workstream. Current estimates are 3 months implementation period beginning as of the finish date for the corresponding implementation plann...

| ID | WBS | Task | Type | Duration | Start | Finish | Predecessors | Complete | Remaining | Total slack | Free slack | Constraint | Resources | Work | Actual work | Entity | Tracking Status |
| --- | --- | --- | --- | --- | --- | --- | --- | --- | --- | --- | --- | --- | --- | --- | --- | --- | --- |
| 1065 | 1.1.4.2.2 | **DELIVERABLE: Wave 2 Risk Types C and D Implemented at SHUSA, SBNA, SCUSA and Other Entities** |  | 62d | 2015-12-04 | 2016-03-01 |  |  |  | 349d |  |  |  |  |  |  |  |
| 1066 | 1.1.4.2.2.1 | **MILESTONE: Risk Type C (Most Likely Market & Liquidity) at SHUSA, SBNA, SCUSA and Other Entities** |  | 62d | 2015-12-04 | 2016-03-01 |  |  |  | 349d |  |  |  |  |  |  |  |
| 1067 | 1.1.4.2.2.1.1 | Implement Risk type C (Most likely Market & Liquidity) Framework at SHUSA |  | 62d | 2015-12-04 | 2016-02-29 |  |  |  | 349d | 0d | start no earlier than 2015-12-04 |  |  |  | ܁ࢹ | Late |
| 1068 | 1.1.4.2.2.1.2 | Implement Risk type C (Most likely Market & Liquidity) Framework at SBNA |  | 62d | 2015-12-04 | 2016-02-29 |  |  |  | 349d | 0d | start no earlier than 2015-12-04 |  |  |  | ܁ࢺ | Late |
| 1069 | 1.1.4.2.2.1.3 | Implement Risk type C (Most likely Market & Liquidity) Framework at SCUSA |  | 62d | 2015-12-04 | 2016-02-29 |  |  |  | 349d | 0d | start no earlier than 2015-12-04 |  |  |  | ܁ࢻ | Late |
| 1070 | 1.1.4.2.2.1.4 | Risk Type C (Most Likely Market & Liquidity) at SHUSA, SBNA, SCUSA and Other Entities Implemented | milestone | 0d | 2016-03-01 | 2016-03-01 | 1069, 1068, 1067 |  |  | 349d |  | start no earlier than 2016-03-01 |  |  |  |  | Late |
| 1071 | 1.1.4.2.2.2 | **MILESTONE: Risk type D (Most likely Compliance) Framework at SHUSA, SBNA, SCUSA, and Other Entities Implemented** |  | 62d | 2015-12-04 | 2016-03-01 |  |  |  | 349d |  |  |  |  |  |  |  |
| 1072 | 1.1.4.2.2.2.1 | Implement Risk type D (Most likely Compliance) Framework at SHUSA |  | 62d | 2015-12-04 | 2016-02-29 |  |  |  | 349d | 0d | start no earlier than 2015-12-04 |  |  |  | ܁ࢹ | Late |
| 1073 | 1.1.4.2.2.2.2 | Implement Risk type D (Most likely Compliance) Framework at SBNA |  | 62d | 2015-12-04 | 2016-02-29 |  |  |  | 349d | 0d | start no earlier than 2015-12-04 |  |  |  | ܁ࢺ | Late |
| 1074 | 1.1.4.2.2.2.3 | Implement Risk type D (Most likely Compliance) Framework at SCUSA |  | 62d | 2015-12-04 | 2016-02-29 |  |  |  | 349d | 0d | start no earlier than 2015-12-04 |  |  |  | ܁ࢻ | Late |
| 1075 | 1.1.4.2.2.2.4 | MILESTONE: Risk type D (Most likely Compliance) Framework at SHUSA, SBNA, SCUSA, and Other Entities Implemented | milestone | 0d | 2016-03-01 | 2016-03-01 | 1074, 1073, 1072 |  |  | 349d |  | start no earlier than 2016-03-01 |  |  |  |  | Late |
| 1076 | 1.1.4.2.3 | **DELIVERABLE: Wave 3 Risk Types E and F Implemented at SHUSA, SBNA, SCUSA and Other Entities** |  | 62d | 2016-02-26 | 2016-05-24 |  |  |  | 289d |  |  |  |  |  |  |  |
| 1077 | 1.1.4.2.3.1 | **MILESTONE: Risk type E (Most likely Risk Management Information) Framework at SHUSA, SBNA, and SCUSA Implemented** |  | 62d | 2016-02-26 | 2016-05-24 |  |  |  | 289d |  |  |  |  |  |  |  |
| 1078 | 1.1.4.2.3.1.1 | Implement Risk type E (Most likely Risk Management Information) Framework at SHUSA, SBNA, and SCUSA |  | 62d | 2016-02-26 | 2016-05-23 |  |  |  | 289d | 0d | start no earlier than 2016-02-26 |  |  |  | ܁ࢹ | Late |
| 1079 | 1.1.4.2.3.1.2 | Implement Risk type E (Most likely Risk Management Information) Framework at SHUSA, SBNA, and SCUSA |  | 62d | 2016-02-26 | 2016-05-23 |  |  |  | 289d | 0d | start no earlier than 2016-02-26 |  |  |  | ܁ࢺ | Late |
| 1080 | 1.1.4.2.3.1.3 | Implement Risk type E (Most likely Risk Management Information) Framework at SHUSA, SBNA, and SCUSA |  | 62d | 2016-02-26 | 2016-05-23 |  |  |  | 289d | 0d | start no earlier than 2016-02-26 |  |  |  | ܁ࢻ | Late |
| 1081 | 1.1.4.2.3.1.4 | Risk type E (Most likely Risk Management Information) Framework at SHUSA, SBNA, and SCUSA Implemented | milestone | 0d | 2016-05-24 | 2016-05-24 | 1080, 1079, 1078 |  |  | 289d |  | start no earlier than 2016-05-24 |  |  |  |  | Late |
| 1082 | 1.1.4.2.3.2 | **MILESTONE: Risk type F (Most likely Capital Risk) Framework at SHUSA, SBNA, and SCUSA Implemented** |  | 62d | 2016-02-26 | 2016-05-24 |  |  |  | 289d |  |  |  |  |  |  |  |
| 1083 | 1.1.4.2.3.2.1 | Implement Risk type F (Most likely Capital Risk) Framework at SHUSA |  | 62d | 2016-02-26 | 2016-05-23 |  |  |  | 289d | 0d | start no earlier than 2016-02-26 |  |  |  | ܁ࢹ | Late |
| 1084 | 1.1.4.2.3.2.2 | Implement Risk type F (Most likely Capital Risk) Framework at SBNA |  | 62d | 2016-02-26 | 2016-05-23 |  |  |  | 289d | 0d | start no earlier than 2016-02-26 |  |  |  | ܁ࢺ | Late |
| 1085 | 1.1.4.2.3.2.3 | Implement Risk type F (Most likely Capital Risk) Framework at SCUSA |  | 62d | 2016-02-26 | 2016-05-23 |  |  |  | 289d | 0d | start no earlier than 2016-02-26 |  |  |  | ܁ࢻ | Late |
| 1086 | 1.1.4.2.3.2.4 | Risk type F (Most likely Capital Risk) Framework at SHUSA, SBNA, and SCUSA Implemented | milestone | 0d | 2016-05-24 | 2016-05-24 | 1085, 1084, 1083 |  |  | 289d |  | start no earlier than 2016-05-24 |  |  |  |  | Late |
| 1087 | 1.1.4.3 | **New Credit Risk Rating System** |  | 442d | 2014-10-02 A | 2016-06-10 |  | 50% | 222.08d | 275d |  |  |  | 7408h | 2632h | ܁ࢺ | Late |
| 1088 | 1.1.4.3.1 | **DELIVERABLE: Implementation of new ratings to reflect statistically valid rating methodology (CRE Q1-16 /C&I Q2-16)** |  | 442d | 2014-10-02 A | 2016-06-10 |  | 50% | 222.08d | 275d |  |  |  | 7408h | 2632h | ܁ࢺ | Late |
| 1089 | 1.1.4.3.1.1 | **MILESTONE: Rating Determination (Includes Model Development)** |  | 442d | 2014-10-02 A | 2016-06-10 |  | 50% | 222.08d | 275d |  |  |  | 7408h | 2632h | ܁ࢺ | Late |
| 1090 | 1.1.4.3.1.1.1 | **TASK: CRE** |  | 442d | 2014-10-02 A | 2016-06-10 |  | 74% | 116.09d | 275d |  |  |  | 4376h | 2632h | ܁ࢺ | Late |
| 1091 | 1.1.4.3.1.1.1.1 | Complete Road Map for CRE and C&I internal risk rating framework |  | 53d | 2014-10-02 A | 2014-12-15 A |  | 100% |  |  |  | start no earlier than 2014-10-01 | Mc Kinsey | 352h | 352h | ܁ࢺ | Complete |
| 1092 | 1.1.4.3.1.1.1.2 | Data Selection and Sample Procurement for CRE & C&I for internal risk rating framework |  | 74d | 2014-10-02 A | 2015-01-13 A |  | 100% |  |  |  | start no earlier than 2014-10-01 | Internal | 520h | 520h | ܁ࢺ | Complete |
| 1093 | 1.1.4.3.1.1.1.3 | CRE Model developed on sample data (good end results) |  | 75d | 2014-11-03 A | 2015-02-13 A |  | 100% |  |  |  | start no earlier than 2014-11-01 | Internal | 352h | 352h | ܁ࢺ | Complete |
| 1094 | 1.1.4.3.1.1.1.4 | CRE data procurement process completed |  | 117d | 2015-01-02 A | 2015-06-15 A |  | 100% |  |  |  | start no earlier than 2015-01-01 | Internal | 344h | 344h | ܁ࢺ | Complete |
| 1095 | 1.1.4.3.1.1.1.5 | Phase I CRE Model developed on data from 2005 - 2009 (statistical and expert model) |  | 139d | 2015-03-02 A | 2015-09-10 A |  | 100% |  |  |  | start no earlier than 2015-03-01 | Mc Kinsey / Internal | 184h | 184h | ܁ࢺ | Complete |
| 1096 | 1.1.4.3.1.1.1.6 | Phase I CRE Model documentation completed |  | 139d | 2015-03-02 A | 2015-09-10 A |  | 100% |  |  |  | start no earlier than 2015-03-01 | Mc Kinsey / Internal | 184h | 184h | ܁ࢺ | Complete |
| 1097 | 1.1.4.3.1.1.1.7 | Phase II CRE Model development in process (includes data from 2005 to 2014) (statistical and expert model) |  | 172d | 2015-04-02 A | 2015-11-27 A |  | 100% |  |  |  | start no earlier than 2015-04-01 | Mc Kinsey / Internal | 264h | 264h | ܁ࢺ | Complete |
| 1098 | 1.1.4.3.1.1.1.8 | Phase II CRE Model documentation in progress |  | 172d | 2015-04-02 A | 2015-11-27 A |  | 100% |  |  |  | start no earlier than 2015-04-01 | Mc Kinsey / Internal | 264h | 264h | ܁ࢺ | Complete |
| 1099 | 1.1.4.3.1.1.1.9 | IT Requirements submission |  | 182d | 2015-05-04 A | 2016-01-12 A |  | 100% |  |  |  | start no earlier than 2015-05-01 | Internal | 168h | 168h | ܁ࢺ | Complete |
| 1100 | 1.1.4.3.1.1.1.10 | Data Technology to implement models CRE |  | 270d | 2015-06-01 | 2016-06-10 |  |  |  | 275d |  | start no earlier than 2015-06-01 | Produban / Diego Lago | 704h |  | ܁ࢺ | Late |
| 1101 | 1.1.4.3.1.1.1.11 | QA Submission for CRE Models |  | 22d | 2015-06-01 | 2015-06-30 |  |  |  | 523d |  | start no earlier than 2015-06-01 | Internal | 176h |  | ܁ࢺ | Late |
| 1102 | 1.1.4.3.1.1.1.12 | QA Approval for CRE Models (David Spector) |  | 65d | 2015-06-01 | 2015-08-28 |  |  |  | 480d |  | start no earlier than 2015-06-01 | Internal - Validation Team | 520h |  | ܁ࢺ | Late |
| 1103 | 1.1.4.3.1.1.1.13 | Credit Professional start testing and using the CRE Model |  | 22d | 2015-10-01 | 2015-10-30 |  |  |  | 435d |  | start no earlier than 2015-10-01 | D. Spector | 176h |  | ܁ࢺ | Late |
| 1104 | 1.1.4.3.1.1.1.14 | Final Rollout |  | 21d | 2015-11-02 | 2015-11-30 |  |  |  | 414d |  | start no earlier than 2015-11-02 | D. Spector | 168h |  | ܁ࢺ | Late |
| 1105 | 1.1.4.3.1.1.1.15 | CRE Part Prepared | milestone | 0d | 2015-11-30 | 2015-11-30 |  |  |  | 415d |  | start no earlier than 2015-11-30 |  |  |  | ܁ࢺ | Late |

Notes:
- 1065: The Implementation Plan for these risk frameworks is created as part of the the Governance and Organization Sub Workstream. Current estimates are 3 months implementation period beginning as of the finish date for the corresponding implementation plann...
- 1076: The Implementation Plan for these risk frameworks is created as part of the the Governance and Organization Sub Workstream. Current estimates are 3 months implementation period beginning as of the finish date for the corresponding implementation plann...

| ID | WBS | Task | Type | Duration | Start | Finish | Total slack | Constraint | Resources | Work | Entity | Tracking Status |
| --- | --- | --- | --- | --- | --- | --- | --- | --- | --- | --- | --- | --- |
| 1106 | 1.1.4.3.1.1.2 | **TASK: C&I (Start after the CRE, structure can be leverage from CRE)** |  | 226d | 2015-02-02 | 2015-12-14 | 404d |  |  | 552h | ܁ࢺ |  |
| 1107 | 1.1.4.3.1.1.2.1 | Prepare plan for C&I - dependent on CRE IT requirements submission (completion date estimated for 12/3/15) |  | 162d | 2015-05-01 | 2015-12-14 | 404d | start no earlier than 2015-05-01 | Internal | 8h | ܁ࢺ | Late |
| 1108 | 1.1.4.3.1.1.2.2 | C&I data procurement process completed |  | 117d | 2015-02-02 | 2015-07-14 | 513d | start no earlier than 2015-02-02 | Internal | 160h | ܁ࢺ | Late |
| 1109 | 1.1.4.3.1.1.2.3 | C&I Model developed on sample data (good end results) |  | 117d | 2015-02-02 | 2015-07-14 | 513d | start no earlier than 2015-02-02 | Internal | 160h | ܁ࢺ | Late |
| 1110 | 1.1.4.3.1.1.2.4 | Phase II C&I Model development in process (includes data from 2005 to 2014) (statistical and expert model) |  | 23d | 2015-07-01 | 2015-07-31 | 500d | start no earlier than 2015-07-01 | Mc Kinsey / Internal | 184h | ܁ࢺ | Late |
| 1111 | 1.1.4.3.1.1.2.5 | Phase II C&I Model documentation in progress |  | 1d | 2015-08-31 | 2015-08-31 | 479d | start no earlier than 2015-08-31 | Mc Kinsey / Internal | 8h | ܁ࢺ | Late |
| 1112 | 1.1.4.3.1.1.2.6 | IT Requirements submission |  | 1d | 2015-09-30 | 2015-09-30 | 457d | start no earlier than 2015-09-30 | Internal | 8h | ܁ࢺ | Late |
| 1113 | 1.1.4.3.1.1.2.7 | Data Technology to implement models C&I |  | 1d | 2015-10-30 | 2015-10-30 | 435d | start no earlier than 2015-10-30 | Produban / Diego Lago | 8h | ܁ࢺ | Late |
| 1114 | 1.1.4.3.1.1.2.8 | QA Submission for C&I Models |  | 1d | 2015-10-30 | 2015-10-30 | 435d | start no earlier than 2015-10-30 | Internal | 8h | ܁ࢺ | Late |
| 1115 | 1.1.4.3.1.1.2.9 | QA Approval for C&I Models (David Spector) |  | 1d | 2015-11-30 | 2015-11-30 | 414d | start no earlier than 2015-11-30 | Internal - Validation Team | 8h | ܁ࢺ | Late |
| 1116 | 1.1.4.3.1.1.2.10 | C&I Part Prepared | milestone | 0d | 2015-11-30 | 2015-11-30 | 415d | start no earlier than 2015-11-30 |  |  | ܁ࢺ | Late |
| 1117 | 1.1.4.3.1.1.3 | **TASK: Governance** |  | 45d | 2015-06-01 | 2015-07-31 | 500d |  |  | 544h | ܁ࢺ |  |
| 1118 | 1.1.4.3.1.1.3.1 | Finalize Risk Rating Charter |  | 22d | 2015-06-01 | 2015-06-30 | 523d | start no earlier than 2015-06-01 | C. Nelson | 176h | ܁ࢺ | Late |
| 1119 | 1.1.4.3.1.1.3.2 | Finalize Rating Policy Document |  | 23d | 2015-07-01 | 2015-07-31 | 500d | start no earlier than 2015-07-01 | C. Nelson | 184h | ܁ࢺ | Late |
| 1120 | 1.1.4.3.1.1.3.3 | Obtain Policy Approval from CRC |  | 23d | 2015-07-01 | 2015-07-31 | 500d | start no earlier than 2015-07-01 | C. Nelson | 184h | ܁ࢺ | Late |
| 1121 | 1.1.4.3.1.1.3.4 | Governance Part Prepared | milestone | 0d | 2015-07-31 | 2015-07-31 | 501d | start no earlier than 2015-07-31 |  |  | ܁ࢺ | Late |
| 1122 | 1.1.4.3.1.1.4 | **TASK: Training** |  | 153d | 2015-06-01 | 2015-12-30 | 392d |  |  | 704h | ܁ࢺ |  |
| 1123 | 1.1.4.3.1.1.4.1 | Complete internal socialization document |  | 22d | 2015-06-01 | 2015-06-30 | 523d | start no earlier than 2015-06-01 | C. Nelson | 176h | ܁ࢺ | Late |
| 1124 | 1.1.4.3.1.1.4.2 | Develop CRE Training Module |  | 22d | 2015-09-01 | 2015-09-30 | 457d | start no earlier than 2015-09-01 | C. Nelson | 176h | ܁ࢺ | Late |
| 1125 | 1.1.4.3.1.1.4.3 | CRE Training Rollout |  | 22d | 2015-12-01 | 2015-12-30 | 392d | start no earlier than 2015-12-01 | C. Nelson | 176h | ܁ࢺ | Late |
| 1126 | 1.1.4.3.1.1.4.4 | Develop C&I Training |  | 22d | 2015-12-01 | 2015-12-30 | 392d | start no earlier than 2015-12-01 | C. Nelson | 176h | ܁ࢺ | Late |
| 1127 | 1.1.4.3.1.1.4.5 | Training Prepared | milestone | 0d | 2015-12-30 | 2015-12-30 | 393d | start no earlier than 2015-12-30 |  |  | ܁ࢺ | Late |
| 1128 | 1.1.4.3.1.1.5 | **TASK: Testing** |  | 88d | 2015-06-01 | 2015-09-30 | 457d |  |  | 352h | ܁ࢺ |  |
| 1129 | 1.1.4.3.1.1.5.1 | In conjunction with Modeling, prepare for User Testing |  | 22d | 2015-06-01 | 2015-06-30 | 523d | start no earlier than 2015-06-01 | C. Nelson | 176h | ܁ࢺ | Late |
| 1130 | 1.1.4.3.1.1.5.2 | UAT feedback and Modeling |  | 22d | 2015-09-01 | 2015-09-30 | 457d | start no earlier than 2015-09-01 | C. Nelson | 176h | ܁ࢺ | Late |
| 1131 | 1.1.4.3.1.1.5.3 | Testing Prepared | milestone | 0d | 2015-09-30 | 2015-09-30 | 458d | start no earlier than 2015-09-30 |  |  | ܁ࢺ | Late |

| ID | WBS | Task | Type | Duration | Start | Finish | Total slack | Constraint | Resources | Work | Entity | Tracking Status | Dependency |
| --- | --- | --- | --- | --- | --- | --- | --- | --- | --- | --- | --- | --- | --- |
| 1132 | 1.1.4.3.1.1.6 | **TASK: Implementation** |  | 219d | 2015-06-01 | 2016-03-31 | 326d |  |  | 184h | ܁ࢺ |  |  |
| 1133 | 1.1.4.3.1.1.6.1 | T&O coordination/input |  | 22d | 2015-06-01 | 2015-06-30 | 523d | start no earlier than 2015-06-01 | C. Nelson | 176h | ܁ࢺ | Late |  |
| 1134 | 1.1.4.3.1.1.6.2 | CRE Implementation |  | 1d | 2016-03-31 | 2016-03-31 | 326d | start no earlier than 2016-03-31 | C. Nelson | 8h | ܁ࢺ | Late |  |
| 1135 | 1.1.4.3.1.1.6.3 | Implementation Prepared | milestone | 0d | 2016-03-31 | 2016-03-31 | 327d | start no earlier than 2016-03-31 |  |  | ܁ࢺ | Late |  |
| 1136 | 1.1.4.3.1.1.7 | **TASK: Procedures** |  | 21d | 2015-08-03 | 2015-08-31 | 479d |  |  | 168h | ܁ࢺ |  |  |
| 1137 | 1.1.4.3.1.1.7.1 | Develop Standards and Processes for Users |  | 21d | 2015-08-03 | 2015-08-31 | 479d | start no earlier than 2015-08-03 | C. Nelson | 168h | ܁ࢺ | Late |  |
| 1138 | 1.1.4.3.1.1.7.2 | Standards and Processes Prepared | milestone | 0d | 2015-08-31 | 2015-08-31 | 480d | start no earlier than 2015-08-31 |  |  | ܁ࢺ | Late |  |
| 1139 | 1.1.4.3.1.1.8 | **TASK: Approval Committee** |  | 22d | 2015-06-01 | 2015-06-30 | 523d |  |  | 176h | ܁ࢺ |  |  |
| 1140 | 1.1.4.3.1.1.8.1 | Create Draft Committee Calendar for Q3 and Q4 2015 |  | 22d | 2015-06-01 | 2015-06-30 | 523d | start no earlier than 2015-06-01 | C. Nelson | 176h | ܁ࢺ | Late |  |
| 1141 | 1.1.4.3.1.1.8.2 | Draft Committee Calendar Prepared | milestone | 0d | 2015-06-30 | 2015-06-30 | 524d | start no earlier than 2015-06-30 |  |  | ܁ࢺ | Late |  |
| 1142 | 1.1.4.3.1.1.9 | **TASK: Staffing** |  | 88d | 2015-06-01 | 2015-09-30 | 457d |  |  | 352h | ܁ࢺ | Late |  |
| 1143 | 1.1.4.3.1.1.9.1 | Decide on hire |  | 22d | 2015-09-01 | 2015-09-30 | 457d | start no earlier than 2015-09-01 | C. Nelson | 176h | ܁ࢺ | Late |  |
| 1144 | 1.1.4.3.1.1.9.2 | Communication |  | 22d | 2015-06-01 | 2015-06-30 | 523d | start no earlier than 2015-06-01 | C. Nelson | 176h | ܁ࢺ | Late |  |
| 1145 | 1.1.4.3.1.1.9.3 | Staffing Completed | milestone | 0d | 2015-06-30 | 2015-06-30 | 524d | start no earlier than 2015-06-30 |  |  | ܁ࢺ | Late |  |
| 1146 | 1.1.4.4 | **Liquidity Stress Test Challenge Process Framework** |  | 154d | 2015-06-01 | 2015-12-31 | 391d |  |  |  | ܁ࢹ |  | ܁ȍ |
| 1147 | 1.1.4.4.1 | **DELIVERABLE: Liquidity Stress Test Challenge Process Framework** |  | 154d | 2015-06-01 | 2015-12-31 | 391d |  |  |  | ܁ࢹ |  | ܁ȍ |
| 1148 | 1.1.4.4.1.1 | **MILESTONE: Liquidity Stress Test Challenge Process Framework Prepared** |  | 11d | 2015-06-01 | 2015-06-15 | 534d |  |  |  | ܁ࢹ |  | ܁ȍ |
| 1149 | 1.1.4.4.1.1.1 | Document the roles and responsibilities of all parties involved with the liquidity stress test operating model |  | 11d | 2015-06-01 | 2015-06-15 | 534d | start no earlier than 2015-06-01 |  |  | ܁ࢹ | Late | ܁ȍ |
| 1150 | 1.1.4.4.1.1.2 | Define specific steps of the liquidity stress test process, including the review and approval process to the committees |  | 11d | 2015-06-01 | 2015-06-15 | 534d | start no earlier than 2015-06-01 |  |  | ܁ࢹ | Late | ܁ȍ |
| 1151 | 1.1.4.4.1.1.3 | Liquidity Stress Test Challenge Process Framework Prepared | milestone | 0d | 2015-06-15 | 2015-06-15 | 535d | start no earlier than 2015-06-15 |  |  | ܁ࢹ | Late | ܁ȍ |
| 1152 | 1.1.4.4.1.2 | **MILESTONE: Committees Approvals and Review** |  | 134d | 2015-06-29 | 2015-12-31 | 391d |  |  |  | ܁ࢹ |  | ܁ȍ |
| 1153 | 1.1.4.4.1.2.1 | Submit to the Market Risk Committee for approval |  | 2d | 2015-06-29 | 2015-06-30 | 523d | start no earlier than 2015-06-29 |  |  | ܁ࢹ | Late | ܁ȍ |
| 1154 | 1.1.4.4.1.2.2 | Submit to the Liquidity Risk Management Committee for approval |  | 2d | 2015-06-29 | 2015-06-30 | 523d | start no earlier than 2015-06-29 |  |  | ܁ࢹ | Late | ܁ȍ |
| 1155 | 1.1.4.4.1.2.3 | Submit to the Enterprise Risk Management Committee for approval |  | 2d | 2015-06-29 | 2015-06-30 | 523d | start no earlier than 2015-06-29 |  |  | ܁ࢹ | Late | ܁ȍ |
| 1156 | 1.1.4.4.1.2.4 | Submit to BERC for review & Approval |  | 11d | 2015-09-01 | 2015-09-15 | 468d | start no earlier than 2015-09-01 |  |  | ܁ࢹ | Late | ܁ȍ |
| 1157 | 1.1.4.4.1.2.5 | Implement operating model |  | 66d | 2015-10-01 | 2015-12-31 | 391d | start no earlier than 2015-10-01 |  |  | ܁ࢹ | Late | ܁ȍ |
| 1158 | 1.1.4.4.1.2.6 | Committees Approvals and Review Completed | milestone | 0d | 2015-12-31 | 2015-12-31 | 392d | start no earlier than 2015-12-31 |  |  | ܁ࢹ | Late | ܁ȍ |

| ID | WBS | Task | Type | Duration | Start | Finish | Predecessors | Total slack | Free slack | Constraint | Deadline | Entity | Tracking Status |
| --- | --- | --- | --- | --- | --- | --- | --- | --- | --- | --- | --- | --- | --- |
| 1159 | 1.1.4.5 | **Year 2 and Year 3 Priorities** |  | 145d | 2016-02-29 | 2016-09-16 |  | -184d | 0d |  |  | ܁ࢹ |  |
| 1160 | 1.1.4.5.1 | **DELIVERABLE: Targeted, high-level review of wholesale credit** |  | 45d | 2016-02-29 | 2016-04-29 |  | -174d | 0d |  |  | ܁ࢹ | Late |
| 1161 | 1.1.4.5.1.1 | **MILESTONE: High-level review and revision of wholesale credit process limits and controls and delegation of authority at SCUSA and SBNA** |  | 45d | 2016-02-29 | 2016-04-29 |  | -174d | 0d |  |  | ܁ࢹ | Late |
| 1162 | 1.1.4.5.1.1.1 | Identify key steps in credit origination process by product type |  | 10d | 2016-02-29 | 2016-03-11 |  | -174d | 0d | start no earlier than 2016-02-29 |  | ܁ࢹ | Late |
| 1163 | 1.1.4.5.1.1.2 | Define controls and operational limits for each process step |  | 15d | 2016-03-14 | 2016-04-01 | 1162 | -174d | 0d | start no earlier than 2016-03-14 |  | ܁ࢹ | Late |
| 1164 | 1.1.4.5.1.1.3 | Articulate scope of authority across the organization and associated escalation procedures |  | 15d | 2016-04-04 | 2016-04-22 | 1163 | -174d | 0d | start no earlier than 2016-04-04 |  | ܁ࢹ | Late |
| 1165 | 1.1.4.5.1.1.4 | Launch remediation efforts, depending on progress of roll-out of organizational structure |  | 5d | 2016-04-25 | 2016-04-29 | 1164 | -174d | 0d | start no earlier than 2016-04-25 |  | ܁ࢹ | Late |
| 1166 | 1.1.4.5.1.1.5 | Launch of remediation efforts | milestone | 0d | 2016-04-29 | 2016-04-29 | 1164, 1165 | -174d | 0d | start no earlier than 2016-04-29 | 2015-08-31 | ܁ࢹ | Late |
| 1167 | 1.1.4.5.2 | **DELIVERABLE: Gap analyses and remediation plans for the management of credit, market and trading, interest rate and strategic/reputational risk** |  | 60d | 2016-06-27 | 2016-09-16 |  | -269d | 0d |  |  | ܁ࢹ | Late |
| 1168 | 1.1.4.5.2.1 | **MILESTONE: Gap analyses and remediation plans for each risk (credit, market and trading, interest rate and strategic/reputational)** |  | 60d | 2016-06-27 | 2016-09-16 |  | -269d | 0d |  |  | ܁ࢹ | Late |
| 1169 | 1.1.4.5.2.1.1 | Identify shortcomings in efficiency, methodology, tools and processes |  | 40d | 2016-06-27 | 2016-08-19 |  | -269d | 0d | start no earlier than 2016-06-27 |  | ܁ࢹ | Late |
| 1170 | 1.1.4.5.2.1.2 | Benchmark current practices with industry best practices |  | 10d | 2016-08-08 | 2016-08-19 | 1169FS-10d | -269d | 0d | start no earlier than 2016-08-08 |  | ܁ࢹ | Late |
| 1171 | 1.1.4.5.2.1.3 | Create actionable prioritized remediation plans to address shortcomings and gaps to best practice |  | 15d | 2016-08-22 | 2016-09-09 | 1170 | -269d | 0d | start no earlier than 2016-08-22 |  | ܁ࢹ | Late |
| 1172 | 1.1.4.5.2.1.4 | Socialize remediation plans with key stakeholders (SHUSA, SBNA, SCUSA) |  | 5d | 2016-09-12 | 2016-09-16 | 1171 | 205d |  | start no earlier than 2016-09-12 |  | ܁ࢹ | Late |
| 1173 | 1.1.4.5.2.1.5 | Complete gap analysis and delivery of remediation plans | milestone | 0d | 2016-09-09 | 2016-09-09 | 1171 | -269d | 0d | start no earlier than 2016-09-09 | 2015-08-31 | ܁ࢹ | Late |
| 1174 | 1.1.5 | **Risk Monitoring** |  | 470d | 2015-06-15 | 2017-03-31 |  | 65d |  |  |  |  | Late |
| 1175 | 1.1.5.1 | **Risk Monitoring Deliverables** |  | 424d | 2015-08-17 | 2017-03-31 |  | 66d |  |  |  |  |  |
| 1176 | 1.1.5.1.1 | DELIVERABLE: Quick-win enhancements for priority reports (Board and Level 1 Risk Committees) | milestone | 0d | 2015-08-17 | 2015-08-17 |  | 490d |  | start no earlier than 2015-08-17 |  |  | Late |
| 1177 | 1.1.5.1.2 | DELIVERABLE: Definition of target risk reporting landscape | milestone | 0d | 2015-09-07 | 2015-09-07 |  | 475d |  | start no earlier than 2015-09-07 |  |  | Late |
| 1178 | 1.1.5.1.3 | DELIVERABLE: Wave 1 of reporting enhancements | milestone | 0d | 2015-11-09 | 2015-11-09 |  | 430d |  | start no earlier than 2015-11-09 |  |  | Late |
| 1179 | 1.1.5.1.4 | DELIVERABLE: Wave 2 of reporting enhancements | milestone | 0d | 2015-12-28 | 2015-12-28 |  | 395d |  | start no earlier than 2015-12-28 |  |  | Late |
| 1180 | 1.1.5.1.5 | DELIVERABLE: Wave 3 of reporting enhancements | milestone | 0d | 2016-04-01 | 2016-04-01 |  | 326d |  | start no earlier than 2016-04-01 |  |  | Late |
| 1181 | 1.1.5.1.6 | DELIVERABLE: Gap Analysis of Current Data Against Enhanced Report Data Requirements | milestone | 0d | 2016-01-08 | 2016-01-08 |  | 386d |  | start no earlier than 2016-01-08 |  |  | Late |
| 1182 | 1.1.5.1.7 | DELIVERABLE: Gap Analysis of Current Data Against Enhanced Reporting | milestone | 0d | 2016-06-30 | 2016-06-30 |  | 262d |  | start no earlier than 2016-06-30 |  |  | Late |
| 1183 | 1.1.5.1.8 | DELIVERABLE: Develop and launch additional waves of reporting enhancements | milestone | 0d | 2016-09-30 | 2016-09-30 |  | 196d |  | start no earlier than 2016-09-30 |  |  | Late |
| 1184 | 1.1.5.1.9 | DELIVERABLE: Refinements to monitoring documentation and automation | milestone | 0d | 2016-09-30 | 2016-09-30 |  | 196d |  | start no earlier than 2016-09-30 |  |  | Late |
| 1185 | 1.1.5.1.10 | DELIVERABLE: Develop controls for additional reporting | milestone | 0d | 2016-09-30 | 2016-09-30 |  | 196d |  | start no earlier than 2016-09-30 |  |  | Late |
| 1186 | 1.1.5.1.11 | DELIVERABLE: Assess resource needs and conduct additional refinements to monitoring requirements | milestone | 0d | 2017-03-31 | 2017-03-31 |  | 66d |  | start no earlier than 2017-03-31 |  |  | Late |

| ID | WBS | Task | Type | Duration | Start | Finish | Predecessors | Total slack | Free slack | Constraint | Entity | Tracking Status |
| --- | --- | --- | --- | --- | --- | --- | --- | --- | --- | --- | --- | --- |
| 1187 | 1.1.5.2 | **Internal Reporting Review, Design and Enhancements** |  | 210d | 2015-06-15 | 2016-04-01 |  | 325d |  |  |  |  |
| 1188 | 1.1.5.2.1 | **DELIVERABLE: Quick-win enhancements for priority reports (Board and Level 1 Risk Committees)** |  | 45d | 2015-06-15 | 2015-08-17 |  | 490d |  |  | ܁ࢹ |  |
| 1189 | 1.1.5.2.1.1 | **MILESTONE: Assessment of current reporting landscape (for Board and Level 1 Risk Committee reports only)** |  | 30d | 2015-06-15 | 2015-07-27 |  | 505d |  |  | ܁ࢹ |  |
| 1190 | 1.1.5.2.1.1.1 | Inventory existing reports |  | 10d | 2015-06-15 | 2015-06-26 |  | 525d |  | start no earlier than 2015-06-15 | ܁ࢹ | Late |
| 1191 | 1.1.5.2.1.1.2 | Assess reports against best practice |  | 10d | 2015-06-22 | 2015-07-03 |  | 505d | 0d | start no earlier than 2015-06-22 | ܁ࢹ | Late |
| 1192 | 1.1.5.2.1.1.3 | Determine if any quick-win enhancements can be made in terms of audience, content, frequency, format, etc. |  | 10d | 2015-07-06 | 2015-07-17 | 1191 | 505d | 0d | start no earlier than 2015-07-06 | ܁ࢹ | Late |
| 1193 | 1.1.5.2.1.1.4 | Detail prioritization of and plan for enhancements |  | 5d | 2015-07-20 | 2015-07-24 | 1192 | 505d | 0d | start no earlier than 2015-07-20 | ܁ࢹ | Late |
| 1194 | 1.1.5.2.1.1.5 | Completion of assessment and plan for implementation of enhancements | milestone | 0d | 2015-07-27 | 2015-07-27 | 1193 | 505d |  | start no earlier than 2015-07-27 | ܁ࢹ | Late |
| 1195 | 1.1.5.2.1.2 | **MILESTONE: Assessment of governance around reports (for Board and Level 1 Risk Committee reports only)** |  | 25d | 2015-06-22 | 2015-07-27 |  | 505d |  |  | ܁ࢹ |  |
| 1196 | 1.1.5.2.1.2.1 | Assess governance around internal reporting |  | 10d | 2015-06-22 | 2015-07-03 |  | 505d | 0d | start no earlier than 2015-06-22 | ܁ࢹ | Late |
| 1197 | 1.1.5.2.1.2.2 | Determine if any quick-win enhancements can be made in terms of standards, processes (e.g. review process), documentation, controls, etc. |  | 10d | 2015-07-06 | 2015-07-17 | 1196 | 505d | 0d | start no earlier than 2015-07-06 | ܁ࢹ | Late |
| 1198 | 1.1.5.2.1.2.3 | Detail prioritization of and plan for enhancements |  | 5d | 2015-07-20 | 2015-07-24 | 1197 | 505d | 0d | start no earlier than 2015-07-20 | ܁ࢹ | Late |
| 1199 | 1.1.5.2.1.2.4 | Completion of assessment and plan for implementation of enhancements | milestone | 0d | 2015-07-27 | 2015-07-27 | 1198 | 505d |  | start no earlier than 2015-07-27 | ܁ࢹ | Late |
| 1200 | 1.1.5.2.1.3 | **MILESTONE: Implementation of quick-win enhancements (for Board and Level 1 Risk Committee reports only)** |  | 15d | 2015-07-27 | 2015-08-17 |  | 490d |  |  | ܁ࢹ |  |
| 1201 | 1.1.5.2.1.3.1 | Implement quick-win enhancements for priority reports |  | 10d | 2015-07-27 | 2015-08-07 |  | 490d | 0d | start no earlier than 2015-07-27 | ܁ࢹ | Late |
| 1202 | 1.1.5.2.1.3.2 | Socialize with key stakeholders (SHUSA Board and Risk Managers) |  | 5d | 2015-08-10 | 2015-08-14 | 1201 | 490d | 0d | start no earlier than 2015-08-10 | ܁ࢹ | Late |
| 1203 | 1.1.5.2.1.3.3 | Updated priority reports | milestone | 0d | 2015-08-17 | 2015-08-17 | 1202 | 490d |  | start no earlier than 2015-08-17 | ܁ࢹ | Late |
| 1204 | 1.1.5.2.2 | **DELIVERABLE: Definition of target risk reporting landscape** |  | 30d | 2015-07-27 | 2015-09-07 |  | 475d |  |  | ܁ࢹ |  |
| 1205 | 1.1.5.2.2.1 | **MILESTONE: Definition of target risk reporting landscape** |  | 30d | 2015-07-27 | 2015-09-07 |  | 475d |  |  | ܁ࢹ |  |
| 1206 | 1.1.5.2.2.1.1 | Refine different audiences of Risk reporting (Group, local, regulatory, etc.) |  | 5d | 2015-07-27 | 2015-07-31 |  | 500d |  | start no earlier than 2015-07-27 | ܁ࢹ | Late |
| 1207 | 1.1.5.2.2.1.2 | For each audience, outline essential content and frequency of reporting and document as target risk reporting landscape |  | 25d | 2015-07-27 | 2015-08-28 |  | 475d | 0d | start no earlier than 2015-07-27 | ܁ࢹ | Late |
| 1208 | 1.1.5.2.2.1.3 | Socialize with key stakeholders (SHUSA) and update target landscape as necessary |  | 5d | 2015-08-31 | 2015-09-04 | 1207 | 475d |  | start no earlier than 2015-08-31 | ܁ࢹ | Late |
| 1209 | 1.1.5.2.2.1.4 | Prioritize reports for enhancement and assign reports to Wave 1 vs. Wave 2 of enhancements based on materiality |  | 5d | 2015-08-31 | 2015-09-04 |  | 475d | 0d | start no earlier than 2015-08-31 | ܁ࢹ | Late |
| 1210 | 1.1.5.2.2.1.5 | Documented target risk reporting landscape | milestone | 0d | 2015-09-07 | 2015-09-07 | 1209 | 475d |  | start no earlier than 2015-09-07 | ܁ࢹ | Late |

| ID | WBS | Task | Type | Duration | Start | Finish | Predecessors | Total slack | Free slack | Constraint | Entity | Tracking Status |
| --- | --- | --- | --- | --- | --- | --- | --- | --- | --- | --- | --- | --- |
| 1211 | 1.1.5.2.3 | **DELIVERABLE: Wave 1 of reporting enhancements** |  | 50d | 2015-08-31 | 2015-11-09 |  | 430d |  |  | ܁ࢹ |  |
| 1212 | 1.1.5.2.3.1 | **MILESTONE: Development of template reports and socialization of Wave 1** |  | 20d | 2015-08-31 | 2015-09-25 |  | 460d |  |  | ܁ࢹ |  |
| 1213 | 1.1.5.2.3.1.1 | Design reporting templates/dashboard based on latest industry practices, leveraging existing work |  | 15d | 2015-08-31 | 2015-09-18 |  | 460d | 0d | start no earlier than 2015-08-31 | ܁ࢹ | Late |
| 1214 | 1.1.1.1.2.3.1.1 | Review glossary of definitions to use across subsidiaries and business units |  | 15d | 2015-08-31 | 2015-09-18 |  | 465d |  | start no earlier than 2015-08-31 | ܁ࢹ | Late |
| 1215 | 1.1.5.2.3.1.3 | Socialize with key stakeholders (SHUSA) and update target landscape as necessary |  | 5d | 2015-09-21 | 2015-09-25 | 1213 | 460d |  | start no earlier than 2015-09-21 | ܁ࢹ | Late |
| 1216 | 1.1.5.2.3.1.4 | Completed templates for Wave 1 reports | milestone | 0d | 2015-09-25 | 2015-09-25 |  | 461d |  | start no earlier than 2015-09-25 | ܁ࢹ | Late |
| 1217 | 1.1.5.2.3.2 | **MILESTONE: Roll-out of Wave 1 reports** |  | 30d | 2015-09-28 | 2015-11-09 |  | 425d |  |  | ܁ࢹ |  |
| 1218 | 1.1.5.2.3.2.1 | Review business and data requirements for both interim and target state of Wave 1 reports and make additions as necessary |  | 20d | 2015-09-28 | 2015-10-23 |  | 425d | 0d | start no earlier than 2015-09-28 | ܁ࢹ | Late |
| 1219 | 1.1.5.2.3.2.2 | Pilot reports using available data (manual where necessary) |  | 10d | 2015-09-28 | 2015-10-09 |  | 450d |  | start no earlier than 2015-09-28 | ܁ࢹ | Late |
| 1220 | 1.1.5.2.3.2.3 | Collect feedback from key stakeholders (SHUSA) |  | 5d | 2015-10-26 | 2015-10-30 |  | 435d |  | start no earlier than 2015-10-26 | ܁ࢹ | Late |
| 1221 | 1.1.5.2.3.2.4 | Refine reports based on stakeholder feedback |  | 5d | 2015-11-02 | 2015-11-06 |  | 430d |  | start no earlier than 2015-11-02 | ܁ࢹ | Late |
| 1222 | 1.1.5.2.3.2.5 | Implement refined reports in-production |  | 1d | 2015-11-06 | 2015-11-06 |  | 430d |  | start no earlier than 2015-11-06 | ܁ࢹ | Late |
| 1223 | 1.1.5.2.3.2.6 | Completion of Wave 1 roll-out | milestone | 0d | 2015-11-09 | 2015-11-09 |  | 430d |  | start no earlier than 2015-11-09 | ܁ࢹ | Late |
| 1224 | 1.1.5.2.4 | **DELIVERABLE: Wave 2 of reporting enhancements** |  | 60d | 2015-10-05 | 2015-12-28 |  | 395d |  |  | ܁ࢹ |  |
| 1225 | 1.1.5.2.4.1 | **MILESTONE: Development of template reports and socialization of Wave 2 (based on materiality)** |  | 20d | 2015-10-05 | 2015-10-30 |  | 435d |  |  | ܁ࢹ |  |
| 1226 | 1.1.5.2.4.1.1 | Design reporting templates/dashboard based on latest industry practices, leveraging existing work |  | 15d | 2015-10-05 | 2015-10-23 |  | 435d | 0d | start no earlier than 2015-10-05 | ܁ࢹ | Late |
| 1227 | 1.1.5.2.4.1.2 | Socialize with key stakeholders (SHUSA) and update target landscape as necessary |  | 5d | 2015-10-26 | 2015-10-30 | 1226 | 435d |  | start no earlier than 2015-10-26 | ܁ࢹ | Late |
| 1228 | 1.1.5.2.4.1.3 | Completed templates for Wave 2 reports | milestone | 0d | 2015-10-30 | 2015-10-30 |  | 436d |  | start no earlier than 2015-10-30 | ܁ࢹ | Late |
| 1229 | 1.1.5.2.4.2 | **MILESTONE: Roll-out of Wave 2 reports** |  | 40d | 2015-11-02 | 2015-12-28 |  | 385d |  |  | ܁ࢹ |  |
| 1230 | 1.1.5.2.4.2.1 | Review business and data requirements for both interim and target state of Wave 2 reports and make additions as necessary |  | 35d | 2015-11-02 | 2015-12-18 |  | 385d | 0d | start no earlier than 2015-11-02 | ܁ࢹ | Late |
| 1231 | 1.1.5.2.4.2.2 | Pilot reports using available data (manual where necessary) |  | 30d | 2015-11-02 | 2015-12-11 |  | 405d |  | start no earlier than 2015-11-02 | ܁ࢹ | Late |
| 1232 | 1.1.5.2.4.2.3 | Collect feedback from key stakeholders (SHUSA) |  | 5d | 2015-12-14 | 2015-12-18 |  | 400d |  | start no earlier than 2015-12-14 | ܁ࢹ | Late |
| 1233 | 1.1.5.2.4.2.4 | Refine reports based on stakeholder feedback |  | 5d | 2015-12-21 | 2015-12-25 |  | 395d |  | start no earlier than 2015-12-21 | ܁ࢹ | Late |
| 1234 | 1.1.5.2.4.2.5 | Implement refined reports in-production |  | 1d | 2015-12-25 | 2015-12-25 |  | 395d |  | start no earlier than 2015-12-25 | ܁ࢹ | Late |
| 1235 | 1.1.5.2.4.2.6 | Completion of Wave 2 roll-out | milestone | 0d | 2015-12-28 | 2015-12-28 |  | 395d |  | start no earlier than 2015-12-28 | ܁ࢹ | Late |

| ID | WBS | Task | Type | Duration | Start | Finish | Predecessors | Total slack | Free slack | Constraint | Entity | Tracking Status |
| --- | --- | --- | --- | --- | --- | --- | --- | --- | --- | --- | --- | --- |
| 1236 | 1.1.5.2.5 | **DELIVERABLE: Wave 3 of reporting enhancements** |  | 70d | 2015-12-28 | 2016-04-01 |  | 325d |  |  | ܁ࢹ |  |
| 1237 | 1.1.5.2.5.1 | **MILESTONE: Development template reports and socialization of Wave 3 (Remaining Entities)** |  | 70d | 2015-12-28 | 2016-04-01 |  | 325d |  |  | ܁ࢹ |  |
| 1238 | 1.1.5.2.5.1.1 | Expansion to include IHC and all US entities, same steps as Wave 1 and 2 - timeline TBD |  | 70d | 2015-12-28 | 2016-04-01 |  | 325d |  | start no earlier than 2015-12-28 | ܁ࢹ | Late |
| 1239 | 1.1.5.2.5.1.2 | Completion of Wave 3 roll-out | milestone | 0d | 2016-04-01 | 2016-04-01 |  | 326d |  | start no earlier than 2016-04-01 | ܁ࢹ | Late |
| 1240 | 1.1.5.2.5.2 | **MILESTONE: Roll- out of Wave 3 reports** |  | 0d | 2016-04-01 | 2016-04-01 |  | 326d |  |  | ܁ࢹ |  |
| 1241 | 1.1.5.2.5.2.1 | Completion of Wave 3 Roll-out | milestone | 0d | 2016-04-01 | 2016-04-01 |  | 326d |  | start no earlier than 2016-04-01 | ܁ࢹ | Late |
| 1242 | 1.1.5.3 | **Current State Gap Analysis** |  | 55d | 2015-10-26 | 2016-01-08 |  | 385d |  |  | ܁ࢹ |  |
| 1243 | 1.1.5.3.1 | **DELIVERABLE: Gap Analysis of Current Data Against Enhanced Report Data Requirements** |  | 55d | 2015-10-26 | 2016-01-08 |  | 385d |  |  | ܁ࢹ |  |
| 1244 | 1.1.5.3.1.1 | **MILESTONE: Data Inventory of Wave 1 of Enhanced Reports Created** |  | 5d | 2015-10-26 | 2015-10-30 |  | 425d |  |  | ܁ࢹ |  |
| 1245 | 1.1.5.3.1.1.1 | Conduct Data Inventory of Wave 1 of Enhanced Reports |  | 5d | 2015-10-26 | 2015-10-30 | 1218 | 425d | 0d | start no earlier than 2015-10-26 | ܁ࢹ | Late |
| 1246 | 1.1.5.3.1.1.2 | Data Inventory of Wave 1 of Enhanced Reports Created | milestone | 0d | 2015-10-30 | 2015-10-30 | 1245 | 435d |  | start no earlier than 2015-10-30 | ܁ࢹ | Late |
| 1247 | 1.1.5.3.1.2 | **MILESTONE: Current Data Inventory Assessed Against Wave 1 of Enhanced Reports** |  | 10d | 2015-11-02 | 2015-11-13 |  | 425d |  |  | ܁ࢹ |  |
| 1248 | 1.1.5.3.1.2.1 | Assess Current Data Inventory Against Wave 1 of Newly Enhanced Reports |  | 10d | 2015-11-02 | 2015-11-13 | 1245 | 425d | 0d | start no earlier than 2015-11-02 | ܁ࢹ | Late |
| 1249 | 1.1.5.3.1.2.2 | Current Data Inventory Assessed Against Wave 1 of Enhanced Reports | milestone | 0d | 2015-11-13 | 2015-11-13 | 1248 | 425d |  | start no earlier than 2015-11-13 | ܁ࢹ | Late |
| 1250 | 1.1.5.3.1.3 | **MILESTONE: Data Inventory of Wave 2 of Enhanced Reports Created** |  | 5d | 2015-12-21 | 2015-12-25 |  | 385d |  |  | ܁ࢹ |  |
| 1251 | 1.1.5.3.1.3.1 | Conduct Data Inventory of Wave 2 of Enhanced Reports |  | 5d | 2015-12-21 | 2015-12-25 | 1230 | 385d | 0d | start no earlier than 2015-12-21 | ܁ࢹ | Late |
| 1252 | 1.1.5.3.1.3.2 | Data Inventory of Wave 2 of Enhanced Reports Created | milestone | 0d | 2015-12-25 | 2015-12-25 | 1251 | 395d |  | start no earlier than 2015-12-25 | ܁ࢹ | Late |
| 1253 | 1.1.5.3.1.4 | **MILESTONE: Current Data Inventory Assessed Against Wave 2 of Enhanced Reports** |  | 10d | 2015-12-28 | 2016-01-08 |  | 385d |  |  | ܁ࢹ |  |
| 1254 | 1.1.5.3.1.4.1 | Assess Current Data Inventory Against Wave 2 of Enhanced Reports |  | 10d | 2015-12-28 | 2016-01-08 | 1251 | 385d | 0d | start no earlier than 2015-12-28 | ܁ࢹ | Late |
| 1255 | 1.1.5.3.1.4.2 | Current Data Inventory Assessed Against Wave 2 of Enhanced Reports | milestone | 0d | 2016-01-08 | 2016-01-08 | 1254 | 385d |  | start no earlier than 2016-01-08 | ܁ࢹ | Late |
| 1256 | 1.1.5.4 | **Year 2 and Year 3 Priorities** |  | 261d | 2016-04-01 | 2017-03-31 |  | 65d |  |  | ܁ࢹ |  |
| 1257 | 1.1.5.4.1 | **DELIVERABLE: Gap Analysis of Current Data Against Enhanced Reporting** |  | 0d | 2016-06-30 | 2016-06-30 |  | 262d |  |  | ܁ࢹ |  |
| 1258 | 1.1.5.4.1.1 | MILESTONE: Data Inventory of Wave 3 of Enhanced Reports Created | milestone | 0d | 2016-06-30 | 2016-06-30 |  | 262d |  | start no earlier than 2016-06-30 | ܁ࢹ | Late |
| 1259 | 1.1.5.4.1.2 | MILESTONE: Current Data Inventory Assessed Against Wave 3 of Enhanced Reports | milestone | 0d | 2016-06-30 | 2016-06-30 |  | 262d |  | start no earlier than 2016-06-30 | ܁ࢹ | Late |

| ID | WBS | Task | Type | Duration | Start | Finish | Predecessors | Total slack | Free slack | Constraint | Entity | Tracking Status |
| --- | --- | --- | --- | --- | --- | --- | --- | --- | --- | --- | --- | --- |
| 1260 | 1.1.5.4.2 | **DELIVERABLE: Develop and launch additional waves of reporting enhancements** |  | 131d | 2016-04-01 | 2016-09-30 |  | 195d |  |  | ܁ࢹ | Late |
| 1261 | 1.1.5.4.2.1 | **MILESTONE: Develop templates reports at multiple levels of granularity (TBD), including management committee (based on materiality) and sub-committees level, Line of Business, and day-to-day operations level** |  | 130d | 2016-04-01 | 2016-09-29 |  | 196d |  |  | ܁ࢹ | Late |
| 1262 | 1.1.5.4.2.1.1 | Design reporting templates/dashboard based on latest industry practices, leveraging existing work |  | 65d | 2016-04-01 | 2016-06-30 |  | 196d | 0d | start no earlier than 2016-04-01 | ܁ࢹ | Late |
| 1263 | 1.1.1.1.2.3.1.1 | Review glossary of definitions to use across subsidiaries and business units |  | 65d | 2016-04-01 | 2016-06-30 |  | 261d |  | start no earlier than 2016-04-01 | ܁ࢹ | Late |
| 1264 | 1.1.5.4.2.1.3 | Socialize with key stakeholders (SHUSA) and update target landscape as necessary |  | 65d | 2016-07-01 | 2016-09-29 | 1262 | 196d |  | start no earlier than 2016-07-01 | ܁ࢹ | Late |
| 1265 | 1.1.5.4.2.1.4 | Completed template development for additional levels of granularity | milestone | 0d | 2016-06-30 | 2016-06-30 |  | 262d |  | start no earlier than 2016-06-30 | ܁ࢹ | Late |
| 1266 | 1.1.5.4.2.2 | **MILESTONE: Launch reports at multiple levels of granularity** |  | 66d | 2016-07-01 | 2016-09-30 |  | 195d |  |  | ܁ࢹ |  |
| 1267 | 1.1.5.4.2.2.1 | Review business and data requirements for both interim and target state of Wave 1 reports and make additions as necessary |  | 66d | 2016-07-01 | 2016-09-30 |  | 195d |  | start no earlier than 2016-07-01 | ܁ࢹ | Late |
| 1268 | 1.1.5.4.2.2.2 | Pilot reports using available data (manual where necessary) |  | 66d | 2016-07-01 | 2016-09-30 |  | 195d |  | start no earlier than 2016-07-01 | ܁ࢹ | Late |
| 1269 | 1.1.5.4.2.2.3 | Collect feedback from key stakeholders (SHUSA) |  | 66d | 2016-07-01 | 2016-09-30 |  | 195d |  | start no earlier than 2016-07-01 | ܁ࢹ | Late |
| 1270 | 1.1.5.4.2.2.4 | Refine reports based on stakeholder feedback |  | 66d | 2016-07-01 | 2016-09-30 |  | 195d |  | start no earlier than 2016-07-01 | ܁ࢹ | Late |
| 1271 | 1.1.5.4.2.2.5 | Implement refined reports in-production |  | 66d | 2016-07-01 | 2016-09-30 |  | 195d |  | start no earlier than 2016-07-01 | ܁ࢹ | Late |
| 1272 | 1.1.5.4.2.2.6 | Completed launch | milestone | 0d | 2016-09-30 | 2016-09-30 |  | 196d |  | start no earlier than 2016-09-30 | ܁ࢹ | Late |
| 1273 | 1.1.5.4.3 | **DELIVERABLE: Refinements to monitoring documentation and automation** |  | 131d | 2016-04-01 | 2016-09-30 |  | 195d |  |  | ܁ࢹ |  |
| 1274 | 1.1.5.4.3.1 | **MILESTONE: Completion of methodology documentation and technology implementation** |  | 131d | 2016-04-01 | 2016-09-30 |  | 195d |  |  | ܁ࢹ |  |
| 1275 | 1.1.5.4.3.1.1 | Document methodology for creating all adjusted/new reports |  | 131d | 2016-04-01 | 2016-09-30 |  | 195d |  | start no earlier than 2016-04-01 | ܁ࢹ | Late |
| 1276 | 1.1.5.4.3.1.2 | Test and implement technology to automate the completion of the Y2/Q1 reports |  | 131d | 2016-04-01 | 2016-09-30 |  | 195d |  | start no earlier than 2016-04-01 | ܁ࢹ | Late |
| 1277 | 1.1.1.1.3.1.3 | Completion of methodology documentation and technology implementation | milestone | 0d | 2016-09-30 | 2016-09-30 |  | 196d |  | start no earlier than 2016-09-30 | ܁ࢹ | Late |
| 1278 | 1.1.5.4.4 | **DELIVERABLE: Develop controls for additional reporting** |  | 131d | 2016-04-01 | 2016-09-30 |  | 195d |  |  | ܁ࢹ |  |
| 1279 | 1.1.5.4.4.1 | **MILESTONE: Completion of QA Controls** |  | 131d | 2016-04-01 | 2016-09-30 |  | 195d |  |  | ܁ࢹ |  |
| 1280 | 1.1.5.4.4.1.1 | Develop quality assurance controls for newly enhanced reports |  | 131d | 2016-04-01 | 2016-09-30 |  | 195d |  | start no earlier than 2016-04-01 | ܁ࢹ | Late |
| 1281 | 1.1.5.4.4.1.2 | Completion of QA controls | milestone | 0d | 2016-09-30 | 2016-09-30 |  | 196d |  | start no earlier than 2016-09-30 | ܁ࢹ | Late |
| 1282 | 1.1.5.4.5 | **DELIVERABLE: Assess resource needs and conduct additional refinements to monitoring requirements** |  | 261d | 2016-04-01 | 2017-03-31 |  | 65d |  |  | ܁ࢹ |  |
| 1283 | 1.1.5.4.5.1 | MILESTONE: Assess resources to produce and deliver reports |  | 196d | 2016-04-01 | 2016-12-30 |  | 130d |  | start no earlier than 2016-04-01 | ܁ࢹ | Late |
| 1284 | 1.1.5.4.5.2 | MILESTONE: Continually update business requirements for reporting, and assess resources to produce and deliver reports |  | 261d | 2016-04-01 | 2017-03-31 |  | 65d |  | start no earlier than 2016-04-01 | ܁ࢹ | Late |
| 1285 | 1.1.5.4.5.3 | MILESTONE: Completion of additional refinements to monitoring requirements | milestone | 0d | 2017-03-31 | 2017-03-31 |  | 66d |  | start no earlier than 2017-03-31 | ܁ࢹ | Late |
