# CART- Risk Transformation Deliverable Inventory

Schedule from MS Project, 2015-05-28 to 2016-05-27.
Sovereign Bank

## Calendars

- Standard: Mon-Fri 08:00-12:00, 13:00-17:00; Sat-Sun off.

## Resources

| Resource |
| --- |
| David Mael |
| R. Alhadeff/M. Carbone |
| J. Smith/T. Ploetz |
| M. Murphy |
| D. Fabrizio |
| L. Madariaga |

## Schedule

| ID | WBS | Task | Type | Duration | Start | Finish | Predecessors | Total slack | Free slack | Constraint | Deadline | Work | Text24 |
| --- | --- | --- | --- | --- | --- | --- | --- | --- | --- | --- | --- | --- | --- |
| 1 | 1 | **Capital and Risk Transformation SHUSA** |  | 262d? | 2015-05-28 | 2016-05-27 |  | -117d | 0d |  |  | 49024h |  |
| 2 | 1.1 | **Risk Transformation** |  | 262d? | 2015-05-28 | 2016-05-27 |  | -117d | 0d |  |  | 49024h |  |
| 3 | 1.1.1 | **Risk Appetite Statement(RAS)** |  | 260d | 2015-06-01 | 2016-05-27 |  | 0d |  |  |  |  | Late |
| 4 | 1.1.1.1 | **RAS Deliverables** |  | 0d | 2015-12-31 | 2015-12-31 |  | 106d |  |  |  |  | Late |
| 5 | 1.1.1.1.1 | example deliverable (linked to the detail below) | milestone | 0d | 2015-12-31 | 2015-12-31 | 32, 43, 47, 118, 121, 70 | 106d |  |  |  |  | Late |
| 6 | 1.1.1.2 | **Re-designed SHUSA RAS framework** |  | 105d | 2015-06-08 | 2015-10-30 |  | 0d |  |  |  |  | Late |
| 7 | 1.1.1.2.1 | **SHUSA-level RAS** |  | 60d | 2015-06-08 | 2015-08-28 |  | 0d |  |  |  |  | Late |
| 8 | 1.1.1.2.1.1 | **Finalize project plan and communicate to CART stakeholders** |  | 10d | 2015-06-08 | 2015-06-19 |  | 61d |  |  |  |  | Late |
| 9 | 1.1.1.2.1.1.1 | Finalize CART plan at task-level |  | 1d | 2015-06-08 | 2015-06-08 |  | 245d | 0d | start no earlier than 2015-06-08 |  |  | Late |
| 10 | 1.1.1.2.1.1.2 | Socialize plan with key stakeholders (SHUSA, SBNA, SCUSA) |  | 9d | 2015-06-09 | 2015-06-19 | 9 | 245d |  | start no earlier than 2015-06-08 |  |  | Late |
| 11 | 1.1.1.2.1.1.3 | Communicate plan to CART stakeholders |  | 5d | 2015-06-15 | 2015-06-19 |  | 245d |  | start no earlier than 2015-06-15 |  |  | Late |
| 12 | 1.1.1.2.1.1.4 | Plan submitted to CART / Leadership Committee | milestone | 0d | 2015-06-19 | 2015-06-19 |  | 52d |  | start no earlier than 2015-06-19 | 2015-08-31 |  | Late |
| 13 | 1.1.1.2.1.2 | **Define principles and approach for choosing metrics and setting limits** |  | 10d | 2015-06-08 | 2015-06-19 |  | 62d |  |  |  |  |  |
| 14 | 1.1.1.2.1.2.1 | Draft principles and approach for metrics and limits (no Finance metrics, risk profile, risk appetite, stressed metrics) |  | 5d | 2015-06-08 | 2015-06-12 |  | 62d | 0d | finish no earlier than 2015-06-12 |  |  | Late |
| 15 | 1.1.1.2.1.2.2 | Socialize Risk Appetite principles to stakeholders (SHUSA, SBNA, SCUSA) |  | 5d | 2015-06-15 | 2015-06-19 | 14 | 62d | 0d | start no earlier than 2015-06-08 |  |  | Late |
| 16 | 1.1.1.2.1.2.3 | Finalized principles and approach for choosing metrics and setting limits | milestone | 0d | 2015-06-19 | 2015-06-19 | 15 | 62d |  |  | 2015-09-15 |  | Late |
| 17 | 1.1.1.2.1.3 | **Articulate enterprise-wide RAS philosophy and major risk categories** |  | 10d | 2015-06-08 | 2015-06-19 |  | 83d |  |  |  |  |  |
| 18 | 1.1.1.2.1.3.1 | Draft of enterprise-wide RAS philosophy and major risk categories (e.g. credit) |  | 5d | 2015-06-08 | 2015-06-12 |  | 250d |  | start no earlier than 2015-06-08 |  |  | Late |
| 19 | 1.1.1.2.1.3.2 | Socialize Risk Appetite philosophy to stakeholders (SHUSA, SBNA, SCUSA) |  | 5d | 2015-06-15 | 2015-06-19 |  | 245d |  | start no earlier than 2015-06-15 |  |  | Late |
| 20 | 1.1.1.2.1.3.3 | Finalized enterprise-wide RAS philosophy and major risk categories | milestone | 0d | 2015-06-19 | 2015-06-19 |  | 74d |  | start no earlier than 2015-06-19 | 2015-09-30 |  | Late |
| 21 | 1.1.1.2.1.4 | **Detail material risks and constraints for enterprise** |  | 15d | 2015-06-08 | 2015-06-26 |  | 100d |  |  |  |  |  |
| 22 | 1.1.1.2.1.4.1 | Identify and document material risks for enterprise, including input from stakeholders (SHUSA, SBNA, SCUSA) |  | 5d | 2015-06-08 | 2015-06-12 |  | 250d |  | start no earlier than 2015-06-08 |  |  | Late |
| 23 | 1.1.1.2.1.4.2 | Identify and document constraints from regulators and other stakeholders (i.e. ratings agencies) |  | 5d | 2015-06-15 | 2015-06-19 |  | 245d |  | start no earlier than 2015-06-15 |  |  | Late |
| 24 | 1.1.1.2.1.4.3 | Consolidate all requirements from Group, including updated corporate metrics (recalculated with April numbers) |  | 5d | 2015-06-15 | 2015-06-19 |  | 245d |  | start no earlier than 2015-06-15 |  |  | Late |
| 25 | 1.1.1.2.1.4.4 | Document owners and rationale for all corporate metrics |  | 5d | 2015-06-15 | 2015-06-19 |  | 245d |  | start no earlier than 2015-06-15 |  |  | Late |
| 26 | 1.1.1.2.1.4.5 | Facilitate review and challenge session for list of material risks with key stakeholders (SHUSA, SBNA, SCUSA) |  | 3d | 2015-06-22 | 2015-06-24 |  | 242d |  | start no earlier than 2015-06-22 |  |  | Late |
| 27 | 1.1.1.2.1.4.6 | Update documentation of material risks and constraints, given stakeholder input |  | 3d | 2015-06-24 | 2015-06-26 |  | 240d |  | start no earlier than 2015-06-24 |  |  | Late |
| 28 | 1.1.1.2.1.4.7 | Finalized documentation of material risks and constraints for enterprise | milestone | 0d | 2015-06-26 | 2015-06-26 |  | 86d |  | start no earlier than 2015-06-26 | 2015-10-23 |  | Late |

Notes:
- 5: Description of Deliverable

| ID | WBS | Task | Type | Duration | Start | Finish | Predecessors | Total slack | Free slack | Constraint | Deadline | Text24 |
| --- | --- | --- | --- | --- | --- | --- | --- | --- | --- | --- | --- | --- |
| 29 | 1.1.1.2.1.5 | **For each risk, determine a qualitative risk appetite statement** |  | 20d | 2015-06-08 | 2015-07-03 |  |  |  |  |  |  |
| 30 | 1.1.1.2.1.5.1 | Draft a qualitative risk appetite statement for all risks detailed in documentation of material risks for enterprise, considering documented constraints |  | 15d | 2015-06-08 | 2015-06-26 |  | 0d |  |  |  | Late |
| 31 | 1.1.1.2.1.5.2 | Socialize SHUSA-level qualitative statements with stakeholders (SHUSA, SBNA, SCUSA) |  | 5d | 2015-06-29 | 2015-07-03 | 30 | 0d |  |  |  | Late |
| 32 | 1.1.1.2.1.5.3 | Finalized qualitative risk appetite statements for material risks | milestone | 0d | 2015-07-03 | 2015-07-03 | 31 | 0d |  |  | 2015-12-31 | Late |
| 33 | 1.1.1.2.1.6 | **For quantifiable statements, identify key metrics and calibrate limits** |  | 45d | 2015-06-15 | 2015-08-14 |  | 139d |  |  |  |  |
| 34 | 1.1.1.2.1.6.1 | Finalize list of proposed SHUSA metrics |  | 1d | 2015-06-15 | 2015-06-15 |  | 249d |  | start no earlier than 2015-06-15 |  | Late |
| 35 | 1.1.1.2.1.6.2 | Facilitate review and challenge session for proposed metrics, limits and thresholds with key stakeholders (SHUSA, SBNA, SCUSA) |  | 1d | 2015-06-16 | 2015-06-16 |  | 248d |  | start no earlier than 2015-06-16 |  | Late |
| 36 | 1.1.1.2.1.6.3 | Update list of SHUSA metrics, given stakeholder input, and identify and document owners for each metric |  | 3d | 2015-06-17 | 2015-06-19 |  | 210d | 0d | start no earlier than 2015-06-17 |  | Late |
| 37 | 1.1.1.2.1.6.4 | Detail limits and thresholds for list of SHUSA metrics |  | 5d | 2015-06-22 | 2015-06-26 | 36 | 210d | 0d | start no earlier than 2015-06-22 |  | Late |
| 38 | 1.1.1.2.1.6.5 | Calibrate limits based on analysis of historical data, industry benchmarking, etc. |  | 30d | 2015-06-29 | 2015-08-07 | 37 | 210d |  | start no earlier than 2015-06-29 |  | Late |
| 39 | 1.1.1.2.1.6.6 | Document rationale for SHUSA metrics |  | 5d | 2015-07-13 | 2015-07-17 |  | 225d |  | start no earlier than 2015-07-13 |  | Late |
| 40 | 1.1.1.2.1.6.7 | Document IT requirements for SHUSA metrics |  | 15d | 2015-07-13 | 2015-07-31 |  | 215d |  | start no earlier than 2015-07-13 |  | Late |
| 41 | 1.1.1.2.1.6.8 | Consolidate metrics, limits and thresholds into quantifiable statements for material risks |  | 3d | 2015-08-10 | 2015-08-12 |  | 99d | 0d | start no earlier than 2015-08-10 |  | Late |
| 42 | 1.1.1.2.1.6.9 | Socialize quantitative statements with stakeholders (SHUSA, SBNA, SCUSA) |  | 2d | 2015-08-13 | 2015-08-14 | 41 | 99d | 0d | start no earlier than 2015-08-12 |  | Late |
| 43 | 1.1.1.2.1.6.10 | Finalized quantitative risk appetite statements for material risks | milestone | 0d | 2015-08-14 | 2015-08-14 | 42 | 99d |  | start no earlier than 2015-07-31 | 2015-12-31 | Late |
| 44 | 1.1.1.2.1.7 | **Consolidate qualitative and quantitative statements into SHUSA-level RAS and socialize with stakeholders** |  | 10d | 2015-08-17 | 2015-08-28 |  | 89d |  |  |  |  |
| 45 | 1.1.1.2.1.7.1 | Draft SHUSA-level RAS |  | 5d | 2015-08-17 | 2015-08-21 |  | 89d | 0d | start no earlier than 2015-08-17 |  | Late |
| 46 | 1.1.1.2.1.7.2 | Socialize SHUSA-level RAS with stakeholders (SHUSA, SBNA, SCUSA) |  | 5d | 2015-08-24 | 2015-08-28 | 45 | 89d | 0d |  |  | Late |
| 47 | 1.1.1.2.1.7.3 | Final draft of SHUSA-level RAS | milestone | 0d | 2015-08-28 | 2015-08-28 | 46 | 89d |  |  | 2015-12-31 | Late |
| 48 | 1.1.1.2.2 | **SHUSA-level RAS supporting processes and documentation** |  | 30d | 2015-07-06 | 2015-08-14 |  | 205d |  |  |  | Late |
| 49 | 1.1.1.2.2.1 | **Document SHUSA-level RAS reporting, monitoring and escalation processes** |  | 20d | 2015-07-06 | 2015-07-31 |  | 215d |  |  |  |  |
| 50 | 1.1.1.2.2.1.1 | Draft SHUSA-level RAS reporting and monitoring process |  | 15d | 2015-07-06 | 2015-07-24 |  | 220d |  | start no earlier than 2015-07-06 |  | Late |
| 51 | 1.1.1.2.2.1.2 | Draft SHUSA-level RAS breach escalation process and detail consequences |  | 15d | 2015-07-06 | 2015-07-24 |  | 215d | 0d | start no earlier than 2015-07-06 |  | Late |
| 52 | 1.1.1.2.2.1.3 | Socialize processes with stakeholders (SHUSA, SBNA, SCUSA) |  | 5d | 2015-07-27 | 2015-07-31 | 51 | 215d | 0d | start no earlier than 2015-07-27 |  | Late |
| 53 | 1.1.1.2.2.1.4 | Finalized SHUSA-level RAS reporting, monitoring and escalation processes | milestone | 0d | 2015-07-31 | 2015-07-31 | 52 | 215d |  | start no earlier than 2015-07-31 |  | Late |

| ID | WBS | Task | Type | Duration | Start | Finish | Predecessors | Total slack | Free slack | Constraint | Deadline | Text24 |
| --- | --- | --- | --- | --- | --- | --- | --- | --- | --- | --- | --- | --- |
| 54 | 1.1.1.2.2.2 | **Document SHUSA-level RAS development and governance process** |  | 20d | 2015-07-20 | 2015-08-14 |  | 205d |  |  |  |  |
| 55 | 1.1.1.2.2.2.1 | Draft SHUSA-level RAS development documentation and governance process |  | 15d | 2015-07-20 | 2015-08-07 |  | 205d | 0d | start no earlier than 2015-07-20 |  | Late |
| 56 | 1.1.1.2.2.2.2 | Socialize documents with stakeholders (SHUSA, SBNA, SCUSA) |  | 5d | 2015-08-10 | 2015-08-14 | 55 | 205d | 0d | start no earlier than 2015-08-07 |  | Late |
| 57 | 1.1.1.2.2.2.3 | Finalized SHUSA-level RAS development documentation and governance process | milestone | 0d | 2015-08-14 | 2015-08-14 | 56 | 205d |  | start no earlier than 2015-07-31 |  | Late |
| 58 | 1.1.1.2.3 | **SHUSA-level RAS framework approval process** |  | 45d | 2015-08-31 | 2015-10-30 |  | 44d |  |  |  | Late |
| 59 | 1.1.1.2.3.1 | **Educate Board and senior committees on RAS and secure approval** |  | 45d | 2015-08-31 | 2015-10-30 |  | 44d |  |  |  |  |
| 60 | 1.1.1.2.3.1.1 | Create materials for Board training on RAS roles & responsibilities |  | 5d | 2015-08-31 | 2015-09-04 |  | 190d |  | start no earlier than 2015-08-31 |  | Late |
| 61 | 1.1.1.2.3.1.2 | Create materials for Board training on RAS structure and metrics |  | 5d | 2015-08-31 | 2015-09-04 |  | 190d |  | start no earlier than 2015-08-31 |  | Late |
| 62 | 1.1.1.2.3.1.3 | Deliver Board training session(s) |  | 5d | 2015-09-21 | 2015-09-25 |  | 175d |  | start no earlier than 2015-09-21 |  | Late |
| 63 | 1.1.1.2.3.1.4 | Present SHUSA-level RAS to ERMC/EMC |  | 10d | 2015-08-31 | 2015-09-11 |  | 44d | 0d | start no earlier than 2015-08-31 |  | Late |
| 64 | 1.1.1.2.3.1.5 | Present CDR presentation to Madrid for review |  | 10d | 2015-08-31 | 2015-09-11 | 63FS-10d | 44d | 0d |  |  | Late |
| 65 | 1.1.1.2.3.1.6 | Update RAS given feedback from SHUSA and Madrid risk committees |  | 5d | 2015-09-14 | 2015-09-18 | 64 | 44d | 0d | start no earlier than 2015-09-14 |  | Late |
| 66 | 1.1.1.2.3.1.7 | Present to Board/BERC for review |  | 10d | 2015-09-21 | 2015-10-02 | 65 | 44d | 0d | start no earlier than 2015-09-07 |  | Late |
| 67 | 1.1.1.2.3.1.8 | Present SHUSA-level RAS to CDR |  | 5d | 2015-10-05 | 2015-10-09 | 66 | 44d | 0d | start no earlier than 2015-09-14 |  | Late |
| 68 | 1.1.1.2.3.1.9 | Update RAS given feedback from CDR |  | 10d | 2015-10-12 | 2015-10-23 | 67 | 44d | 0d |  |  | Late |
| 69 | 1.1.1.2.3.1.10 | Submit SHUSA-level RAS for Board approval |  | 5d | 2015-10-26 | 2015-10-30 | 68 | 44d | 0d | start no earlier than 2015-09-21 |  | Late |
| 70 | 1.1.1.2.3.1.11 | Board-approved SHUSA-level RAS | milestone | 0d | 2015-10-30 | 2015-10-30 | 69 | 44d |  | start no earlier than 2015-10-30 | 2015-12-31 | Late |
| 71 | 1.1.1.3 | **Cascaded RAS across enterprise** |  | 260d | 2015-06-01 | 2016-05-27 |  | 0d |  |  |  | Late |
| 72 | 1.1.1.3.1 | **Assessment of short-term SCUSA RAS** |  | 20d | 2015-06-01 | 2015-06-26 |  | 61d |  |  |  | Late |
| 73 | 1.1.1.3.1.1 | **Assess SCUSA RAS and determine plan for short-term remediation** |  | 5d | 2015-06-01 | 2015-06-05 |  | 66d |  |  |  | Late |
| 74 | 1.1.1.3.1.1.1 | Assess current state of SCUSA RAS, focusing on pre-determined "pain points" (not reviewing RAS in entirety) |  | 1d | 2015-06-01 | 2015-06-01 |  | 259d |  | start no earlier than 2015-06-01 |  | Late |
| 75 | 1.1.1.3.1.1.2 | Determine plan for short-term remediation |  | 5d | 2015-06-01 | 2015-06-05 |  | 255d |  | start no earlier than 2015-06-01 |  | Late |
| 76 | 1.1.1.3.1.1.3 | Finalized plan for SCUSA RAS short-term remediation | milestone | 0d | 2015-06-05 | 2015-06-05 |  | 62d |  | start no earlier than 2015-06-05 | 2015-08-31 | Late |
| 77 | 1.1.1.3.1.2 | **Implement remediations in the form of updated key limits** |  | 15d | 2015-06-08 | 2015-06-26 |  | 56d |  |  |  | Late |
| 78 | 1.1.1.3.1.2.1 | Redefine SCUSA liquidity limit |  | 5d | 2015-06-08 | 2015-06-12 |  | 250d |  | start no earlier than 2015-06-08 |  | Late |
| 79 | 1.1.1.3.1.2.2 | Redefine SCUSA RWA limit |  | 5d | 2015-06-08 | 2015-06-12 |  | 250d |  | start no earlier than 2015-06-08 |  | Late |
| 80 | 1.1.1.3.1.2.3 | Redefine SCUSA total asset limit |  | 5d | 2015-06-08 | 2015-06-12 |  | 56d |  | start no earlier than 2015-06-08 | 2015-08-31 | Late |
| 81 | 1.1.1.3.1.2.4 | Socialize updated limits and all proposed remediations to SCUSA RAS |  | 5d | 2015-06-15 | 2015-06-19 |  | 245d |  | start no earlier than 2015-06-15 |  | Late |
| 82 | 1.1.1.3.1.2.5 | Update SCUSA RAS based on agreed upon remediations |  | 5d | 2015-06-22 | 2015-06-26 |  | 240d |  | start no earlier than 2015-06-22 |  | Late |
| 83 | 1.1.1.3.1.2.6 | Finalized SCUSA RAS (for short-term use) | milestone | 0d | 2015-06-26 | 2015-06-26 |  | 47d |  | start no earlier than 2015-06-26 | 2015-08-31 | Late |

| ID | WBS | Task | Type | Duration | Start | Finish | Predecessors | Total slack | Free slack | Constraint | Deadline | Text24 |
| --- | --- | --- | --- | --- | --- | --- | --- | --- | --- | --- | --- | --- |
| 84 | 1.1.1.3.2 | **Definition of approach for cascading SHUSA-level RAS to subsidiaries and levels below** |  | 10d | 2015-08-03 | 2015-08-14 |  | 21d |  |  |  | Late |
| 85 | 1.1.1.3.2.1 | **Document approach for cascading SHUSA-level RAS to subsidiaries and levels below** |  | 10d | 2015-08-03 | 2015-08-14 |  | 21d |  |  |  | Late |
| 86 | 1.1.1.3.2.1.1 | Determine organizational levels to which cascading is appropriate and draft planned approach |  | 5d | 2015-08-03 | 2015-08-07 |  | 210d |  | finish no earlier than 2015-08-07 |  | Late |
| 87 | 1.1.1.3.2.1.2 | Facilitate review and challenge sessions for cascading approach with stakeholders (SHUSA, SBNA, SCUSA) |  | 3d | 2015-08-10 | 2015-08-12 |  | 207d |  | start no earlier than 2015-08-10 |  | Late |
| 88 | 1.1.1.3.2.1.3 | Update documentation for cascading approach, given stakeholder input |  | 3d | 2015-08-12 | 2015-08-14 |  | 205d |  | start no earlier than 2015-08-12 |  | Late |
| 89 | 1.1.1.3.2.1.4 | Finalized plan for cascading SHUSA-level RAS to subsidiaries and levels below | milestone | 0d | 2015-08-14 | 2015-08-14 |  | 12d |  | start no earlier than 2015-08-14 | 2015-08-31 | Late |
| 90 | 1.1.1.3.3 | **RAS for priority subsidiaries SBNA & SCUSA – follow similar process as SHUSA** |  | 120d | 2015-08-17 | 2016-01-29 |  |  |  |  |  | Late |
| 91 | 1.1.1.3.3.1 | **Detail material risks specific to SBNA and SCUSA (leveraging SHUSA-level list, but making additions as necessary)** |  | 10d | 2015-08-17 | 2015-08-28 |  | 110d |  |  |  |  |
| 92 | 1.1.1.3.3.1.1 | Identify and document subsidiary-specific risks and constraints, including those not captured in SHUSA-level RAS |  | 5d | 2015-08-17 | 2015-08-21 |  | 110d | 0d |  |  | Late |
| 93 | 1.1.1.3.3.1.2 | Identify and document constraints from Group, regulators and other stakeholders (i.e. ratings agencies) |  | 5d | 2015-08-17 | 2015-08-21 |  | 115d |  |  |  | Late |
| 94 | 1.1.1.3.3.1.3 | Facilitate review and challenge session for list of material risks with key stakeholders (SHUSA, SBNA, SCUSA) |  | 3d | 2015-08-24 | 2015-08-26 | 92 | 110d | 0d |  |  | Late |
| 95 | 1.1.1.3.3.1.4 | Update documentation of subsidiary-specific risks and constraints, given stakeholder input |  | 2d | 2015-08-27 | 2015-08-28 | 94 | 110d |  |  |  | Late |
| 96 | 1.1.1.3.3.1.5 | Finalized documentation of material risks and constraints specific to priority subsidiaries | milestone | 0d | 2015-08-17 | 2015-08-17 |  | 120d |  |  |  | Late |
| 97 | 1.1.1.3.3.2 | **For each risk, determine a qualitative risk appetite statement (leveraging SHUSA-level RAS)** |  | 15d | 2015-08-31 | 2015-09-18 |  | 95d |  |  |  | Late |
| 98 | 1.1.1.3.3.2.1 | Determine SHUSA-level RAS statements relevant to subsidiaries |  | 3d | 2015-08-31 | 2015-09-02 |  | 95d | 0d | start no earlier than 2015-08-31 |  | Late |
| 99 | 1.1.1.3.3.2.2 | Detail statements for material risks specific to the subsidiary, not captured in SHUSA-level RAS |  | 7d | 2015-09-03 | 2015-09-11 | 98 | 95d | 0d | start no earlier than 2015-08-31 |  | Late |
| 100 | 1.1.1.3.3.2.3 | Consolidate into subsidiary specific-list of statements (leverage existing work) |  | 3d | 2015-09-14 | 2015-09-16 | 99 | 95d | 0d | start no earlier than 2015-09-14 |  | Late |
| 101 | 1.1.1.3.3.2.4 | Socialize SBNA and SCUSA qualitative statements with key stakeholders (SHUSA, SBNA, SCUSA) |  | 2d | 2015-09-17 | 2015-09-18 | 100 | 95d | 0d |  |  | Late |
| 102 | 1.1.1.3.3.2.5 | Finalized qualitative risk appetite statements for subsidiary-specific risks | milestone | 0d | 2015-09-18 | 2015-09-18 | 101 | 95d |  |  |  | Late |
| 103 | 1.1.1.3.3.3 | **For quantifiable statements, identify key metrics and calibrate limits (leveraging SHUSA-level RAS)** |  | 40d | 2015-09-14 | 2015-11-06 |  | 60d |  |  |  | Late |
| 104 | 1.1.1.3.3.3.1 | Determine SHUSA-level RAS metrics relevant to subsidiaries |  | 3d | 2015-09-14 | 2015-09-16 |  | 95d | 0d | start no earlier than 2015-09-14 |  | Late |
| 105 | 1.1.1.3.3.3.2 | Identify metrics for material risks specific to the subsidiary, not captured in SHUSA-level RAS, and compile in list with relevant metrics from SHUSA-level RAS |  | 2d | 2015-09-17 | 2015-09-18 | 104 | 95d |  |  |  | Late |
| 106 | 1.1.1.3.3.3.3 | Facilitate review and challenge session for proposed metrics, limits and thresholds with key stakeholders (SHUSA, SBNA, SCUSA) |  | 1d | 2015-09-28 | 2015-09-28 | 108 | 85d | 0d | start no earlier than 2015-07-06 |  | Late |
| 107 | 1.1.1.3.3.3.4 | Update list of subsidiary-specific metrics, given stakeholder input, and identify and document owners for each metric |  | 4d | 2015-09-29 | 2015-10-02 | 106 | 85d |  | finish no earlier than 2015-07-10 |  | Late |
| 108 | 1.1.1.3.3.3.5 | Detail limits and thresholds for list of subsidiary-specific metrics |  | 5d | 2015-09-21 | 2015-09-25 |  | 85d | 0d | start no earlier than 2015-09-21 |  | Late |
| 109 | 1.1.1.3.3.3.6 | Calibrate limits for subsidiary risks, ensure subsidiary-level limits align to SHUSA-level limits |  | 30d | 2015-09-21 | 2015-10-30 |  | 60d | 0d | start no earlier than 2015-09-21 |  | Late |
| 110 | 1.1.1.3.3.3.7 | Document rationale for SHUSA metrics |  | 5d | 2015-09-21 | 2015-09-25 |  | 90d |  | start no earlier than 2015-09-21 |  | Late |
| 111 | 1.1.1.3.3.3.8 | Document IT requirements for SHUSA metrics |  | 15d | 2015-09-14 | 2015-10-02 |  | 85d |  | start no earlier than 2015-09-14 |  | Late |
| 112 | 1.1.1.3.3.3.9 | Consolidate metrics, limits and thresholds into quantifiable statements for subsidiary-specific risks |  | 3d | 2015-11-02 | 2015-11-04 | 109 | 60d | 0d | finish no earlier than 2015-07-29 |  | Late |
| 113 | 1.1.1.3.3.3.10 | Socialize SBNA and SCUSA quantitative statements with stakeholders (SHUSA, SBNA, SCUSA) |  | 2d | 2015-11-05 | 2015-11-06 | 112 | 60d | 0d | finish no earlier than 2015-07-31 |  | Late |
| 114 | 1.1.1.3.3.3.11 | Finalized quantitative risk appetite statements for subsidiary-specific risks | milestone | 0d | 2015-11-06 | 2015-11-06 | 113 | 60d |  | start no earlier than 2015-07-31 |  | Late |

| ID | WBS | Task | Type | Duration | Start | Finish | Predecessors | Total slack | Free slack | Constraint | Deadline | Text24 |
| --- | --- | --- | --- | --- | --- | --- | --- | --- | --- | --- | --- | --- |
| 115 | 1.1.1.3.3.4 | **Consolidate qualitative and quantitative statements into SBNA RAS and SCUSA RAS and socialize with stakeholders** |  | 10d | 2015-11-09 | 2015-11-20 |  | 29d |  |  |  |  |
| 116 | 1.1.1.3.3.4.1 | Draft SBNA RAS and SCUSA RAS |  | 5d | 2015-11-09 | 2015-11-13 |  | 29d | 0d | start no earlier than 2015-11-09 |  | Late |
| 117 | 1.1.1.3.3.4.2 | Socialize SBNA RAS and SCUSA RAS with stakeholders (SHUSA, SBNA, SCUSA) |  | 5d | 2015-11-16 | 2015-11-20 | 116 | 29d | 0d |  |  | Late |
| 118 | 1.1.1.3.3.4.3 | Final drafts of SBNA RAS and SCUSA RAS | milestone | 0d | 2015-11-20 | 2015-11-20 | 117 | 29d |  |  | 2015-12-31 | Late |
| 119 | 1.1.1.3.3.5 | **Secure Board approval of RAS for priority subsidiaries** |  | 30d | 2015-11-20 | 2015-12-31 |  | 0d |  |  |  |  |
| 120 | 1.1.1.3.3.5.1 | 6-week buffer for governance process |  | 30d | 2015-11-20 | 2015-12-31 |  | 0d |  | start no earlier than 2015-11-20 |  | Late |
| 121 | 1.1.1.3.3.5.2 | Board-approved SHUSA-level RAS | milestone | 0d | 2015-12-31 | 2015-12-31 | 120 | 0d |  | start no earlier than 2015-12-04 | 2015-12-31 | Late |
| 122 | 1.1.1.3.3.6 | **Communicate SHUSA, SBNA, and SCUSA RAS to enterprise** |  | 40d | 2015-12-31 | 2016-02-24 |  | -18d | 0d |  |  | Late |
| 123 | 1.1.1.3.3.6.1 | Create communication materials to aid in socialization process |  | 10d | 2015-12-31 | 2016-01-13 |  | -18d | 0d | start no earlier than 2015-12-31 |  | Late |
| 124 | 1.1.1.3.3.6.2 | Facilitate training, town halls, etc. to communicate RAS to enterprise |  | 30d | 2016-01-14 | 2016-02-24 | 123 | -18d | 0d | start no earlier than 2015-12-21 |  | Late |
| 125 | 1.1.1.3.3.6.3 | Completed formal communication process to enterprise | milestone | 0d | 2016-02-24 | 2016-02-24 | 124 | -18d | 0d |  |  | Late |
| 126 | 1.1.1.3.4 | **RAS for remainder of subsidiaries and select BUs** |  | 85d | 2016-02-01 | 2016-05-27 |  | 0d |  |  |  | Late |
| 127 | 1.1.1.3.4.1 | Same cascading process as above | manual | 17w | 2016-02-01 | 2016-05-27 |  |  |  |  |  | Late |
| 128 | 1.1.1.4 | **Embedded RAS across enterprise** |  | 5w | 2016-02-01 | 2016-03-04 |  |  |  |  |  | Late |
| 129 | 1.1.1.4.1 | **Initialized embedding of RAS in material processes** |  | 20d | 2016-02-01 | 2016-02-26 |  | -114d | 0d |  |  | Late |
| 130 | 1.1.1.4.1.1 | **Update process maps for key processes with explicit RAS links** |  | 20d | 2016-02-01 | 2016-02-26 |  | -114d | 0d |  |  | Late |
| 131 | 1.1.1.4.1.1.1 | Identify processes that should be explicitly linked to RAS (e.g. strategic planning, capital planning) |  | 5d | 2016-02-01 | 2016-02-05 |  | 20d |  | finish no earlier than 2015-11-06 |  | Late |
| 132 | 1.1.1.4.1.1.2 | Detail nature of process linkage, including alignment to statements, metrics and limits described in the RAS |  | 5d | 2016-02-01 | 2016-02-05 |  | 20d |  | start no earlier than 2015-11-02 |  | Late |
| 133 | 1.1.1.4.1.1.3 | Assess degree to which RAS considerations are already embedded in key processes |  | 5d | 2016-02-01 | 2016-02-05 |  | -114d | 0d | finish no earlier than 2015-11-13 | 2015-08-31 | Late |
| 134 | 1.1.1.4.1.1.4 | Identify gaps and update key process maps accordingly |  | 15d | 2016-02-08 | 2016-02-26 | 133 | 5d | 0d | start no earlier than 2016-02-08 |  | Late |
| 135 | 1.1.1.4.1.1.5 | Updated process maps for key processes | milestone | 0d | 2016-02-26 | 2016-02-26 | 134 | 5d |  | start no earlier than 2015-12-04 |  | Late |
| 136 | 1.1.1.4.2 | **Plan implementation of RAS in all material processes** |  | 1d? | 2016-02-01 | 2016-02-01 |  | 24d |  |  |  | Late |
| 137 | 1.1.1.4.2.1 | Detail plan for RAS roll-out |  | 1d? | 2016-02-01 | 2016-02-01 |  | 24d |  |  |  | Late |
| 138 | 1.1.1.4.2.2 | Implement RAS across enterprise |  | 1d? | 2016-02-01 | 2016-02-01 |  | 24d |  |  |  | Late |
| 139 | 1.1.1.4.2.3 | TBD |  | 1d? | 2016-02-01 | 2016-02-01 |  | 24d |  |  |  | Late |

| ID | WBS | Task | Type | Duration | Start | Finish | Predecessors | Total slack | Free slack | Constraint | Deadline | Text24 |
| --- | --- | --- | --- | --- | --- | --- | --- | --- | --- | --- | --- | --- |
| 140 | 1.1.2 | **Strengthen Board and Management Committee Oversight** |  | 256d | 2015-06-05 | 2016-05-27 |  | 0d |  |  |  | Late |
| 141 | 1.1.2.1 | **Strengthen Board and Management Committee Oversight Deliverables** |  | 0d | 2015-06-05 | 2015-06-05 |  | 256d |  |  |  | Late |
| 142 | 1.1.2.1.1 | example deliverable (linked to the detail below) | milestone | 0d | 2015-06-05 | 2015-06-05 |  | 256d |  |  |  | Late |
| 143 | 1.1.2.2 | Diagnostic of Risk Mgt. Committee effectiveness |  | 15d | 2015-06-05 | 2015-06-25 |  | 221d | 0d |  |  | Late |
| 144 | 1.1.2.3 | Delivery of Board Training (session 1) |  | 20d | 2015-06-22 | 2015-07-17 |  | 130d | 0d | finish no earlier than 2015-07-17 |  | Late |
| 145 | 1.1.2.4 | Board risk training curriculum and schedule |  | 25d | 2016-04-25 | 2016-05-27 | 146SF | 0d |  | as late as possible |  | Late |
| 146 | 1.1.2.5 | Delivery of Board Training (session 2) |  | 15d | 2015-08-10 | 2015-08-28 |  | 195d |  | finish no earlier than 2015-08-28 |  | Late |
| 147 | 1.1.2.6 | Governance and coordination mechanisms between SHUSA and parent |  | 20d | 2015-06-26 | 2015-07-23 | 143 | 221d |  |  |  | Late |
| 148 | 1.1.2.7 | Definition of composition / mandates / charters for BERC and Level 1 Risk Committees |  | 45d | 2015-07-20 | 2015-09-18 | 144 | 130d | 0d |  |  | Late |
| 149 | 1.1.2.8 | Definition of composition / mandates / charters for Level 2 Risk Committees |  | 45d | 2015-08-31 | 2015-10-30 | 148FS-15d | 130d | 0d |  |  | Late |
| 150 | 1.1.2.9 | High level assessment and remediation of performance scorecards |  | 20d | 2015-11-02 | 2015-11-27 | 149 | 130d |  |  |  | Late |
| 151 | 1.1.3 | **Target Operating Model** |  | 255d | 2015-06-05 | 2016-05-26 |  | -123d | 0d |  |  | Late |
| 152 | 1.1.3.1 | **Target Operating Model Deliverables** |  | 0d | 2015-06-05 | 2015-06-05 |  | 256d |  |  |  | Late |
| 153 | 1.1.3.1.1 | example deliverable (linked to the detail below) | milestone | 0d | 2015-06-05 | 2015-06-05 |  | 256d |  |  |  | Late |
| 154 | 1.1.3.2 | **Update High-level risk leadership structure** |  | 25d | 2015-06-05 | 2015-07-09 |  | 231d |  |  |  | Late |
| 155 | 1.1.3.2.1 | Formalize subsidiary CRO reporting lines, socialize and refine solution |  | 10d | 2015-06-05 | 2015-06-18 |  | 241d | 0d |  |  | Late |
| 156 | 1.1.3.2.2 | Define implications of reporting lines (Performance assessment, hiring/firing authority) |  | 10d | 2015-06-12 | 2015-06-25 | 155FS-5d | 241d |  |  |  | Late |
| 157 | 1.1.3.2.3 | Design High-level risk organization structure including the role of RCO |  | 25d | 2015-06-05 | 2015-07-09 |  | 231d |  |  |  | Late |
| 158 | 1.1.3.3 | **Design Target Operating Model by risk type** |  | 255d | 2015-06-05 | 2016-05-26 |  | -123d | 0d |  |  | Late |
| 159 | 1.1.3.3.1 | Review of existing 1st LoD capabilities |  | 20d | 2015-06-05 | 2015-07-02 |  | -123d | 0d |  |  | Late |
| 160 | 1.1.3.3.2 | **Risk Data Aggregation** |  | 70d | 2015-06-05 | 2015-09-10 |  | -113d | 0d |  |  | Late |
| 161 | 1.1.3.3.2.1 | Refining frameworks |  | 15d | 2015-06-05 | 2015-06-25 |  | -113d | 0d |  |  | Late |
| 162 | 1.1.3.3.2.2 | Org. Structure and Talent Assessment |  | 30d | 2015-06-26 | 2015-08-06 | 161 | -8d | 0d |  |  | Late |
| 163 | 1.1.3.3.2.3 | Implementation Planning |  | 25d | 2015-08-07 | 2015-09-10 | 162 | -8d | 0d |  |  | Late |
| 164 | 1.1.3.3.2.4 | MILESTONE | milestone | 0d | 2015-09-10 | 2015-09-10 | 163 | -8d | 0d |  | 2015-08-31 | Late |

Notes:
- 142: Description of Deliverable
- 153: Description of Deliverable

| ID | WBS | Task | Type | Duration | Start | Finish | Predecessors | Total slack | Free slack | Deadline | Text24 |
| --- | --- | --- | --- | --- | --- | --- | --- | --- | --- | --- | --- |
| 165 | 1.1.3.3.3 | **Enterprise Risk Management** |  | 55d | 2015-06-19 | 2015-09-03 |  | -123d | 0d |  | Late |
| 166 | 1.1.3.3.3.1 | Refining frameworks |  | 10d | 2015-06-19 | 2015-07-02 | 159SS+10d | -123d | 0d |  | Late |
| 167 | 1.1.3.3.3.2 | Org. Structure and Talent Assessment |  | 20d | 2015-07-03 | 2015-07-30 | 166 | -3d | 0d |  | Late |
| 168 | 1.1.3.3.3.3 | Implementation Planning |  | 25d | 2015-07-31 | 2015-09-03 | 167 | -3d | 0d |  | Late |
| 169 | 1.1.3.3.3.4 | MILESTONE | milestone | 0d | 2015-09-03 | 2015-09-03 | 168 | -3d | 0d | 2015-08-31 | Late |
| 170 | 1.1.3.3.4 | **Market and liquidity risk** |  | 55d | 2015-06-19 | 2015-09-03 |  | -123d | 0d |  | Late |
| 171 | 1.1.3.3.4.1 | Refining frameworks |  | 10d | 2015-06-19 | 2015-07-02 | 161SS, 166SS | -123d | 0d |  | Late |
| 172 | 1.1.3.3.4.2 | Org. Structure and Talent Assessment |  | 20d | 2015-07-03 | 2015-07-30 | 171 | -123d | 0d |  | Late |
| 173 | 1.1.3.3.4.3 | Implementation Planning |  | 25d | 2015-07-31 | 2015-09-03 | 172 | -123d | 0d |  | Late |
| 174 | 1.1.3.3.4.4 | MILESTONE | milestone | 0d | 2015-09-03 | 2015-09-03 | 173 | -3d | 0d | 2015-08-31 | Late |
| 175 | 1.1.3.3.5 | **Credit Risk** |  | 70d | 2015-08-28 | 2015-12-03 |  | -123d | 0d |  | Late |
| 176 | 1.1.3.3.5.1 | Refining frameworks |  | 15d | 2015-08-28 | 2015-09-17 | 173FS-5d | -123d | 0d |  | Late |
| 177 | 1.1.3.3.5.2 | Org. Structure and Talent Assessment |  | 30d | 2015-09-18 | 2015-10-29 | 176 | -68d | 0d |  | Late |
| 178 | 1.1.3.3.5.3 | Implementation Planning |  | 25d | 2015-10-30 | 2015-12-03 | 177 | -68d | 0d |  | Late |
| 179 | 1.1.3.3.5.4 | MILESTONE | milestone | 0d | 2015-12-03 | 2015-12-03 | 178 | -68d | 0d | 2015-08-31 | Late |
| 180 | 1.1.3.3.6 | **Compliance Risk** |  | 75d | 2015-08-28 | 2015-12-10 |  | -123d | 0d |  | Late |
| 181 | 1.1.3.3.6.1 | Refining frameworks |  | 20d | 2015-08-28 | 2015-09-24 | 176SS | -123d | 0d |  | Late |
| 182 | 1.1.3.3.6.2 | Org. Structure and Talent Assessment |  | 30d | 2015-09-25 | 2015-11-05 | 181 | -123d | 0d |  | Late |
| 183 | 1.1.3.3.6.3 | Implementation Planning |  | 25d | 2015-11-06 | 2015-12-10 | 182 | -123d | 0d |  | Late |
| 184 | 1.1.3.3.6.4 | MILESTONE | milestone | 0d | 2015-12-10 | 2015-12-10 | 183 | -73d | 0d | 2015-08-31 | Late |
| 185 | 1.1.3.3.7 | **Capital Risk** |  | 120d | 2015-09-04 | 2016-02-18 |  | -123d | 0d |  | Late |
| 186 | 1.1.3.3.7.1 | Refining frameworks |  | 15d | 2015-09-04 | 2015-09-24 | 181SS+5d | -68d | 0d |  | Late |
| 187 | 1.1.3.3.7.2 | Org. Structure and Talent Assessment |  | 25d | 2015-12-11 | 2016-01-14 | 183, 186 | -123d | 0d |  | Late |
| 188 | 1.1.3.3.7.3 | Implementation Planning |  | 25d | 2016-01-15 | 2016-02-18 | 187 | -123d | 0d |  | Late |
| 189 | 1.1.3.3.7.4 | MILESTONE | milestone | 0d | 2016-02-18 | 2016-02-18 | 188 | -123d | 0d | 2015-08-31 | Late |

| ID | WBS | Task | Type | Duration | Start | Finish | Predecessors | Total slack | Free slack | Constraint | Deadline | Resources | Work | Text24 |
| --- | --- | --- | --- | --- | --- | --- | --- | --- | --- | --- | --- | --- | --- | --- |
| 190 | 1.1.3.3.8 | **Strategic Risk** |  | 120d | 2015-09-04 | 2016-02-18 |  | -123d | 0d |  |  |  |  | Late |
| 191 | 1.1.3.3.8.1 | Refining frameworks |  | 15d | 2015-09-04 | 2015-09-24 | 186SS | -68d | 0d |  |  |  |  | Late |
| 192 | 1.1.3.3.8.2 | Org. Structure and Talent Assessment |  | 25d | 2015-12-11 | 2016-01-14 | 183, 191 | -123d | 0d |  |  |  |  | Late |
| 193 | 1.1.3.3.8.3 | Implementation Planning |  | 25d | 2016-01-15 | 2016-02-18 | 192 | -123d | 0d |  |  |  |  | Late |
| 194 | 1.1.3.3.8.4 | MILESTONE | milestone | 0d | 2016-02-18 | 2016-02-18 | 193 | -123d | 0d |  | 2015-08-31 |  |  | Late |
| 195 | 1.1.3.3.9 | **RAS Framework** |  | 190d | 2015-09-04 | 2016-05-26 |  | -38d | 0d |  |  |  |  | Late |
| 196 | 1.1.3.3.9.1 | Refining frameworks |  | 10d | 2015-09-04 | 2015-09-17 | 191SS | -38d | 0d |  |  |  |  | Late |
| 197 | 1.1.3.3.9.2 | Org. Structure and Talent Assessment |  | 10d | 2015-09-18 | 2015-10-01 | 196 | -38d | 0d |  |  |  |  | Late |
| 198 | 1.1.3.3.9.3 | Implementation Planning |  | 15d | 2015-10-02 | 2015-10-22 | 197 | -38d | 0d |  |  |  |  | Late |
| 199 | 1.1.3.3.9.4 | MILESTONE | milestone | 0d | 2015-10-22 | 2015-10-22 | 198 | -38d | 0d |  | 2015-08-31 |  |  | Late |
| 200 | 1.1.3.3.9.5 | Post Implementation Review (First Round) |  | 30d | 2015-12-11 | 2016-01-21 | 183 | 1d | 0d |  |  |  |  | Late |
| 201 | 1.1.3.3.9.6 | Post Implementation Review (Second Round) |  | 35d | 2016-04-08 | 2016-05-26 | 200FS+55d | 1d |  |  |  |  |  | Late |
| 202 | 1.1.3.3.9.7 | Strong and desired culture |  | 35d | 2016-02-19 | 2016-04-07 | 193 | 36d |  |  |  |  |  | Late |
| 203 | 1.1.4 | **Risk Measurement** |  | 112d | 2015-05-28 | 2015-10-30 |  | 0d |  |  |  |  | 49024h |  |
| 204 | 1.1.4.1 | **Risk Measurement Deliverables** |  | 68d | 2015-07-28 | 2015-10-30 |  | 151d |  |  |  |  |  |  |
| 205 | 1.1.4.1.1 | Business Entity Material Risk Program Established for SHUSA | milestone | 0d | 2015-10-30 | 2015-10-30 | 277 | 151d |  |  |  |  |  |  |
| 206 | 1.1.4.1.2 | Business Entity Material Risk Program Established for SBNA | milestone | 0d | 2015-07-28 | 2015-07-28 | 468 | 219d |  |  |  |  |  |  |
| 207 | 1.1.4.1.3 | Business Entity Material Risk Program Established for SCUSA | milestone | 0d | 2015-07-28 | 2015-07-28 | 551 | 219d |  |  |  |  |  |  |
| 208 | 1.1.4.1.4 | Business Entity Material Risk Program Established for New York(SIS) | milestone | 0d | 2015-07-28 | 2015-07-28 | 662 | 219d |  |  |  |  |  |  |
| 209 | 1.1.4.1.5 | Business Entity Material Risk Program Established for Puerto Rico | milestone | 0d | 2015-07-28 | 2015-07-28 | 845 | 219d |  |  |  |  |  |  |
| 210 | 1.1.4.1.6 | Business Entity Material Risk Program Established for Miami | milestone | 0d | 2015-07-28 | 2015-07-28 | 928 | 219d |  |  |  |  |  |  |
| 211 | 1.1.4.2 | **SHUSA - Business Entity Material Risk Program** |  | 44d | 2015-09-01 | 2015-10-30 |  | 0d |  |  |  | David Mael | 3344h |  |
| 212 | 1.1.4.2.1 | **Preparation for Aggregation to Create SHUSA Material Risk Inventory** |  | 11d | 2015-09-01 | 2015-09-15 |  |  |  |  |  | David Mael | 248h |  |
| 213 | 1.1.4.2.1.1 | ERM Collects Risk Inventories from Entity Risk Managers |  | 6d | 2015-09-01 | 2015-09-08 |  | 188d |  | start no earlier than 2015-09-01 |  | David Mael | 48h |  |
| 214 | 1.1.4.2.1.2 | ERM Sorts risks and groups by Risk Type |  | 6d | 2015-09-01 | 2015-09-08 |  | 188d |  | start no earlier than 2015-09-01 |  | David Mael | 48h |  |
| 215 | 1.1.4.2.1.3 | ERM Creates pre-Workshop, pre-read Materials and instructions for SHUSA Risk Managers |  | 6d | 2015-09-01 | 2015-09-08 |  | 188d |  | start no earlier than 2015-09-01 |  | David Mael | 48h |  |
| 216 | 1.1.4.2.1.4 | ERM Distributes Workshop Materials to Responsible parties |  | 2d | 2015-09-08 | 2015-09-09 |  | 187d |  | start no earlier than 2015-09-08 |  | David Mael | 16h |  |
| 217 | 1.1.4.2.1.5 | SHUSA Material Risk Inventory Aggregation Prepared | milestone | 0d | 2015-09-15 | 2015-09-15 |  | 184d |  | start no earlier than 2015-09-15 |  | David Mael |  |  |

| ID | WBS | Task | Type | Duration | Start | Finish | Total slack | Constraint | Resources | Work |
| --- | --- | --- | --- | --- | --- | --- | --- | --- | --- | --- |
| 218 | 1.1.4.2.2 | **SHUSA Aggregation Workshops** |  | 13d | 2015-09-09 | 2015-09-25 |  |  | David Mael | 2744h |
| 219 | 1.1.4.2.2.1 | **Credit Risk Material Risk Aggregation** |  | 13d | 2015-09-09 | 2015-09-25 |  |  | David Mael | 264h |
| 220 | 1.1.4.2.2.1.1 | Credit Risk performs pre-Read and analysis |  | 5d | 2015-09-09 | 2015-09-15 | 183d | start no earlier than 2015-09-09 | David Mael | 40h |
| 221 | 1.1.4.2.2.1.2 | Risk Managers Conduct Credit pre-Workshop Enrichment and Aggregation Activites |  | 5d | 2015-09-09 | 2015-09-15 | 183d | start no earlier than 2015-09-09 | David Mael | 40h |
| 222 | 1.1.4.2.2.1.3 | ERM facilitates Credit Aggregation and Enrichment Workshop |  | 7d | 2015-09-15 | 2015-09-23 | 177d | start no earlier than 2015-09-15 | David Mael | 56h |
| 223 | 1.1.4.2.2.1.4 | Present to Level II Subcommittees |  | 3d | 2015-09-23 | 2015-09-25 | 175d | start no earlier than 2015-09-23 | David Mael | 24h |
| 224 | 1.1.4.2.2.1.5 | Credit Risk Material Risk Aggregation Prepared | milestone | 0d | 2015-09-25 | 2015-09-25 | 176d | start no earlier than 2015-09-25 | David Mael |  |
| 225 | 1.1.4.2.2.2 | **Operational Risk Material Risk Aggregation** |  | 13d | 2015-09-09 | 2015-09-25 |  |  | David Mael | 264h |
| 226 | 1.1.4.2.2.2.1 | Operational Risk performs pre-Read and analysis |  | 5d | 2015-09-09 | 2015-09-15 | 183d | start no earlier than 2015-09-09 | David Mael | 40h |
| 227 | 1.1.4.2.2.2.2 | Risk Managers Conduct Operational Risk pre-Workshop Enrichment and Aggregation Activites |  | 5d | 2015-09-09 | 2015-09-15 | 183d | start no earlier than 2015-09-09 | David Mael | 40h |
| 228 | 1.1.4.2.2.2.3 | ERM facilitates Operational Risk Aggregation and Enrichment Workshop |  | 7d | 2015-09-15 | 2015-09-23 | 177d | start no earlier than 2015-09-15 | David Mael | 56h |
| 229 | 1.1.4.2.2.2.4 | Present to Level II Subcommittees |  | 3d | 2015-09-23 | 2015-09-25 | 175d | finish no earlier than 2015-09-25 | David Mael | 24h |
| 230 | 1.1.4.2.2.2.5 | Operational Risk Material Risk Aggregation Prepared | milestone | 0d | 2015-09-25 | 2015-09-25 | 175d | finish no earlier than 2015-09-25 | David Mael |  |
| 231 | 1.1.4.2.2.3 | **Compliance Material Risk Aggregation** |  | 13d | 2015-09-09 | 2015-09-25 |  |  | David Mael | 264h |
| 232 | 1.1.4.2.2.3.1 | Compliance performs pre-Read and analysis |  | 5d | 2015-09-09 | 2015-09-15 | 183d | start no earlier than 2015-09-09 | David Mael | 40h |
| 233 | 1.1.4.2.2.3.2 | Risk Managers Conduct Compliance pre-Workshop Enrichment and Aggregation Activites |  | 5d | 2015-09-09 | 2015-09-15 | 183d | start no earlier than 2015-09-09 | David Mael | 40h |
| 234 | 1.1.4.2.2.3.3 | ERM facilitates Compliance Aggregation and Enrichment Workshop |  | 7d | 2015-09-15 | 2015-09-23 | 177d | start no earlier than 2015-09-15 | David Mael | 56h |
| 235 | 1.1.4.2.2.3.4 | Present to Level II Subcommittees |  | 3d | 2015-09-23 | 2015-09-25 | 175d | start no earlier than 2015-09-23 | David Mael | 24h |
| 236 | 1.1.4.2.2.3.5 | Compliance Material Risk Aggregation Prepared | milestone | 0d | 2015-09-25 | 2015-09-25 | 176d | start no earlier than 2015-09-25 | David Mael |  |
| 237 | 1.1.4.2.2.4 | **Model Material Risk Aggregation** |  | 13d | 2015-09-09 | 2015-09-25 |  |  | David Mael | 264h |
| 238 | 1.1.4.2.2.4.1 | Model Risk performs pre-Read and analysis |  | 5d | 2015-09-09 | 2015-09-15 | 183d | start no earlier than 2015-09-09 | David Mael | 40h |
| 239 | 1.1.4.2.2.4.2 | Risk Managers Conduct Model pre-Workshop Enrichment and Aggregation Activites |  | 5d | 2015-09-09 | 2015-09-15 | 183d | start no earlier than 2015-09-09 | David Mael | 40h |
| 240 | 1.1.4.2.2.4.3 | ERM facilitates Model Aggregation and Enrichment Workshop |  | 7d | 2015-09-15 | 2015-09-23 | 177d | start no earlier than 2015-09-15 | David Mael | 56h |
| 241 | 1.1.4.2.2.4.4 | Present to Level II Subcommittees |  | 3d | 2015-09-23 | 2015-09-25 | 175d | start no earlier than 2015-09-23 | David Mael | 24h |
| 242 | 1.1.4.2.2.4.5 | Model Material Risk Aggregation Prepared | milestone | 0d | 2015-09-25 | 2015-09-25 | 176d | start no earlier than 2015-09-25 | David Mael |  |

| ID | WBS | Task | Type | Duration | Start | Finish | Total slack | Constraint | Resources | Work |
| --- | --- | --- | --- | --- | --- | --- | --- | --- | --- | --- |
| 243 | 1.1.4.2.2.5 | **Market Material Risk Aggregation** |  | 13d | 2015-09-09 | 2015-09-25 |  |  | David Mael | 264h |
| 244 | 1.1.4.2.2.5.1 | Market Risk performs pre-Read and analysis |  | 5d | 2015-09-09 | 2015-09-15 | 183d | start no earlier than 2015-09-09 | David Mael | 40h |
| 245 | 1.1.4.2.2.5.2 | Risk Managers Conduct Market pre-Workshop Enrichment and Aggregation Activites |  | 5d | 2015-09-09 | 2015-09-15 | 183d | start no earlier than 2015-09-09 | David Mael | 40h |
| 246 | 1.1.4.2.2.5.3 | ERM facilitates Market Aggregation and Enrichment Workshop |  | 7d | 2015-09-15 | 2015-09-23 | 177d | start no earlier than 2015-09-15 | David Mael | 56h |
| 247 | 1.1.4.2.2.5.4 | Present to Level II Subcommittees |  | 3d | 2015-09-23 | 2015-09-25 | 175d | start no earlier than 2015-09-23 | David Mael | 24h |
| 248 | 1.1.4.2.2.5.5 | Market Material Risk Aggregation Prepared | milestone | 0d | 2015-09-25 | 2015-09-25 | 176d | start no earlier than 2015-09-25 | David Mael |  |
| 249 | 1.1.4.2.2.6 | **Liquidity Material Risk Aggregation** |  | 13d | 2015-09-09 | 2015-09-25 |  |  | David Mael | 264h |
| 250 | 1.1.4.2.2.6.1 | Liquidity Risk performs pre-Read and analysis |  | 5d | 2015-09-09 | 2015-09-15 | 183d | start no earlier than 2015-09-09 | David Mael | 40h |
| 251 | 1.1.4.2.2.6.2 | Risk Managers Conduct Liquidity pre-Workshop Enrichment and Aggregation Activites |  | 5d | 2015-09-09 | 2015-09-15 | 183d | start no earlier than 2015-09-09 | David Mael | 40h |
| 252 | 1.1.4.2.2.6.3 | ERM facilitates Liquidity Aggregation and Enrichment Workshop |  | 7d | 2015-09-15 | 2015-09-23 | 177d | start no earlier than 2015-09-15 | David Mael | 56h |
| 253 | 1.1.4.2.2.6.4 | Present to Level II Subcommittees |  | 3d | 2015-09-23 | 2015-09-25 | 175d | start no earlier than 2015-09-23 | David Mael | 24h |
| 254 | 1.1.4.2.2.6.5 | Liquidity Material Risk Aggregation Prepared | milestone | 0d | 2015-09-25 | 2015-09-25 | 176d | start no earlier than 2015-09-25 | David Mael |  |
| 255 | 1.1.4.2.2.7 | **Strategic Material Risk Aggregation** |  | 13d | 2015-09-09 | 2015-09-25 |  |  | David Mael | 264h |
| 256 | 1.1.4.2.2.7.1 | Strategic Risk performs pre-Read and analysis |  | 5d | 2015-09-09 | 2015-09-15 | 183d | start no earlier than 2015-09-09 | David Mael | 40h |
| 257 | 1.1.4.2.2.7.2 | Risk Managers Conduct Strategic pre-Workshop Enrichment and Aggregation Activites |  | 5d | 2015-09-09 | 2015-09-15 | 183d | start no earlier than 2015-09-09 | David Mael | 40h |
| 258 | 1.1.4.2.2.7.3 | ERM facilitates Strategic Aggregation and Enrichment Workshop |  | 7d | 2015-09-15 | 2015-09-23 | 177d | start no earlier than 2015-09-15 | David Mael | 56h |
| 259 | 1.1.4.2.2.7.4 | Present to Level II Subcommittees |  | 3d | 2015-09-23 | 2015-09-25 | 175d | start no earlier than 2015-09-23 | David Mael | 24h |
| 260 | 1.1.4.2.2.7.5 | Strategic Material Risk Aggregation Prepared | milestone | 0d | 2015-09-25 | 2015-09-25 | 176d | start no earlier than 2015-09-25 | David Mael |  |
| 261 | 1.1.4.2.2.8 | **Reputational Material Risk Aggregation** |  | 13d | 2015-09-09 | 2015-09-25 |  |  | David Mael | 264h |
| 262 | 1.1.4.2.2.8.1 | Reputational Risk performs pre-Read and analysis |  | 5d | 2015-09-09 | 2015-09-15 | 183d | start no earlier than 2015-09-09 | David Mael | 40h |
| 263 | 1.1.4.2.2.8.2 | Risk Managers Conduct Reputational pre-Workshop Enrichment and Aggregation Activites |  | 5d | 2015-09-09 | 2015-09-15 | 183d | start no earlier than 2015-09-09 | David Mael | 40h |
| 264 | 1.1.4.2.2.8.3 | ERM facilitates Reputational Aggregation and Enrichment Workshop |  | 7d | 2015-09-15 | 2015-09-23 | 177d | start no earlier than 2015-09-15 | David Mael | 56h |
| 265 | 1.1.4.2.2.8.4 | Present to Level II Subcommittees |  | 3d | 2015-09-23 | 2015-09-25 | 175d | start no earlier than 2015-09-23 | David Mael | 24h |
| 266 | 1.1.4.2.2.8.5 | Reputational Material Risk Aggregation Prepared | milestone | 0d | 2015-09-25 | 2015-09-25 | 176d | start no earlier than 2015-09-25 | David Mael |  |

| ID | WBS | Task | Type | Duration | Start | Finish | Total slack | Free slack | Constraint | Resources | Work |
| --- | --- | --- | --- | --- | --- | --- | --- | --- | --- | --- | --- |
| 267 | 1.1.4.2.2.9 | **SHUSA Top Down Aggregation** |  | 11d | 2015-09-25 | 2015-10-09 |  |  |  | David Mael | 256h |
| 268 | 1.1.4.2.2.9.1 | ERM consolidates risks into SHUSA Inventory |  | 2d | 2015-09-25 | 2015-09-28 | 174d |  | start no earlier than 2015-09-25 | David Mael | 16h |
| 269 | 1.1.4.2.2.9.2 | ERM distributes inventory to SHUSA Business and Risk executives |  | 3d | 2015-09-28 | 2015-09-30 | 172d |  | start no earlier than 2015-09-28 | David Mael | 24h |
| 270 | 1.1.4.2.2.9.3 | ERM facilitates top down risk aggregation |  | 8d | 2015-09-30 | 2015-10-09 | 165d |  | start no earlier than 2015-09-30 | David Mael | 64h |
| 271 | 1.1.4.2.2.9.4 | ERM incorporates final risks into SHUSA Inventory |  | 8d | 2015-09-30 | 2015-10-09 | 165d |  | start no earlier than 2015-09-30 | David Mael | 64h |
| 272 | 1.1.4.2.2.9.5 | SHUSA Top Down Aggregation Prepared | milestone | 0d | 2015-10-09 | 2015-10-09 | 166d |  | start no earlier than 2015-10-09 | David Mael |  |
| 273 | 1.1.4.2.2.10 | **Material Risk SHUSA Approval** |  | 16d | 2015-10-09 | 2015-10-30 |  |  |  | David Mael | 272h |
| 274 | 1.1.4.2.2.10.1 | Present SHUSA Material Risks to BERC |  | 6d | 2015-10-09 | 2015-10-16 | 160d |  | start no earlier than 2015-10-09 | David Mael | 48h |
| 275 | 1.1.4.2.2.10.2 | Present SHUSA Material Risks to ERMC |  | 11d | 2015-10-16 | 2015-10-30 | 150d |  | start no earlier than 2015-10-16 | David Mael | 88h |
| 276 | 1.1.4.2.2.10.3 | Present SHUSA Material Risks to CCAR |  | 1d | 2015-10-30 | 2015-10-30 | 150d |  | start no earlier than 2015-10-30 | David Mael | 8h |
| 277 | 1.1.4.2.2.10.4 | Material Risk SHUSA Approval Prepared | milestone | 0d | 2015-10-30 | 2015-10-30 | 151d | 0d | start no earlier than 2015-10-30 | David Mael |  |
| 278 | 1.1.4.3 | **SBNA - Business Entity Material Risk Program** |  | 68d | 2015-05-28 | 2015-08-31 | 0d |  |  | R. Alhadeff/M. Carbone | 14216h |
| 279 | 1.1.4.3.1 | **Retail Banking Material Risk Inventory** |  | 24d | 2015-05-28 | 2015-06-30 |  |  |  | R. Alhadeff/M. Carbone | 2640h |
| 280 | 1.1.4.3.1.1 | **Small Business Banking Material Risk Inventory** |  | 24d | 2015-05-28 | 2015-06-30 |  |  |  | R. Alhadeff/M. Carbone | 408h |
| 281 | 1.1.4.3.1.1.1 | Create risk Inventory |  | 17d | 2015-05-28 | 2015-06-19 | 245d |  | start no earlier than 2015-05-28 | R. Alhadeff/M. Carbone | 136h |
| 282 | 1.1.4.3.1.1.2 | Present Draft to ERM |  | 3d | 2015-06-19 | 2015-06-23 | 243d |  | start no earlier than 2015-06-19 | R. Alhadeff/M. Carbone | 24h |
| 283 | 1.1.4.3.1.1.3 | ERM provides feedback |  | 5d | 2015-06-23 | 2015-06-29 | 239d |  | start no earlier than 2015-06-23 | R. Alhadeff/M. Carbone | 40h |
| 284 | 1.1.4.3.1.1.4 | Deliver Final to ERM |  | 2d | 2015-06-29 | 2015-06-30 | 238d |  | start no earlier than 2015-06-29 | R. Alhadeff/M. Carbone | 16h |
| 285 | 1.1.4.3.1.1.5 | Small Business Banking Material Risk Inventory Prepared | milestone | 0d | 2015-06-30 | 2015-06-30 | 239d |  | start no earlier than 2015-06-30 | R. Alhadeff/M. Carbone |  |
| 286 | 1.1.4.3.1.2 | **Cards Material Risk Inventory** |  | 24d | 2015-05-28 | 2015-06-30 |  |  |  | R. Alhadeff/M. Carbone | 408h |
| 287 | 1.1.4.3.1.2.1 | Create risk Inventory |  | 17d | 2015-05-28 | 2015-06-19 | 245d |  | start no earlier than 2015-05-28 | R. Alhadeff/M. Carbone | 136h |
| 288 | 1.1.4.3.1.2.2 | Present Draft to ERM |  | 3d | 2015-06-19 | 2015-06-23 | 243d |  | start no earlier than 2015-06-19 | R. Alhadeff/M. Carbone | 24h |
| 289 | 1.1.4.3.1.2.3 | ERM provides feedback |  | 5d | 2015-06-23 | 2015-06-29 | 239d |  | start no earlier than 2015-06-23 | R. Alhadeff/M. Carbone | 40h |
| 290 | 1.1.4.3.1.2.4 | Deliver Final to ERM |  | 2d | 2015-06-29 | 2015-06-30 | 238d |  | start no earlier than 2015-06-29 | R. Alhadeff/M. Carbone | 16h |
| 291 | 1.1.4.3.1.2.5 | Cards Material Risk Inventory Prepared | milestone | 0d | 2015-06-30 | 2015-06-30 | 239d |  | start no earlier than 2015-06-30 | R. Alhadeff/M. Carbone |  |

| ID | WBS | Task | Type | Duration | Start | Finish | Total slack | Constraint | Resources | Work |
| --- | --- | --- | --- | --- | --- | --- | --- | --- | --- | --- |
| 292 | 1.1.4.3.1.3 | **Mortgages Material Risk Inventory** |  | 24d | 2015-05-28 | 2015-06-30 |  |  | R. Alhadeff/M. Carbone | 408h |
| 293 | 1.1.4.3.1.3.1 | Create risk Inventory |  | 17d | 2015-05-28 | 2015-06-19 | 245d | start no earlier than 2015-05-28 | R. Alhadeff/M. Carbone | 136h |
| 294 | 1.1.4.3.1.3.2 | Present Draft to ERM |  | 3d | 2015-06-19 | 2015-06-23 | 243d | start no earlier than 2015-06-19 | R. Alhadeff/M. Carbone | 24h |
| 295 | 1.1.4.3.1.3.3 | ERM provides feedback |  | 5d | 2015-06-23 | 2015-06-29 | 239d | start no earlier than 2015-06-23 | R. Alhadeff/M. Carbone | 40h |
| 296 | 1.1.4.3.1.3.4 | Deliver Final to ERM |  | 2d | 2015-06-29 | 2015-06-30 | 238d | start no earlier than 2015-06-29 | R. Alhadeff/M. Carbone | 16h |
| 297 | 1.1.4.3.1.3.5 | Mortgages Material Risk Inventory Prepared | milestone | 0d | 2015-06-30 | 2015-06-30 | 239d | start no earlier than 2015-06-30 | R. Alhadeff/M. Carbone |  |
| 298 | 1.1.4.3.1.4 | **Purchased Portfolios (RV/Marine) Material Risk Inventory** |  | 24d | 2015-05-28 | 2015-06-30 |  |  | R. Alhadeff/M. Carbone | 408h |
| 299 | 1.1.4.3.1.4.1 | Create risk Inventory |  | 17d | 2015-05-28 | 2015-06-19 | 245d | start no earlier than 2015-05-28 | R. Alhadeff/M. Carbone | 136h |
| 300 | 1.1.4.3.1.4.2 | Present Draft to ERM |  | 3d | 2015-06-19 | 2015-06-23 | 243d | start no earlier than 2015-06-19 | R. Alhadeff/M. Carbone | 24h |
| 301 | 1.1.4.3.1.4.3 | ERM provides feedback |  | 5d | 2015-06-23 | 2015-06-29 | 239d | start no earlier than 2015-06-23 | R. Alhadeff/M. Carbone | 40h |
| 302 | 1.1.4.3.1.4.4 | Deliver Final to ERM |  | 2d | 2015-06-29 | 2015-06-30 | 238d | start no earlier than 2015-06-29 | R. Alhadeff/M. Carbone | 16h |
| 303 | 1.1.4.3.1.4.5 | Purchased Portfolio (RV/Marine) Material Risk Inventory Prepared | milestone | 0d | 2015-06-30 | 2015-06-30 | 239d | start no earlier than 2015-06-30 | R. Alhadeff/M. Carbone |  |
| 304 | 1.1.4.3.1.5 | **Individual Material Risk Inventory** |  | 24d | 2015-05-28 | 2015-06-30 |  |  | R. Alhadeff/M. Carbone | 408h |
| 305 | 1.1.4.3.1.5.1 | Create risk Inventory |  | 17d | 2015-05-28 | 2015-06-19 | 245d | start no earlier than 2015-05-28 | R. Alhadeff/M. Carbone | 136h |
| 306 | 1.1.4.3.1.5.2 | Present Draft to ERM |  | 3d | 2015-06-19 | 2015-06-23 | 243d | start no earlier than 2015-06-19 | R. Alhadeff/M. Carbone | 24h |
| 307 | 1.1.4.3.1.5.3 | ERM provides feedback |  | 5d | 2015-06-23 | 2015-06-29 | 239d | start no earlier than 2015-06-23 | R. Alhadeff/M. Carbone | 40h |
| 308 | 1.1.4.3.1.5.4 | Deliver Final to ERM |  | 2d | 2015-06-29 | 2015-06-30 | 238d | start no earlier than 2015-06-29 | R. Alhadeff/M. Carbone | 16h |
| 309 | 1.1.4.3.1.5.5 | Individual Material Risk Inventory Prepared | milestone | 0d | 2015-06-30 | 2015-06-30 | 239d | start no earlier than 2015-06-30 | R. Alhadeff/M. Carbone |  |
| 310 | 1.1.4.3.1.6 | **Wealth Management Material Risk Inventory** |  | 24d | 2015-05-28 | 2015-06-30 |  |  | R. Alhadeff/M. Carbone | 408h |
| 311 | 1.1.4.3.1.6.1 | Create risk Inventory |  | 17d | 2015-05-28 | 2015-06-19 | 245d | start no earlier than 2015-05-28 | R. Alhadeff/M. Carbone | 136h |
| 312 | 1.1.4.3.1.6.2 | Present Draft to ERM |  | 3d | 2015-06-19 | 2015-06-23 | 243d | start no earlier than 2015-06-19 | R. Alhadeff/M. Carbone | 24h |
| 313 | 1.1.4.3.1.6.3 | ERM provides feedback |  | 5d | 2015-06-23 | 2015-06-29 | 239d | start no earlier than 2015-06-23 | R. Alhadeff/M. Carbone | 40h |
| 314 | 1.1.4.3.1.6.4 | Deliver Final to ERM |  | 2d | 2015-06-29 | 2015-06-30 | 238d | start no earlier than 2015-06-29 | R. Alhadeff/M. Carbone | 16h |
| 315 | 1.1.4.3.1.6.5 | Wealth Mgmt Material Risk Inventory Prepared | milestone | 0d | 2015-06-30 | 2015-06-30 | 239d | start no earlier than 2015-06-30 | R. Alhadeff/M. Carbone |  |

| ID | WBS | Task | Type | Duration | Start | Finish | Total slack | Constraint | Resources | Work |
| --- | --- | --- | --- | --- | --- | --- | --- | --- | --- | --- |
| 316 | 1.1.4.3.2 | **Retail: Create Retail Banking Material Risk Inventory** |  | 24d | 2015-05-28 | 2015-06-30 |  |  | R. Alhadeff/M. Carbone | 400h |
| 317 | 1.1.4.3.2.1 | Create Segment Material Risk Inventory (Aggregation) |  | 24d | 2015-05-28 | 2015-06-30 | 238d | start no earlier than 2015-05-28 | R. Alhadeff/M. Carbone | 192h |
| 318 | 1.1.4.3.2.2 | Segment head presents inventory to ERMC |  | 2d | 2015-06-29 | 2015-06-30 | 238d | start no earlier than 2015-06-29 | R. Alhadeff/M. Carbone | 16h |
| 319 | 1.1.4.3.2.3 | Retail Banking Material Risk Inventory Prepared | milestone | 0d | 2015-06-30 | 2015-06-30 | 239d | start no earlier than 2015-06-30 | R. Alhadeff/M. Carbone |  |
| 320 | 1.1.4.3.3 | **Commercial Banking Material Risk Inventory** |  | 24d | 2015-05-28 | 2015-06-30 |  |  | R. Alhadeff/M. Carbone | 1416h |
| 321 | 1.1.4.3.3.1 | **Commercial and Industrial Material Risk Inventory** |  | 24d | 2015-05-28 | 2015-06-30 |  |  | R. Alhadeff/M. Carbone | 408h |
| 322 | 1.1.4.3.3.1.1 | Create risk Inventory |  | 17d | 2015-05-28 | 2015-06-19 | 245d | start no earlier than 2015-05-28 | R. Alhadeff/M. Carbone | 136h |
| 323 | 1.1.4.3.3.1.2 | Present Draft to ERM |  | 3d | 2015-06-19 | 2015-06-23 | 243d | start no earlier than 2015-06-19 | R. Alhadeff/M. Carbone | 24h |
| 324 | 1.1.4.3.3.1.3 | ERM provides feedback |  | 5d | 2015-06-23 | 2015-06-29 | 239d | start no earlier than 2015-06-23 | R. Alhadeff/M. Carbone | 40h |
| 325 | 1.1.4.3.3.1.4 | Deliver Final to ERM |  | 2d | 2015-06-29 | 2015-06-30 | 238d | start no earlier than 2015-06-29 | R. Alhadeff/M. Carbone | 16h |
| 326 | 1.1.4.3.3.1.5 | Commercial and Industrial Material Risk Inventory Prepared | milestone | 0d | 2015-06-30 | 2015-06-30 | 239d | start no earlier than 2015-06-30 | R. Alhadeff/M. Carbone |  |
| 327 | 1.1.4.3.3.2 | **Specialties Material Risk Inventory** |  | 24d | 2015-05-28 | 2015-06-30 |  |  | R. Alhadeff/M. Carbone | 408h |
| 328 | 1.1.4.3.3.2.1 | Create risk Inventory |  | 17d | 2015-05-28 | 2015-06-19 | 245d | start no earlier than 2015-05-28 | R. Alhadeff/M. Carbone | 136h |
| 329 | 1.1.4.3.3.2.2 | Present Draft to ERM |  | 3d | 2015-06-19 | 2015-06-23 | 243d | start no earlier than 2015-06-19 | R. Alhadeff/M. Carbone | 24h |
| 330 | 1.1.4.3.3.2.3 | ERM provides feedback |  | 5d | 2015-06-23 | 2015-06-29 | 239d | start no earlier than 2015-06-23 | R. Alhadeff/M. Carbone | 40h |
| 331 | 1.1.4.3.3.2.4 | Deliver Final to ERM |  | 2d | 2015-06-29 | 2015-06-30 | 238d | start no earlier than 2015-06-29 | R. Alhadeff/M. Carbone | 16h |
| 332 | 1.1.4.3.3.2.5 | Specialties Material Risk Inventory Prepared | milestone | 0d | 2015-06-30 | 2015-06-30 | 239d | start no earlier than 2015-06-30 | R. Alhadeff/M. Carbone |  |
| 333 | 1.1.4.3.3.3 | **Government Banking Material Risk Inventory** |  | 24d | 2015-05-28 | 2015-06-30 |  |  | R. Alhadeff/M. Carbone | 408h |
| 334 | 1.1.4.3.3.3.1 | Create risk Inventory |  | 17d | 2015-05-28 | 2015-06-19 | 245d | start no earlier than 2015-05-28 | R. Alhadeff/M. Carbone | 136h |
| 335 | 1.1.4.3.3.3.2 | Present Draft to ERM |  | 3d | 2015-06-19 | 2015-06-23 | 243d | start no earlier than 2015-06-19 | R. Alhadeff/M. Carbone | 24h |
| 336 | 1.1.4.3.3.3.3 | ERM provides feedback |  | 5d | 2015-06-23 | 2015-06-29 | 239d | start no earlier than 2015-06-23 | R. Alhadeff/M. Carbone | 40h |
| 337 | 1.1.4.3.3.3.4 | Deliver Final to ERM |  | 2d | 2015-06-29 | 2015-06-30 | 238d | start no earlier than 2015-06-29 | R. Alhadeff/M. Carbone | 16h |
| 338 | 1.1.4.3.3.3.5 | Government Banking Material Risk Inventory Prepared | milestone | 0d | 2015-06-30 | 2015-06-30 | 239d | start no earlier than 2015-06-30 | R. Alhadeff/M. Carbone |  |
| 339 | 1.1.4.3.4 | **Commercial: Create Commercial Banking Material Risk Inventory** |  | 24d | 2015-05-28 | 2015-06-30 |  |  | R. Alhadeff/M. Carbone | 400h |
| 340 | 1.1.4.3.4.1 | Create Segment Material Risk Inventory (Aggregation) |  | 24d | 2015-05-28 | 2015-06-30 | 238d | start no earlier than 2015-05-28 | R. Alhadeff/M. Carbone | 192h |
| 341 | 1.1.4.3.4.2 | Segment head presents inventory to ERMC |  | 2d | 2015-06-29 | 2015-06-30 | 238d | start no earlier than 2015-06-29 | R. Alhadeff/M. Carbone | 16h |
| 342 | 1.1.4.3.4.3 | Commercial Banking Material Risk Inventory Prepared | milestone | 0d | 2015-06-30 | 2015-06-30 | 239d | start no earlier than 2015-06-30 | R. Alhadeff/M. Carbone |  |

| ID | WBS | Task | Type | Duration | Start | Finish | Total slack | Constraint | Resources | Work |
| --- | --- | --- | --- | --- | --- | --- | --- | --- | --- | --- |
| 343 | 1.1.4.3.5 | **Global Banking Material Risk Inventory** |  | 24d | 2015-05-28 | 2015-06-30 |  |  | R. Alhadeff/M. Carbone | 1008h |
| 344 | 1.1.4.3.5.1 | **MRG Material Risk Inventory** |  | 24d | 2015-05-28 | 2015-06-30 |  |  | R. Alhadeff/M. Carbone | 408h |
| 345 | 1.1.4.3.5.1.1 | Create risk Inventory |  | 17d | 2015-05-28 | 2015-06-19 | 245d | start no earlier than 2015-05-28 | R. Alhadeff/M. Carbone | 136h |
| 346 | 1.1.4.3.5.1.2 | Present Draft to ERM |  | 3d | 2015-06-19 | 2015-06-23 | 243d | start no earlier than 2015-06-19 | R. Alhadeff/M. Carbone | 24h |
| 347 | 1.1.4.3.5.1.3 | ERM provides feedback |  | 5d | 2015-06-23 | 2015-06-29 | 239d | start no earlier than 2015-06-23 | R. Alhadeff/M. Carbone | 40h |
| 348 | 1.1.4.3.5.1.4 | Deliver Final to ERM |  | 2d | 2015-06-29 | 2015-06-30 | 238d | start no earlier than 2015-06-29 | R. Alhadeff/M. Carbone | 16h |
| 349 | 1.1.4.3.5.1.5 | MRG Material Risk Inventory Prepared | milestone | 0d | 2015-06-30 | 2015-06-30 | 239d | start no earlier than 2015-06-30 | R. Alhadeff/M. Carbone |  |
| 350 | 1.1.4.3.5.2 | **Large Corporates Material Risk Inventory** |  | 24d | 2015-05-28 | 2015-06-30 |  |  | R. Alhadeff/M. Carbone | 408h |
| 351 | 1.1.4.3.5.2.1 | Create risk Inventory |  | 17d | 2015-05-28 | 2015-06-19 | 245d | start no earlier than 2015-05-28 | R. Alhadeff/M. Carbone | 136h |
| 352 | 1.1.4.3.5.2.2 | Present Draft to ERM |  | 3d | 2015-06-19 | 2015-06-23 | 243d | start no earlier than 2015-06-19 | R. Alhadeff/M. Carbone | 24h |
| 353 | 1.1.4.3.5.2.3 | ERM provides feedback |  | 5d | 2015-06-23 | 2015-06-29 | 239d | start no earlier than 2015-06-23 | R. Alhadeff/M. Carbone | 40h |
| 354 | 1.1.4.3.5.2.4 | Deliver Final to ERM |  | 2d | 2015-06-29 | 2015-06-30 | 238d | start no earlier than 2015-06-29 | R. Alhadeff/M. Carbone | 16h |
| 355 | 1.1.4.3.5.2.5 | Large Corporates Material Risk Inventory Prepared | milestone | 0d | 2015-06-30 | 2015-06-30 | 239d | start no earlier than 2015-06-30 | R. Alhadeff/M. Carbone |  |
| 356 | 1.1.4.3.6 | **Global: Create Global Banking Material Risk Inventory** |  | 24d | 2015-05-28 | 2015-06-30 |  |  | R. Alhadeff/M. Carbone | 400h |
| 357 | 1.1.4.3.6.1 | Create Segment Material Risk Inventory (Aggregation) |  | 24d | 2015-05-28 | 2015-06-30 | 238d | start no earlier than 2015-05-28 | R. Alhadeff/M. Carbone | 192h |
| 358 | 1.1.4.3.6.2 | Segment head presents inventory to ERMC |  | 2d | 2015-06-29 | 2015-06-30 | 238d | start no earlier than 2015-06-29 | R. Alhadeff/M. Carbone | 16h |
| 359 | 1.1.4.3.6.3 | Global Banking Material Risk Inventory Prepared | milestone | 0d | 2015-06-30 | 2015-06-30 | 239d | start no earlier than 2015-06-30 | R. Alhadeff/M. Carbone |  |
| 360 | 1.1.4.3.7 | **Automotive Finance Material Risk Inventory** |  | 24d | 2015-05-28 | 2015-06-30 |  |  | R. Alhadeff/M. Carbone | 1416h |
| 361 | 1.1.4.3.7.1 | **CEVF Material Risk Inventory** |  | 24d | 2015-05-28 | 2015-06-30 |  |  | R. Alhadeff/M. Carbone | 408h |
| 362 | 1.1.4.3.7.1.1 | Create risk Inventory |  | 17d | 2015-05-28 | 2015-06-19 | 245d | start no earlier than 2015-05-28 | R. Alhadeff/M. Carbone | 136h |
| 363 | 1.1.4.3.7.1.2 | Present Draft to ERM |  | 3d | 2015-06-19 | 2015-06-23 | 243d | start no earlier than 2015-06-19 | R. Alhadeff/M. Carbone | 24h |
| 364 | 1.1.4.3.7.1.3 | ERM provides feedback |  | 5d | 2015-06-23 | 2015-06-29 | 239d | start no earlier than 2015-06-23 | R. Alhadeff/M. Carbone | 40h |
| 365 | 1.1.4.3.7.1.4 | Deliver Final to ERM |  | 2d | 2015-06-29 | 2015-06-30 | 238d | start no earlier than 2015-06-29 | R. Alhadeff/M. Carbone | 16h |
| 366 | 1.1.4.3.7.1.5 | CEVF Material Risk Inventory Prepared | milestone | 0d | 2015-06-30 | 2015-06-30 | 239d | start no earlier than 2015-06-30 | R. Alhadeff/M. Carbone |  |

| ID | WBS | Task | Type | Duration | Start | Finish | Total slack | Constraint | Resources | Work |
| --- | --- | --- | --- | --- | --- | --- | --- | --- | --- | --- |
| 367 | 1.1.4.3.7.2 | **Leasing Material Risk Inventory** |  | 24d | 2015-05-28 | 2015-06-30 |  |  | R. Alhadeff/M. Carbone | 408h |
| 368 | 1.1.4.3.7.2.1 | Create risk Inventory |  | 17d | 2015-05-28 | 2015-06-19 | 245d | start no earlier than 2015-05-28 | R. Alhadeff/M. Carbone | 136h |
| 369 | 1.1.4.3.7.2.2 | Present Draft to ERM |  | 3d | 2015-06-19 | 2015-06-23 | 243d | start no earlier than 2015-06-19 | R. Alhadeff/M. Carbone | 24h |
| 370 | 1.1.4.3.7.2.3 | ERM provides feedback |  | 5d | 2015-06-23 | 2015-06-29 | 239d | start no earlier than 2015-06-23 | R. Alhadeff/M. Carbone | 40h |
| 371 | 1.1.4.3.7.2.4 | Deliver Final to ERM |  | 2d | 2015-06-29 | 2015-06-30 | 238d | start no earlier than 2015-06-29 | R. Alhadeff/M. Carbone | 16h |
| 372 | 1.1.4.3.7.2.5 | Leasing Material Risk Inventory Prepared | milestone | 0d | 2015-06-30 | 2015-06-30 | 239d | start no earlier than 2015-06-30 | R. Alhadeff/M. Carbone |  |
| 373 | 1.1.4.3.7.3 | **Dealer Floor Plan Material Risk Inventory** |  | 24d | 2015-05-28 | 2015-06-30 |  |  | R. Alhadeff/M. Carbone | 408h |
| 374 | 1.1.4.3.7.3.1 | Create risk Inventory |  | 17d | 2015-05-28 | 2015-06-19 | 245d | start no earlier than 2015-05-28 | R. Alhadeff/M. Carbone | 136h |
| 375 | 1.1.4.3.7.3.2 | Present Draft to ERM |  | 3d | 2015-06-19 | 2015-06-23 | 243d | start no earlier than 2015-06-19 | R. Alhadeff/M. Carbone | 24h |
| 376 | 1.1.4.3.7.3.3 | ERM provides feedback |  | 5d | 2015-06-23 | 2015-06-29 | 239d | start no earlier than 2015-06-23 | R. Alhadeff/M. Carbone | 40h |
| 377 | 1.1.4.3.7.3.4 | Deliver Final to ERM |  | 2d | 2015-06-29 | 2015-06-30 | 238d | start no earlier than 2015-06-29 | R. Alhadeff/M. Carbone | 16h |
| 378 | 1.1.4.3.7.3.5 | Dealer Floor Plan Material Risk Inventory Prepared | milestone | 0d | 2015-06-30 | 2015-06-30 | 239d | start no earlier than 2015-06-30 | R. Alhadeff/M. Carbone |  |
| 379 | 1.1.4.3.8 | **Automotive: Create Automotive Finance Material Risk Inventory** |  | 24d | 2015-05-28 | 2015-06-30 |  |  | R. Alhadeff/M. Carbone | 400h |
| 380 | 1.1.4.3.8.1 | Create Segment Material Risk Inventory (Aggregation) |  | 24d | 2015-05-28 | 2015-06-30 | 238d | start no earlier than 2015-05-28 | R. Alhadeff/M. Carbone | 192h |
| 381 | 1.1.4.3.8.2 | Segment head presents inventory to ERMC |  | 2d | 2015-06-29 | 2015-06-30 | 238d | start no earlier than 2015-06-29 | R. Alhadeff/M. Carbone | 16h |
| 382 | 1.1.4.3.8.3 | Automotive Finance Material Risk Inventory Prepared | milestone | 0d | 2015-06-30 | 2015-06-30 | 239d | start no earlier than 2015-06-30 | R. Alhadeff/M. Carbone |  |
| 383 | 1.1.4.3.9 | **Commerical Real Estate Material Risk Inventory** |  | 24d | 2015-05-28 | 2015-06-30 |  |  | R. Alhadeff/M. Carbone | 416h |
| 384 | 1.1.4.3.9.1 | Create risk Inventory |  | 17d | 2015-05-28 | 2015-06-19 | 245d | start no earlier than 2015-05-28 | R. Alhadeff/M. Carbone | 136h |
| 385 | 1.1.4.3.9.2 | Present Draft to ERM |  | 3d | 2015-06-19 | 2015-06-23 | 243d | start no earlier than 2015-06-19 | R. Alhadeff/M. Carbone | 24h |
| 386 | 1.1.4.3.9.3 | ERM provides feedback |  | 4d | 2015-06-23 | 2015-06-26 | 240d | start no earlier than 2015-06-23 | R. Alhadeff/M. Carbone | 32h |
| 387 | 1.1.4.3.9.4 | Deliver Final to ERM |  | 2d | 2015-06-26 | 2015-06-29 | 239d | start no earlier than 2015-06-26 | R. Alhadeff/M. Carbone | 16h |
| 388 | 1.1.4.3.9.5 | Present inventory to ERMC |  | 2d | 2015-06-29 | 2015-06-30 | 238d | start no earlier than 2015-06-29 | R. Alhadeff/M. Carbone | 16h |
| 389 | 1.1.4.3.9.6 | Commercial Real Estate Material Risk Inventory Prepared | milestone | 0d | 2015-06-30 | 2015-06-30 | 239d | start no earlier than 2015-06-30 | R. Alhadeff/M. Carbone |  |
| 390 | 1.1.4.3.10 | **Financial Management Material Risk Inventory** |  | 24d | 2015-05-28 | 2015-06-30 |  |  | R. Alhadeff/M. Carbone | 416h |
| 391 | 1.1.4.3.10.1 | Create risk Inventory |  | 17d | 2015-05-28 | 2015-06-19 | 245d | start no earlier than 2015-05-28 | R. Alhadeff/M. Carbone | 136h |
| 392 | 1.1.4.3.10.2 | Present Draft to ERM |  | 3d | 2015-06-19 | 2015-06-23 | 243d | start no earlier than 2015-06-19 | R. Alhadeff/M. Carbone | 24h |
| 393 | 1.1.4.3.10.3 | ERM provides feedback |  | 4d | 2015-06-23 | 2015-06-26 | 240d | start no earlier than 2015-06-23 | R. Alhadeff/M. Carbone | 32h |
| 394 | 1.1.4.3.10.4 | Deliver Final to ERM |  | 2d | 2015-06-26 | 2015-06-29 | 239d | start no earlier than 2015-06-26 | R. Alhadeff/M. Carbone | 16h |
| 395 | 1.1.4.3.10.5 | Present inventory to ERMC |  | 2d | 2015-06-29 | 2015-06-30 | 238d | start no earlier than 2015-06-29 | R. Alhadeff/M. Carbone | 16h |
| 396 | 1.1.4.3.10.6 | Financial Management Material Risk Inventory Prepared | milestone | 0d | 2015-06-30 | 2015-06-30 | 239d | start no earlier than 2015-06-30 | R. Alhadeff/M. Carbone |  |

| ID | WBS | Task | Type | Duration | Start | Finish | Total slack | Constraint | Resources | Work |
| --- | --- | --- | --- | --- | --- | --- | --- | --- | --- | --- |
| 397 | 1.1.4.3.11 | **Corporate Center Material Risk Inventory** |  | 24d | 2015-05-28 | 2015-06-30 |  |  | R. Alhadeff/M. Carbone | 416h |
| 398 | 1.1.4.3.11.1 | Create risk Inventory |  | 17d | 2015-05-28 | 2015-06-19 | 245d | start no earlier than 2015-05-28 | R. Alhadeff/M. Carbone | 136h |
| 399 | 1.1.4.3.11.2 | Present Draft to ERM |  | 3d | 2015-06-19 | 2015-06-23 | 243d | start no earlier than 2015-06-19 | R. Alhadeff/M. Carbone | 24h |
| 400 | 1.1.4.3.11.3 | ERM provides feedback |  | 4d | 2015-06-23 | 2015-06-26 | 240d | start no earlier than 2015-06-23 | R. Alhadeff/M. Carbone | 32h |
| 401 | 1.1.4.3.11.4 | Deliver Final to ERM |  | 2d | 2015-06-26 | 2015-06-29 | 239d | start no earlier than 2015-06-26 | R. Alhadeff/M. Carbone | 16h |
| 402 | 1.1.4.3.11.5 | Present inventory to ERMC |  | 2d | 2015-06-29 | 2015-06-30 | 238d | start no earlier than 2015-06-29 | R. Alhadeff/M. Carbone | 16h |
| 403 | 1.1.4.3.11.6 | Corporate Center Material Risk Inventory Prepared | milestone | 0d | 2015-06-30 | 2015-06-30 | 239d | start no earlier than 2015-06-30 | R. Alhadeff/M. Carbone |  |
| 404 | 1.1.4.3.12 | **Legal Material Risk Inventory** |  | 24d | 2015-05-28 | 2015-06-30 |  |  | R. Alhadeff/M. Carbone | 416h |
| 405 | 1.1.4.3.12.1 | Create risk Inventory |  | 17d | 2015-05-28 | 2015-06-19 | 245d | start no earlier than 2015-05-28 | R. Alhadeff/M. Carbone | 136h |
| 406 | 1.1.4.3.12.2 | Present Draft to ERM |  | 3d | 2015-06-19 | 2015-06-23 | 243d | start no earlier than 2015-06-19 | R. Alhadeff/M. Carbone | 24h |
| 407 | 1.1.4.3.12.3 | ERM provides feedback |  | 4d | 2015-06-23 | 2015-06-26 | 240d | start no earlier than 2015-06-23 | R. Alhadeff/M. Carbone | 32h |
| 408 | 1.1.4.3.12.4 | Deliver Final to ERM |  | 2d | 2015-06-26 | 2015-06-29 | 239d | start no earlier than 2015-06-26 | R. Alhadeff/M. Carbone | 16h |
| 409 | 1.1.4.3.12.5 | Present inventory to ERMC |  | 2d | 2015-06-29 | 2015-06-30 | 238d | start no earlier than 2015-06-29 | R. Alhadeff/M. Carbone | 16h |
| 410 | 1.1.4.3.12.6 | Legal Material Risk Inventory Prepared | milestone | 0d | 2015-06-30 | 2015-06-30 | 239d | start no earlier than 2015-06-30 | R. Alhadeff/M. Carbone |  |
| 411 | 1.1.4.3.13 | **HR Material Risk Inventory** |  | 24d | 2015-05-28 | 2015-06-30 |  |  | R. Alhadeff/M. Carbone | 416h |
| 412 | 1.1.4.3.13.1 | Create risk Inventory |  | 17d | 2015-05-28 | 2015-06-19 | 245d | start no earlier than 2015-05-28 | R. Alhadeff/M. Carbone | 136h |
| 413 | 1.1.4.3.13.2 | Present Draft to ERM |  | 3d | 2015-06-19 | 2015-06-23 | 243d | start no earlier than 2015-06-19 | R. Alhadeff/M. Carbone | 24h |
| 414 | 1.1.4.3.13.3 | ERM provides feedback |  | 4d | 2015-06-23 | 2015-06-26 | 240d | start no earlier than 2015-06-23 | R. Alhadeff/M. Carbone | 32h |
| 415 | 1.1.4.3.13.4 | Deliver Final to ERM |  | 2d | 2015-06-26 | 2015-06-29 | 239d | start no earlier than 2015-06-26 | R. Alhadeff/M. Carbone | 16h |
| 416 | 1.1.4.3.13.5 | Present inventory to ERMC |  | 2d | 2015-06-29 | 2015-06-30 | 238d | start no earlier than 2015-06-29 | R. Alhadeff/M. Carbone | 16h |
| 417 | 1.1.4.3.13.6 | HR Material Risk Inventory Prepared | milestone | 0d | 2015-06-30 | 2015-06-30 | 239d | start no earlier than 2015-06-30 | R. Alhadeff/M. Carbone |  |
| 418 | 1.1.4.3.14 | **Tech and Operations Material Risk Inventory** |  | 24d | 2015-05-28 | 2015-06-30 |  |  | R. Alhadeff/M. Carbone | 416h |
| 419 | 1.1.4.3.14.1 | Create risk Inventory |  | 17d | 2015-05-28 | 2015-06-19 | 245d | start no earlier than 2015-05-28 | R. Alhadeff/M. Carbone | 136h |
| 420 | 1.1.4.3.14.2 | Present Draft to ERM |  | 3d | 2015-06-19 | 2015-06-23 | 243d | start no earlier than 2015-06-19 | R. Alhadeff/M. Carbone | 24h |
| 421 | 1.1.4.3.14.3 | ERM provides feedback |  | 4d | 2015-06-23 | 2015-06-26 | 240d | start no earlier than 2015-06-23 | R. Alhadeff/M. Carbone | 32h |
| 422 | 1.1.4.3.14.4 | Deliver Final to ERM |  | 2d | 2015-06-26 | 2015-06-29 | 239d | start no earlier than 2015-06-26 | R. Alhadeff/M. Carbone | 16h |
| 423 | 1.1.4.3.14.5 | Present inventory to ERMC |  | 2d | 2015-06-29 | 2015-06-30 | 238d | start no earlier than 2015-06-29 | R. Alhadeff/M. Carbone | 16h |
| 424 | 1.1.4.3.14.6 | Tech and Ops Material Risk Inventory Prepared | milestone | 0d | 2015-06-30 | 2015-06-30 | 239d | start no earlier than 2015-06-30 | R. Alhadeff/M. Carbone |  |

| ID | WBS | Task | Type | Duration | Start | Finish | Total slack | Constraint | Resources | Work |
| --- | --- | --- | --- | --- | --- | --- | --- | --- | --- | --- |
| 425 | 1.1.4.3.15 | **Finance Material Risk Inventory** |  | 24d | 2015-05-28 | 2015-06-30 |  |  | R. Alhadeff/M. Carbone | 416h |
| 426 | 1.1.4.3.15.1 | Create risk Inventory |  | 17d | 2015-05-28 | 2015-06-19 | 245d | start no earlier than 2015-05-28 | R. Alhadeff/M. Carbone | 136h |
| 427 | 1.1.4.3.15.2 | Present Draft to ERM |  | 3d | 2015-06-19 | 2015-06-23 | 243d | start no earlier than 2015-06-19 | R. Alhadeff/M. Carbone | 24h |
| 428 | 1.1.4.3.15.3 | ERM provides feedback |  | 4d | 2015-06-23 | 2015-06-26 | 240d | start no earlier than 2015-06-23 | R. Alhadeff/M. Carbone | 32h |
| 429 | 1.1.4.3.15.4 | Deliver Final to ERM |  | 2d | 2015-06-26 | 2015-06-29 | 239d | start no earlier than 2015-06-26 | R. Alhadeff/M. Carbone | 16h |
| 430 | 1.1.4.3.15.5 | Present inventory to ERMC |  | 2d | 2015-06-29 | 2015-06-30 | 238d | start no earlier than 2015-06-29 | R. Alhadeff/M. Carbone | 16h |
| 431 | 1.1.4.3.15.6 | Finance Material Risk Inventory Prepared | milestone | 0d | 2015-06-30 | 2015-06-30 | 239d | start no earlier than 2015-06-30 | R. Alhadeff/M. Carbone |  |
| 432 | 1.1.4.3.16 | **SBNA Aggregation Workshops** |  | 20d | 2015-07-01 | 2015-07-28 |  |  | R. Alhadeff/M. Carbone | 2080h |
| 433 | 1.1.4.3.16.1 | **Credit Risk Aggregation** |  | 20d | 2015-07-01 | 2015-07-28 |  |  | R. Alhadeff/M. Carbone | 320h |
| 434 | 1.1.4.3.16.1.1 | ERM disseminates Workshop Pre-Read Materials to Risk Managers |  | 8d | 2015-07-01 | 2015-07-10 | 230d | start no earlier than 2015-07-01 | R. Alhadeff/M. Carbone | 64h |
| 435 | 1.1.4.3.16.1.2 | Risk Manager conducts Pre-workshop Enrichment and Aggregation activities |  | 5d | 2015-07-13 | 2015-07-17 | 225d | start no earlier than 2015-07-13 | R. Alhadeff/M. Carbone | 40h |
| 436 | 1.1.4.3.16.1.3 | ERM facilitates Aggregation and Enrichment Workshop |  | 5d | 2015-07-20 | 2015-07-24 | 220d | start no earlier than 2015-07-20 | R. Alhadeff/M. Carbone | 40h |
| 437 | 1.1.4.3.16.1.4 | Risk Manager presents inventory to level II subcommittee |  | 2d | 2015-07-27 | 2015-07-28 | 218d | start no earlier than 2015-07-27 | R. Alhadeff/M. Carbone | 16h |
| 438 | 1.1.4.3.16.1.5 | Credit Risk Aggregation Prepared | milestone | 0d | 2015-07-28 | 2015-07-28 | 219d | start no earlier than 2015-07-28 | R. Alhadeff/M. Carbone |  |
| 439 | 1.1.4.3.16.2 | **Operational Risk Material Risk Aggregation** |  | 20d | 2015-07-01 | 2015-07-28 |  |  | R. Alhadeff/M. Carbone | 320h |
| 440 | 1.1.4.3.16.2.1 | ERM disseminates Workshop Pre-Read Materials to Risk Managers |  | 8d | 2015-07-01 | 2015-07-10 | 230d | start no earlier than 2015-07-01 | R. Alhadeff/M. Carbone | 64h |
| 441 | 1.1.4.3.16.2.2 | Risk Manager conducts Pre-workshop Enrichment and Aggregation activities |  | 5d | 2015-07-13 | 2015-07-17 | 225d | start no earlier than 2015-07-13 | R. Alhadeff/M. Carbone | 40h |
| 442 | 1.1.4.3.16.2.3 | ERM facilitates Aggregation and Enrichment Workshop |  | 5d | 2015-07-20 | 2015-07-24 | 220d | start no earlier than 2015-07-20 | R. Alhadeff/M. Carbone | 40h |
| 443 | 1.1.4.3.16.2.4 | Risk Manager presents inventory to level II subcommittee |  | 2d | 2015-07-27 | 2015-07-28 | 218d | start no earlier than 2015-07-27 | R. Alhadeff/M. Carbone | 16h |
| 444 | 1.1.4.3.16.2.5 | Operational Risk Material Risk Aggregation Prepared | milestone | 0d | 2015-07-28 | 2015-07-28 | 219d | start no earlier than 2015-07-28 | R. Alhadeff/M. Carbone |  |
| 445 | 1.1.4.3.16.3 | **Compliance Material Risk Aggregation** |  | 20d | 2015-07-01 | 2015-07-28 |  |  | R. Alhadeff/M. Carbone | 320h |
| 446 | 1.1.4.3.16.3.1 | ERM disseminates Workshop Pre-Read Materials to Risk Managers |  | 8d | 2015-07-01 | 2015-07-10 | 230d | start no earlier than 2015-07-01 | R. Alhadeff/M. Carbone | 64h |
| 447 | 1.1.4.3.16.3.2 | Risk Manager conducts Pre-workshop Enrichment and Aggregation activities |  | 5d | 2015-07-13 | 2015-07-17 | 225d | start no earlier than 2015-07-13 | R. Alhadeff/M. Carbone | 40h |
| 448 | 1.1.4.3.16.3.3 | ERM facilitates Aggregation and Enrichment Workshop |  | 5d | 2015-07-20 | 2015-07-24 | 220d | start no earlier than 2015-07-20 | R. Alhadeff/M. Carbone | 40h |
| 449 | 1.1.4.3.16.3.4 | Risk Manager presents inventory to level II subcommittee |  | 2d | 2015-07-27 | 2015-07-28 | 218d | start no earlier than 2015-07-27 | R. Alhadeff/M. Carbone | 16h |
| 450 | 1.1.4.3.16.3.5 | Compliance Material Risk Aggregation Prepared | milestone | 0d | 2015-07-28 | 2015-07-28 | 219d | start no earlier than 2015-07-28 | R. Alhadeff/M. Carbone |  |

| ID | WBS | Task | Type | Duration | Start | Finish | Total slack | Free slack | Constraint | Resources | Work |
| --- | --- | --- | --- | --- | --- | --- | --- | --- | --- | --- | --- |
| 451 | 1.1.4.3.16.4 | **Model Material Risk Aggregation** |  | 20d | 2015-07-01 | 2015-07-28 |  |  |  | R. Alhadeff/M. Carbone | 320h |
| 452 | 1.1.4.3.16.4.1 | ERM disseminates Workshop Pre-Read Materials to Risk Managers |  | 8d | 2015-07-01 | 2015-07-10 | 230d |  | start no earlier than 2015-07-01 | R. Alhadeff/M. Carbone | 64h |
| 453 | 1.1.4.3.16.4.2 | Risk Manager conducts Pre-workshop Enrichment and Aggregation activities |  | 5d | 2015-07-13 | 2015-07-17 | 225d |  | start no earlier than 2015-07-13 | R. Alhadeff/M. Carbone | 40h |
| 454 | 1.1.4.3.16.4.3 | ERM facilitates Aggregation and Enrichment Workshop |  | 5d | 2015-07-20 | 2015-07-24 | 220d |  | start no earlier than 2015-07-20 | R. Alhadeff/M. Carbone | 40h |
| 455 | 1.1.4.3.16.4.4 | Risk Manager presents inventory to level II subcommittee |  | 2d | 2015-07-27 | 2015-07-28 | 218d |  | start no earlier than 2015-07-27 | R. Alhadeff/M. Carbone | 16h |
| 456 | 1.1.4.3.16.4.5 | Model Material Risk Aggregation Prepared | milestone | 0d | 2015-07-28 | 2015-07-28 | 219d |  | start no earlier than 2015-07-28 | R. Alhadeff/M. Carbone |  |
| 457 | 1.1.4.3.16.5 | **Liquidity/Market Material Risk Aggregation** |  | 20d | 2015-07-01 | 2015-07-28 |  |  |  | R. Alhadeff/M. Carbone | 320h |
| 458 | 1.1.4.3.16.5.1 | ERM disseminates Workshop Pre-Read Materials to Risk Managers |  | 8d | 2015-07-01 | 2015-07-10 | 230d |  | start no earlier than 2015-07-01 | R. Alhadeff/M. Carbone | 64h |
| 459 | 1.1.4.3.16.5.2 | Risk Manager conducts Pre-workshop Enrichment and Aggregation activities |  | 5d | 2015-07-13 | 2015-07-17 | 225d |  | start no earlier than 2015-07-13 | R. Alhadeff/M. Carbone | 40h |
| 460 | 1.1.4.3.16.5.3 | ERM facilitates Aggregation and Enrichment Workshop |  | 5d | 2015-07-20 | 2015-07-24 | 220d |  | start no earlier than 2015-07-20 | R. Alhadeff/M. Carbone | 40h |
| 461 | 1.1.4.3.16.5.4 | Risk Manager presents inventory to level II subcommittee |  | 2d | 2015-07-27 | 2015-07-28 | 218d |  | start no earlier than 2015-07-27 | R. Alhadeff/M. Carbone | 16h |
| 462 | 1.1.4.3.16.5.5 | Liquidity Material Risk Aggregation Prepared | milestone | 0d | 2015-07-28 | 2015-07-28 | 219d |  | start no earlier than 2015-07-28 | R. Alhadeff/M. Carbone |  |
| 463 | 1.1.4.3.16.6 | **Reputational/Strategic Material Risk Aggregation** |  | 20d | 2015-07-01 | 2015-07-28 |  |  |  | R. Alhadeff/M. Carbone | 320h |
| 464 | 1.1.4.3.16.6.1 | ERM disseminates Workshop Pre-Read Materials to Risk Managers |  | 8d | 2015-07-01 | 2015-07-10 | 230d |  | start no earlier than 2015-07-01 | R. Alhadeff/M. Carbone | 64h |
| 465 | 1.1.4.3.16.6.2 | Risk Manager conducts Pre-workshop Enrichment and Aggregation activities |  | 5d | 2015-07-13 | 2015-07-17 | 225d |  | start no earlier than 2015-07-13 | R. Alhadeff/M. Carbone | 40h |
| 466 | 1.1.4.3.16.6.3 | ERM facilitates Aggregation and Enrichment Workshop |  | 5d | 2015-07-20 | 2015-07-24 | 220d |  | start no earlier than 2015-07-20 | R. Alhadeff/M. Carbone | 40h |
| 467 | 1.1.4.3.16.6.4 | Risk Manager presents inventory to level II subcommittee |  | 2d | 2015-07-27 | 2015-07-28 | 218d |  | start no earlier than 2015-07-27 | R. Alhadeff/M. Carbone | 16h |
| 468 | 1.1.4.3.16.6.5 | Reputational/Strategic Material Risk Aggregation Prepared | milestone | 0d | 2015-07-28 | 2015-07-28 | 219d | 0d | start no earlier than 2015-07-28 | R. Alhadeff/M. Carbone |  |
| 469 | 1.1.4.3.17 | Conduct SBNA Top Down Review |  | 25d | 2015-07-28 | 2015-08-31 | 194d |  | start no earlier than 2015-07-28 | R. Alhadeff/M. Carbone | 200h |
| 470 | 1.1.4.3.18 | Present Results to SBNA ERMC |  | 25d | 2015-07-28 | 2015-08-31 | 194d |  | start no earlier than 2015-07-28 | R. Alhadeff/M. Carbone | 200h |
| 471 | 1.1.4.3.19 | Present Results to SBNA BERC |  | 25d | 2015-07-28 | 2015-08-31 | 194d |  | start no earlier than 2015-07-28 | R. Alhadeff/M. Carbone | 200h |
| 472 | 1.1.4.4 | **SCUSA - Business Entity Material Risk Program** |  | 68d | 2015-05-28 | 2015-08-31 | 0d |  |  | J. Smith/T. Ploetz | 5720h |
| 473 | 1.1.4.4.1 | **Automotive Finance Material Risk Inventory** |  | 24d | 2015-05-28 | 2015-06-30 | 238d |  |  | J. Smith/T. Ploetz | 416h |
| 474 | 1.1.4.4.1.1 | Create risk Inventory |  | 17d | 2015-05-28 | 2015-06-19 | 245d |  | finish no earlier than 2015-06-19 | J. Smith/T. Ploetz | 136h |
| 475 | 1.1.4.4.1.2 | Present Draft to ERM |  | 3d | 2015-06-19 | 2015-06-23 | 243d |  | start no earlier than 2015-06-19 | J. Smith/T. Ploetz | 24h |
| 476 | 1.1.4.4.1.3 | ERM provides feedback |  | 4d | 2015-06-23 | 2015-06-26 | 240d |  | start no earlier than 2015-06-23 | J. Smith/T. Ploetz | 32h |
| 477 | 1.1.4.4.1.4 | Deliver Final to ERM |  | 2d | 2015-06-26 | 2015-06-29 | 239d |  | start no earlier than 2015-06-26 | J. Smith/T. Ploetz | 16h |
| 478 | 1.1.4.4.1.5 | Present inventory to ERMC |  | 2d | 2015-06-29 | 2015-06-30 | 238d |  | start no earlier than 2015-06-29 | J. Smith/T. Ploetz | 16h |
| 479 | 1.1.4.4.1.6 | Automotive Finance Material Risk Inventory Prepared | milestone | 0d | 2015-06-30 | 2015-06-30 | 239d |  | start no earlier than 2015-06-30 | J. Smith/T. Ploetz |  |

Notes:
- 469: no owner name in Excel template

| ID | WBS | Task | Type | Duration | Start | Finish | Total slack | Constraint | Resources | Work |
| --- | --- | --- | --- | --- | --- | --- | --- | --- | --- | --- |
| 480 | 1.1.4.4.2 | **Personal Lending Material Risk Inventory** |  | 24d | 2015-05-28 | 2015-06-30 |  |  | J. Smith/T. Ploetz | 416h |
| 481 | 1.1.4.4.2.1 | Create risk Inventory |  | 17d | 2015-05-28 | 2015-06-19 | 245d | finish no earlier than 2015-06-19 | J. Smith/T. Ploetz | 136h |
| 482 | 1.1.4.4.2.2 | Present Draft to ERM |  | 3d | 2015-06-19 | 2015-06-23 | 243d | start no earlier than 2015-06-19 | J. Smith/T. Ploetz | 24h |
| 483 | 1.1.4.4.2.3 | ERM provides feedback |  | 4d | 2015-06-23 | 2015-06-26 | 240d | start no earlier than 2015-06-23 | J. Smith/T. Ploetz | 32h |
| 484 | 1.1.4.4.2.4 | Deliver Final to ERM |  | 2d | 2015-06-26 | 2015-06-29 | 239d | start no earlier than 2015-06-26 | J. Smith/T. Ploetz | 16h |
| 485 | 1.1.4.4.2.5 | Present inventory to ERMC |  | 2d | 2015-06-29 | 2015-06-30 | 238d | start no earlier than 2015-06-29 | J. Smith/T. Ploetz | 16h |
| 486 | 1.1.4.4.2.6 | Personal Lending Material Risk Inventory Prepared | milestone | 0d | 2015-06-30 | 2015-06-30 | 239d | start no earlier than 2015-06-30 | J. Smith/T. Ploetz |  |
| 487 | 1.1.4.4.3 | **Human Resources Material Risk Inventory** |  | 24d | 2015-05-28 | 2015-06-30 |  |  | J. Smith/T. Ploetz | 416h |
| 488 | 1.1.4.4.3.1 | Create risk Inventory |  | 17d | 2015-05-28 | 2015-06-19 | 245d | finish no earlier than 2015-06-19 | J. Smith/T. Ploetz | 136h |
| 489 | 1.1.4.4.3.2 | Present Draft to ERM |  | 3d | 2015-06-19 | 2015-06-23 | 243d | start no earlier than 2015-06-19 | J. Smith/T. Ploetz | 24h |
| 490 | 1.1.4.4.3.3 | ERM provides feedback |  | 4d | 2015-06-23 | 2015-06-26 | 240d | start no earlier than 2015-06-23 | J. Smith/T. Ploetz | 32h |
| 491 | 1.1.4.4.3.4 | Deliver Final to ERM |  | 2d | 2015-06-26 | 2015-06-29 | 239d | start no earlier than 2015-06-26 | J. Smith/T. Ploetz | 16h |
| 492 | 1.1.4.4.3.5 | Present inventory to ERMC |  | 2d | 2015-06-29 | 2015-06-30 | 238d | start no earlier than 2015-06-29 | J. Smith/T. Ploetz | 16h |
| 493 | 1.1.4.4.3.6 | Human Resources Material Risk Inventory Prepared | milestone | 0d | 2015-06-30 | 2015-06-30 | 239d | start no earlier than 2015-06-30 | J. Smith/T. Ploetz |  |
| 494 | 1.1.4.4.4 | **Finance and Accounting Material Risk Inventory** |  | 24d | 2015-05-28 | 2015-06-30 |  |  | J. Smith/T. Ploetz | 416h |
| 495 | 1.1.4.4.4.1 | Create risk Inventory |  | 17d | 2015-05-28 | 2015-06-19 | 245d | finish no earlier than 2015-06-19 | J. Smith/T. Ploetz | 136h |
| 496 | 1.1.4.4.4.2 | Present Draft to ERM |  | 3d | 2015-06-19 | 2015-06-23 | 243d | start no earlier than 2015-06-19 | J. Smith/T. Ploetz | 24h |
| 497 | 1.1.4.4.4.3 | ERM provides feedback |  | 4d | 2015-06-23 | 2015-06-26 | 240d | start no earlier than 2015-06-23 | J. Smith/T. Ploetz | 32h |
| 498 | 1.1.4.4.4.4 | Deliver Final to ERM |  | 2d | 2015-06-26 | 2015-06-29 | 239d | start no earlier than 2015-06-26 | J. Smith/T. Ploetz | 16h |
| 499 | 1.1.4.4.4.5 | Present inventory to ERMC |  | 2d | 2015-06-29 | 2015-06-30 | 238d | start no earlier than 2015-06-29 | J. Smith/T. Ploetz | 16h |
| 500 | 1.1.4.4.4.6 | Finance and Accounting Material Risk Inventory Prepared | milestone | 0d | 2015-06-30 | 2015-06-30 | 239d | start no earlier than 2015-06-30 | J. Smith/T. Ploetz |  |
| 501 | 1.1.4.4.5 | **Technology and Operations Material Risk Inventory** |  | 24d | 2015-05-28 | 2015-06-30 |  |  | J. Smith/T. Ploetz | 416h |
| 502 | 1.1.4.4.5.1 | Create risk Inventory |  | 17d | 2015-05-28 | 2015-06-19 | 245d | finish no earlier than 2015-06-19 | J. Smith/T. Ploetz | 136h |
| 503 | 1.1.4.4.5.2 | Present Draft to ERM |  | 3d | 2015-06-19 | 2015-06-23 | 243d | start no earlier than 2015-06-19 | J. Smith/T. Ploetz | 24h |
| 504 | 1.1.4.4.5.3 | ERM provides feedback |  | 4d | 2015-06-23 | 2015-06-26 | 240d | start no earlier than 2015-06-23 | J. Smith/T. Ploetz | 32h |
| 505 | 1.1.4.4.5.4 | Deliver Final to ERM |  | 2d | 2015-06-26 | 2015-06-29 | 239d | start no earlier than 2015-06-26 | J. Smith/T. Ploetz | 16h |
| 506 | 1.1.4.4.5.5 | Present inventory to ERMC |  | 2d | 2015-06-29 | 2015-06-30 | 238d | start no earlier than 2015-06-29 | J. Smith/T. Ploetz | 16h |
| 507 | 1.1.4.4.5.6 | Tech and Ops Material Risk Inventory Prepared | milestone | 0d | 2015-06-30 | 2015-06-30 | 239d | start no earlier than 2015-06-30 | J. Smith/T. Ploetz |  |

| ID | WBS | Task | Type | Duration | Start | Finish | Total slack | Constraint | Resources | Work |
| --- | --- | --- | --- | --- | --- | --- | --- | --- | --- | --- |
| 508 | 1.1.4.4.6 | **Legal Material Risk Inventory** |  | 24d | 2015-05-28 | 2015-06-30 |  |  | J. Smith/T. Ploetz | 416h |
| 509 | 1.1.4.4.6.1 | Create risk Inventory |  | 17d | 2015-05-28 | 2015-06-19 | 245d | finish no earlier than 2015-06-19 | J. Smith/T. Ploetz | 136h |
| 510 | 1.1.4.4.6.2 | Present Draft to ERM |  | 3d | 2015-06-19 | 2015-06-23 | 243d | start no earlier than 2015-06-19 | J. Smith/T. Ploetz | 24h |
| 511 | 1.1.4.4.6.3 | ERM provides feedback |  | 4d | 2015-06-23 | 2015-06-26 | 240d | start no earlier than 2015-06-23 | J. Smith/T. Ploetz | 32h |
| 512 | 1.1.4.4.6.4 | Deliver Final to ERM |  | 2d | 2015-06-26 | 2015-06-29 | 239d | start no earlier than 2015-06-26 | J. Smith/T. Ploetz | 16h |
| 513 | 1.1.4.4.6.5 | Present inventory to ERMC |  | 2d | 2015-06-29 | 2015-06-30 | 238d | start no earlier than 2015-06-29 | J. Smith/T. Ploetz | 16h |
| 514 | 1.1.4.4.6.6 | Legal Material Risk Inventory Prepared | milestone | 0d | 2015-06-30 | 2015-06-30 | 239d | start no earlier than 2015-06-30 | J. Smith/T. Ploetz |  |
| 515 | 1.1.4.4.7 | **SCUSA Aggregation Workshops** |  | 20d | 2015-07-01 | 2015-07-28 |  |  | J. Smith/T. Ploetz | 2080h |
| 516 | 1.1.4.4.7.1 | **Credit Risk Aggregation** |  | 20d | 2015-07-01 | 2015-07-28 |  |  | J. Smith/T. Ploetz | 320h |
| 517 | 1.1.4.4.7.1.1 | ERM disseminates Workshop Pre-Read Materials to Risk Managers |  | 8d | 2015-07-01 | 2015-07-10 | 230d | start no earlier than 2015-07-01 | J. Smith/T. Ploetz | 64h |
| 518 | 1.1.4.4.7.1.2 | Risk Manager conducts Pre-workshop Enrichment and Aggregation activities |  | 5d | 2015-07-13 | 2015-07-17 | 225d | start no earlier than 2015-07-13 | J. Smith/T. Ploetz | 40h |
| 519 | 1.1.4.4.7.1.3 | ERM facilitates Aggregation and Enrichment Workshop |  | 5d | 2015-07-20 | 2015-07-24 | 220d | start no earlier than 2015-07-20 | J. Smith/T. Ploetz | 40h |
| 520 | 1.1.4.4.7.1.4 | Risk Manager presents inventory to level II subcommittee |  | 2d | 2015-07-27 | 2015-07-28 | 218d | start no earlier than 2015-07-27 | J. Smith/T. Ploetz | 16h |
| 521 | 1.1.4.4.7.1.5 | Credit Risk Aggregation Prepared | milestone | 0d | 2015-07-28 | 2015-07-28 | 219d | start no earlier than 2015-07-28 | J. Smith/T. Ploetz |  |
| 522 | 1.1.4.4.7.2 | **Operational Risk Material Risk Aggregation** |  | 20d | 2015-07-01 | 2015-07-28 |  |  | J. Smith/T. Ploetz | 320h |
| 523 | 1.1.4.4.7.2.1 | ERM disseminates Workshop Pre-Read Materials to Risk Managers |  | 8d | 2015-07-01 | 2015-07-10 | 230d | start no earlier than 2015-07-01 | J. Smith/T. Ploetz | 64h |
| 524 | 1.1.4.4.7.2.2 | Risk Manager conducts Pre-workshop Enrichment and Aggregation activities |  | 5d | 2015-07-13 | 2015-07-17 | 225d | start no earlier than 2015-07-13 | J. Smith/T. Ploetz | 40h |
| 525 | 1.1.4.4.7.2.3 | ERM facilitates Aggregation and Enrichment Workshop |  | 5d | 2015-07-20 | 2015-07-24 | 220d | start no earlier than 2015-07-20 | J. Smith/T. Ploetz | 40h |
| 526 | 1.1.4.4.7.2.4 | Risk Manager presents inventory to level II subcommittee |  | 2d | 2015-07-27 | 2015-07-28 | 218d | start no earlier than 2015-07-27 | J. Smith/T. Ploetz | 16h |
| 527 | 1.1.4.4.7.2.5 | Operational Risk Material Risk Aggregation Prepared | milestone | 0d | 2015-07-28 | 2015-07-28 | 219d | start no earlier than 2015-07-28 | J. Smith/T. Ploetz |  |
| 528 | 1.1.4.4.7.3 | **Compliance Material Risk Aggregation** |  | 20d | 2015-07-01 | 2015-07-28 |  |  | J. Smith/T. Ploetz | 320h |
| 529 | 1.1.4.4.7.3.1 | ERM disseminates Workshop Pre-Read Materials to Risk Managers |  | 8d | 2015-07-01 | 2015-07-10 | 230d | start no earlier than 2015-07-01 | J. Smith/T. Ploetz | 64h |
| 530 | 1.1.4.4.7.3.2 | Risk Manager conducts Pre-workshop Enrichment and Aggregation activities |  | 5d | 2015-07-13 | 2015-07-17 | 225d | start no earlier than 2015-07-13 | J. Smith/T. Ploetz | 40h |
| 531 | 1.1.4.4.7.3.3 | ERM facilitates Aggregation and Enrichment Workshop |  | 5d | 2015-07-20 | 2015-07-24 | 220d | start no earlier than 2015-07-20 | J. Smith/T. Ploetz | 40h |
| 532 | 1.1.4.4.7.3.4 | Risk Manager presents inventory to level II subcommittee |  | 2d | 2015-07-27 | 2015-07-28 | 218d | start no earlier than 2015-07-27 | J. Smith/T. Ploetz | 16h |
| 533 | 1.1.4.4.7.3.5 | Compliance Material Risk Aggregation Prepared | milestone | 0d | 2015-07-28 | 2015-07-28 | 219d | start no earlier than 2015-07-28 | J. Smith/T. Ploetz |  |

| ID | WBS | Task | Type | Duration | Start | Finish | Total slack | Free slack | Constraint | Resources | Work |
| --- | --- | --- | --- | --- | --- | --- | --- | --- | --- | --- | --- |
| 534 | 1.1.4.4.7.4 | **Model Material Risk Aggregation** |  | 20d | 2015-07-01 | 2015-07-28 |  |  |  | J. Smith/T. Ploetz | 320h |
| 535 | 1.1.4.4.7.4.1 | ERM disseminates Workshop Pre-Read Materials to Risk Managers |  | 8d | 2015-07-01 | 2015-07-10 | 230d |  | start no earlier than 2015-07-01 | J. Smith/T. Ploetz | 64h |
| 536 | 1.1.4.4.7.4.2 | Risk Manager conducts Pre-workshop Enrichment and Aggregation activities |  | 5d | 2015-07-13 | 2015-07-17 | 225d |  | start no earlier than 2015-07-13 | J. Smith/T. Ploetz | 40h |
| 537 | 1.1.4.4.7.4.3 | ERM facilitates Aggregation and Enrichment Workshop |  | 5d | 2015-07-20 | 2015-07-24 | 220d |  | start no earlier than 2015-07-20 | J. Smith/T. Ploetz | 40h |
| 538 | 1.1.4.4.7.4.4 | Risk Manager presents inventory to level II subcommittee |  | 2d | 2015-07-27 | 2015-07-28 | 218d |  | start no earlier than 2015-07-27 | J. Smith/T. Ploetz | 16h |
| 539 | 1.1.4.4.7.4.5 | Model Material Risk Aggregation Prepared | milestone | 0d | 2015-07-28 | 2015-07-28 | 219d |  | start no earlier than 2015-07-28 | J. Smith/T. Ploetz |  |
| 540 | 1.1.4.4.7.5 | **Liquidity/Market Material Risk Aggregation** |  | 20d | 2015-07-01 | 2015-07-28 |  |  |  | J. Smith/T. Ploetz | 320h |
| 541 | 1.1.4.4.7.5.1 | ERM disseminates Workshop Pre-Read Materials to Risk Managers |  | 8d | 2015-07-01 | 2015-07-10 | 230d |  | start no earlier than 2015-07-01 | J. Smith/T. Ploetz | 64h |
| 542 | 1.1.4.4.7.5.2 | Risk Manager conducts Pre-workshop Enrichment and Aggregation activities |  | 5d | 2015-07-13 | 2015-07-17 | 225d |  | start no earlier than 2015-07-13 | J. Smith/T. Ploetz | 40h |
| 543 | 1.1.4.4.7.5.3 | ERM facilitates Aggregation and Enrichment Workshop |  | 5d | 2015-07-20 | 2015-07-24 | 220d |  | start no earlier than 2015-07-20 | J. Smith/T. Ploetz | 40h |
| 544 | 1.1.4.4.7.5.4 | Risk Manager presents inventory to level II subcommittee |  | 2d | 2015-07-27 | 2015-07-28 | 218d |  | start no earlier than 2015-07-27 | J. Smith/T. Ploetz | 16h |
| 545 | 1.1.4.4.7.5.5 | Liquidity Material Risk Aggregation Prepared | milestone | 0d | 2015-07-28 | 2015-07-28 | 219d |  | start no earlier than 2015-07-28 | J. Smith/T. Ploetz |  |
| 546 | 1.1.4.4.7.6 | **Reputational/Strategic Material Risk Aggregation** |  | 20d | 2015-07-01 | 2015-07-28 |  |  |  | J. Smith/T. Ploetz | 320h |
| 547 | 1.1.4.4.7.6.1 | ERM disseminates Workshop Pre-Read Materials to Risk Managers |  | 8d | 2015-07-01 | 2015-07-10 | 230d |  | start no earlier than 2015-07-01 | J. Smith/T. Ploetz | 64h |
| 548 | 1.1.4.4.7.6.2 | Risk Manager conducts Pre-workshop Enrichment and Aggregation activities |  | 5d | 2015-07-13 | 2015-07-17 | 225d |  | start no earlier than 2015-07-13 | J. Smith/T. Ploetz | 40h |
| 549 | 1.1.4.4.7.6.3 | ERM facilitates Aggregation and Enrichment Workshop |  | 5d | 2015-07-20 | 2015-07-24 | 220d |  | start no earlier than 2015-07-20 | J. Smith/T. Ploetz | 40h |
| 550 | 1.1.4.4.7.6.4 | Risk Manager presents inventory to level II subcommittee |  | 2d | 2015-07-27 | 2015-07-28 | 218d |  | start no earlier than 2015-07-27 | J. Smith/T. Ploetz | 16h |
| 551 | 1.1.4.4.7.6.5 | Reputational/Strategic Material Risk Aggregation Prepared | milestone | 0d | 2015-07-28 | 2015-07-28 | 219d | 0d | start no earlier than 2015-07-28 | J. Smith/T. Ploetz |  |
| 552 | 1.1.4.4.8 | Conduct SCUSA Top Down Review |  | 25d | 2015-07-28 | 2015-08-31 | 194d |  | finish no earlier than 2015-08-31 | J. Smith/T. Ploetz | 200h |
| 553 | 1.1.4.4.9 | Present Results to SCUSA ERMC |  | 25d | 2015-07-28 | 2015-08-31 | 194d |  | finish no earlier than 2015-08-31 | J. Smith/T. Ploetz | 200h |
| 554 | 1.1.4.4.10 | Present Results to SCUSA BERC |  | 25d | 2015-07-28 | 2015-08-31 | 194d |  | finish no earlier than 2015-08-31 | J. Smith/T. Ploetz | 200h |
| 555 | 1.1.4.5 | **New York Santander Investment Securities (SIS) - Business Entity Material Risk Program** |  | 68d | 2015-05-28 | 2015-08-31 | 0d |  |  | M. Murphy | 7384h |
| 556 | 1.1.4.5.1 | **GBM-Cash Equities Brokerage Material Risk Inventory** |  | 24d | 2015-05-28 | 2015-06-30 | 238d |  |  | M. Murphy | 416h |
| 557 | 1.1.4.5.1.1 | Create risk Inventory |  | 17d | 2015-05-28 | 2015-06-19 | 245d |  | finish no earlier than 2015-06-19 | M. Murphy | 136h |
| 558 | 1.1.4.5.1.2 | Present Draft to ERM |  | 3d | 2015-06-19 | 2015-06-23 | 243d |  | start no earlier than 2015-06-19 | M. Murphy | 24h |
| 559 | 1.1.4.5.1.3 | ERM provides feedback |  | 4d | 2015-06-23 | 2015-06-26 | 240d |  | start no earlier than 2015-06-23 | M. Murphy | 32h |
| 560 | 1.1.4.5.1.4 | Deliver Final to ERM |  | 2d | 2015-06-26 | 2015-06-29 | 239d |  | start no earlier than 2015-06-26 | M. Murphy | 16h |
| 561 | 1.1.4.5.1.5 | Present inventory to ERMC |  | 2d | 2015-06-29 | 2015-06-30 | 238d |  | start no earlier than 2015-06-29 | M. Murphy | 16h |
| 562 | 1.1.4.5.1.6 | GBM-Cash Equities Brokerage Material Risk Inventory Prepared | milestone | 0d | 2015-06-30 | 2015-06-30 | 239d |  | start no earlier than 2015-06-30 | M. Murphy |  |

| ID | WBS | Task | Type | Duration | Start | Finish | Total slack | Constraint | Resources | Work |
| --- | --- | --- | --- | --- | --- | --- | --- | --- | --- | --- |
| 563 | 1.1.4.5.2 | **GBM- Debt Underwriting Material Risk Inventory** |  | 24d | 2015-05-28 | 2015-06-30 |  |  | M. Murphy | 416h |
| 564 | 1.1.4.5.2.1 | Create risk Inventory |  | 17d | 2015-05-28 | 2015-06-19 | 245d | finish no earlier than 2015-06-19 | M. Murphy | 136h |
| 565 | 1.1.4.5.2.2 | Present Draft to ERM |  | 3d | 2015-06-19 | 2015-06-23 | 243d | start no earlier than 2015-06-19 | M. Murphy | 24h |
| 566 | 1.1.4.5.2.3 | ERM provides feedback |  | 4d | 2015-06-23 | 2015-06-26 | 240d | start no earlier than 2015-06-23 | M. Murphy | 32h |
| 567 | 1.1.4.5.2.4 | Deliver Final to ERM |  | 2d | 2015-06-26 | 2015-06-29 | 239d | start no earlier than 2015-06-26 | M. Murphy | 16h |
| 568 | 1.1.4.5.2.5 | Present inventory to ERMC |  | 2d | 2015-06-29 | 2015-06-30 | 238d | start no earlier than 2015-06-29 | M. Murphy | 16h |
| 569 | 1.1.4.5.2.6 | GBM-Debt Underwriting Material Risk Inventory Prepared | milestone | 0d | 2015-06-30 | 2015-06-30 | 239d | start no earlier than 2015-06-30 | M. Murphy |  |
| 570 | 1.1.4.5.3 | **GBM Equity Underwriting Material Risk Inventory** |  | 24d | 2015-05-28 | 2015-06-30 |  |  | M. Murphy | 416h |
| 571 | 1.1.4.5.3.1 | Create risk Inventory |  | 17d | 2015-05-28 | 2015-06-19 | 245d | finish no earlier than 2015-06-19 | M. Murphy | 136h |
| 572 | 1.1.4.5.3.2 | Present Draft to ERM |  | 3d | 2015-06-19 | 2015-06-23 | 243d | start no earlier than 2015-06-19 | M. Murphy | 24h |
| 573 | 1.1.4.5.3.3 | ERM provides feedback |  | 4d | 2015-06-23 | 2015-06-26 | 240d | start no earlier than 2015-06-23 | M. Murphy | 32h |
| 574 | 1.1.4.5.3.4 | Deliver Final to ERM |  | 2d | 2015-06-26 | 2015-06-29 | 239d | start no earlier than 2015-06-26 | M. Murphy | 16h |
| 575 | 1.1.4.5.3.5 | Present inventory to ERMC |  | 2d | 2015-06-29 | 2015-06-30 | 238d | start no earlier than 2015-06-29 | M. Murphy | 16h |
| 576 | 1.1.4.5.3.6 | GBM Equity Underwriting Material Risk Inventory Prepared | milestone | 0d | 2015-06-30 | 2015-06-30 | 239d | start no earlier than 2015-06-30 | M. Murphy |  |
| 577 | 1.1.4.5.4 | **GBM- Fixed Income/Bond TradingMaterial Risk Inventory** |  | 24d | 2015-05-28 | 2015-06-30 |  |  | M. Murphy | 416h |
| 578 | 1.1.4.5.4.1 | Create risk Inventory |  | 17d | 2015-05-28 | 2015-06-19 | 245d | finish no earlier than 2015-06-19 | M. Murphy | 136h |
| 579 | 1.1.4.5.4.2 | Present Draft to ERM |  | 3d | 2015-06-19 | 2015-06-23 | 243d | start no earlier than 2015-06-19 | M. Murphy | 24h |
| 580 | 1.1.4.5.4.3 | ERM provides feedback |  | 4d | 2015-06-23 | 2015-06-26 | 240d | start no earlier than 2015-06-23 | M. Murphy | 32h |
| 581 | 1.1.4.5.4.4 | Deliver Final to ERM |  | 2d | 2015-06-26 | 2015-06-29 | 239d | start no earlier than 2015-06-26 | M. Murphy | 16h |
| 582 | 1.1.4.5.4.5 | Present inventory to ERMC |  | 2d | 2015-06-29 | 2015-06-30 | 238d | start no earlier than 2015-06-29 | M. Murphy | 16h |
| 583 | 1.1.4.5.4.6 | GBM-Fixed Income/Bond Trading Material Risk Inventory Prepared | milestone | 0d | 2015-06-30 | 2015-06-30 | 239d | start no earlier than 2015-06-30 | M. Murphy |  |
| 584 | 1.1.4.5.5 | **GBM - Futures Brokerage Material Risk Inventory** |  | 24d | 2015-05-28 | 2015-06-30 |  |  | M. Murphy | 416h |
| 585 | 1.1.4.5.5.1 | Create risk Inventory |  | 17d | 2015-05-28 | 2015-06-19 | 245d | finish no earlier than 2015-06-19 | M. Murphy | 136h |
| 586 | 1.1.4.5.5.2 | Present Draft to ERM |  | 3d | 2015-06-19 | 2015-06-23 | 243d | start no earlier than 2015-06-19 | M. Murphy | 24h |
| 587 | 1.1.4.5.5.3 | ERM provides feedback |  | 4d | 2015-06-23 | 2015-06-26 | 240d | start no earlier than 2015-06-23 | M. Murphy | 32h |
| 588 | 1.1.4.5.5.4 | Deliver Final to ERM |  | 2d | 2015-06-26 | 2015-06-29 | 239d | start no earlier than 2015-06-26 | M. Murphy | 16h |
| 589 | 1.1.4.5.5.5 | Present inventory to ERMC |  | 2d | 2015-06-29 | 2015-06-30 | 238d | start no earlier than 2015-06-29 | M. Murphy | 16h |
| 590 | 1.1.4.5.5.6 | GBM-Futures Brokerage Material Risk Inventory Prepared | milestone | 0d | 2015-06-30 | 2015-06-30 | 239d | start no earlier than 2015-06-30 | M. Murphy |  |

| ID | WBS | Task | Type | Duration | Start | Finish | Total slack | Constraint | Resources | Work |
| --- | --- | --- | --- | --- | --- | --- | --- | --- | --- | --- |
| 591 | 1.1.4.5.6 | **GBM - Fixed Income and Equity Research Material Risk Inventory** |  | 24d | 2015-05-28 | 2015-06-30 |  |  | M. Murphy | 416h |
| 592 | 1.1.4.5.6.1 | Create risk Inventory |  | 17d | 2015-05-28 | 2015-06-19 | 245d | finish no earlier than 2015-06-19 | M. Murphy | 136h |
| 593 | 1.1.4.5.6.2 | Present Draft to ERM |  | 3d | 2015-06-19 | 2015-06-23 | 243d | start no earlier than 2015-06-19 | M. Murphy | 24h |
| 594 | 1.1.4.5.6.3 | ERM provides feedback |  | 4d | 2015-06-23 | 2015-06-26 | 240d | start no earlier than 2015-06-23 | M. Murphy | 32h |
| 595 | 1.1.4.5.6.4 | Deliver Final to ERM |  | 2d | 2015-06-26 | 2015-06-29 | 239d | start no earlier than 2015-06-26 | M. Murphy | 16h |
| 596 | 1.1.4.5.6.5 | Present inventory to ERMC |  | 2d | 2015-06-29 | 2015-06-30 | 238d | start no earlier than 2015-06-29 | M. Murphy | 16h |
| 597 | 1.1.4.5.6.6 | GBM-Fixed Income and Equity Research Material Risk Inventory | milestone | 0d | 2015-06-30 | 2015-06-30 | 239d | start no earlier than 2015-06-30 | M. Murphy |  |
| 598 | 1.1.4.5.7 | **Human Resources Material Risk Inventory** |  | 24d | 2015-05-28 | 2015-06-30 |  |  | M. Murphy | 416h |
| 599 | 1.1.4.5.7.1 | Create risk Inventory |  | 17d | 2015-05-28 | 2015-06-19 | 245d | finish no earlier than 2015-06-19 | M. Murphy | 136h |
| 600 | 1.1.4.5.7.2 | Present Draft to ERM |  | 3d | 2015-06-19 | 2015-06-23 | 243d | start no earlier than 2015-06-19 | M. Murphy | 24h |
| 601 | 1.1.4.5.7.3 | ERM provides feedback |  | 4d | 2015-06-23 | 2015-06-26 | 240d | start no earlier than 2015-06-23 | M. Murphy | 32h |
| 602 | 1.1.4.5.7.4 | Deliver Final to ERM |  | 2d | 2015-06-26 | 2015-06-29 | 239d | start no earlier than 2015-06-26 | M. Murphy | 16h |
| 603 | 1.1.4.5.7.5 | Present inventory to ERMC |  | 2d | 2015-06-29 | 2015-06-30 | 238d | start no earlier than 2015-06-29 | M. Murphy | 16h |
| 604 | 1.1.4.5.7.6 | Human Resources Material Risk Inventory Prepared | milestone | 0d | 2015-06-30 | 2015-06-30 | 239d | start no earlier than 2015-06-30 | M. Murphy |  |
| 605 | 1.1.4.5.8 | **Finance Material Risk Inventory** |  | 24d | 2015-05-28 | 2015-06-30 |  |  | M. Murphy | 416h |
| 606 | 1.1.4.5.8.1 | Create risk Inventory |  | 17d | 2015-05-28 | 2015-06-19 | 245d | finish no earlier than 2015-06-19 | M. Murphy | 136h |
| 607 | 1.1.4.5.8.2 | Present Draft to ERM |  | 3d | 2015-06-19 | 2015-06-23 | 243d | start no earlier than 2015-06-19 | M. Murphy | 24h |
| 608 | 1.1.4.5.8.3 | ERM provides feedback |  | 4d | 2015-06-23 | 2015-06-26 | 240d | start no earlier than 2015-06-23 | M. Murphy | 32h |
| 609 | 1.1.4.5.8.4 | Deliver Final to ERM |  | 2d | 2015-06-26 | 2015-06-29 | 239d | start no earlier than 2015-06-26 | M. Murphy | 16h |
| 610 | 1.1.4.5.8.5 | Present inventory to ERMC |  | 2d | 2015-06-29 | 2015-06-30 | 238d | start no earlier than 2015-06-29 | M. Murphy | 16h |
| 611 | 1.1.4.5.8.6 | Finance Material Risk Inventory Prepared | milestone | 0d | 2015-06-30 | 2015-06-30 | 239d | start no earlier than 2015-06-30 | M. Murphy |  |
| 612 | 1.1.4.5.9 | **Technology and Operations Material Risk Inventory** |  | 24d | 2015-05-28 | 2015-06-30 | 238d |  | M. Murphy | 416h |
| 613 | 1.1.4.5.9.1 | Create risk Inventory |  | 17d | 2015-05-28 | 2015-06-19 | 245d | finish no earlier than 2015-06-19 | M. Murphy | 136h |
| 614 | 1.1.4.5.9.2 | Present Draft to ERM |  | 3d | 2015-06-19 | 2015-06-23 | 243d | start no earlier than 2015-06-19 | M. Murphy | 24h |
| 615 | 1.1.4.5.9.3 | ERM provides feedback |  | 4d | 2015-06-23 | 2015-06-26 | 240d | start no earlier than 2015-06-23 | M. Murphy | 32h |
| 616 | 1.1.4.5.9.4 | Deliver Final to ERM |  | 2d | 2015-06-26 | 2015-06-29 | 239d | start no earlier than 2015-06-26 | M. Murphy | 16h |
| 617 | 1.1.4.5.9.5 | Present inventory to ERMC |  | 2d | 2015-06-29 | 2015-06-30 | 238d | start no earlier than 2015-06-29 | M. Murphy | 16h |
| 618 | 1.1.4.5.9.6 | Tech and Ops Material Risk Inventory Prepared | milestone | 0d | 2015-06-30 | 2015-06-30 | 239d | start no earlier than 2015-06-30 | M. Murphy |  |

| ID | WBS | Task | Type | Duration | Start | Finish | Total slack | Constraint | Resources | Work |
| --- | --- | --- | --- | --- | --- | --- | --- | --- | --- | --- |
| 619 | 1.1.4.5.10 | **Legal Material Risk Inventory** |  | 24d | 2015-05-28 | 2015-06-30 |  |  | M. Murphy | 416h |
| 620 | 1.1.4.5.10.1 | Create risk Inventory |  | 17d | 2015-05-28 | 2015-06-19 | 245d | finish no earlier than 2015-06-19 | M. Murphy | 136h |
| 621 | 1.1.4.5.10.2 | Present Draft to ERM |  | 3d | 2015-06-19 | 2015-06-23 | 243d | start no earlier than 2015-06-19 | M. Murphy | 24h |
| 622 | 1.1.4.5.10.3 | ERM provides feedback |  | 4d | 2015-06-23 | 2015-06-26 | 240d | start no earlier than 2015-06-23 | M. Murphy | 32h |
| 623 | 1.1.4.5.10.4 | Deliver Final to ERM |  | 2d | 2015-06-26 | 2015-06-29 | 239d | start no earlier than 2015-06-26 | M. Murphy | 16h |
| 624 | 1.1.4.5.10.5 | Present inventory to ERMC |  | 2d | 2015-06-29 | 2015-06-30 | 238d | start no earlier than 2015-06-29 | M. Murphy | 16h |
| 625 | 1.1.4.5.10.6 | Legal Material Risk Inventory Prepared | milestone | 0d | 2015-06-30 | 2015-06-30 | 239d | start no earlier than 2015-06-30 | M. Murphy |  |
| 626 | 1.1.4.5.11 | **NY SIS Aggregation Workshops** |  | 20d | 2015-07-01 | 2015-07-28 |  |  | M. Murphy | 2080h |
| 627 | 1.1.4.5.11.1 | **Credit Risk Aggregation** |  | 20d | 2015-07-01 | 2015-07-28 |  |  | M. Murphy | 320h |
| 628 | 1.1.4.5.11.1.1 | ERM disseminates Workshop Pre-Read Materials to Risk Managers |  | 8d | 2015-07-01 | 2015-07-10 | 230d | start no earlier than 2015-07-01 | M. Murphy | 64h |
| 629 | 1.1.4.5.11.1.2 | Risk Manager conducts Pre-workshop Enrichment and Aggregation activities |  | 5d | 2015-07-13 | 2015-07-17 | 225d | start no earlier than 2015-07-13 | M. Murphy | 40h |
| 630 | 1.1.4.5.11.1.3 | ERM facilitates Aggregation and Enrichment Workshop |  | 5d | 2015-07-20 | 2015-07-24 | 220d | start no earlier than 2015-07-20 | M. Murphy | 40h |
| 631 | 1.1.4.5.11.1.4 | Risk Manager presents inventory to level II subcommittee |  | 2d | 2015-07-27 | 2015-07-28 | 218d | start no earlier than 2015-07-27 | M. Murphy | 16h |
| 632 | 1.1.4.5.11.1.5 | Credit Risk Aggregation Prepared | milestone | 0d | 2015-07-28 | 2015-07-28 | 219d | start no earlier than 2015-07-28 | M. Murphy |  |
| 633 | 1.1.4.5.11.2 | **Operational Risk Material Risk Aggregation** |  | 20d | 2015-07-01 | 2015-07-28 |  |  | M. Murphy | 320h |
| 634 | 1.1.4.5.11.2.1 | ERM disseminates Workshop Pre-Read Materials to Risk Managers |  | 8d | 2015-07-01 | 2015-07-10 | 230d | start no earlier than 2015-07-01 | M. Murphy | 64h |
| 635 | 1.1.4.5.11.2.2 | Risk Manager conducts Pre-workshop Enrichment and Aggregation activities |  | 5d | 2015-07-13 | 2015-07-17 | 225d | start no earlier than 2015-07-13 | M. Murphy | 40h |
| 636 | 1.1.4.5.11.2.3 | ERM facilitates Aggregation and Enrichment Workshop |  | 5d | 2015-07-20 | 2015-07-24 | 220d | start no earlier than 2015-07-20 | M. Murphy | 40h |
| 637 | 1.1.4.5.11.2.4 | Risk Manager presents inventory to level II subcommittee |  | 2d | 2015-07-27 | 2015-07-28 | 218d | start no earlier than 2015-07-27 | M. Murphy | 16h |
| 638 | 1.1.4.5.11.2.5 | Operational Risk Material Risk Aggregation Prepared | milestone | 0d | 2015-07-28 | 2015-07-28 | 219d | start no earlier than 2015-07-28 | M. Murphy |  |
| 639 | 1.1.4.5.11.3 | **Compliance Material Risk Aggregation** |  | 20d | 2015-07-01 | 2015-07-28 |  |  | M. Murphy | 320h |
| 640 | 1.1.4.5.11.3.1 | ERM disseminates Workshop Pre-Read Materials to Risk Managers |  | 8d | 2015-07-01 | 2015-07-10 | 230d | start no earlier than 2015-07-01 | M. Murphy | 64h |
| 641 | 1.1.4.5.11.3.2 | Risk Manager conducts Pre-workshop Enrichment and Aggregation activities |  | 5d | 2015-07-13 | 2015-07-17 | 225d | start no earlier than 2015-07-13 | M. Murphy | 40h |
| 642 | 1.1.4.5.11.3.3 | ERM facilitates Aggregation and Enrichment Workshop |  | 5d | 2015-07-20 | 2015-07-24 | 220d | start no earlier than 2015-07-20 | M. Murphy | 40h |
| 643 | 1.1.4.5.11.3.4 | Risk Manager presents inventory to level II subcommittee |  | 2d | 2015-07-27 | 2015-07-28 | 218d | start no earlier than 2015-07-27 | M. Murphy | 16h |
| 644 | 1.1.4.5.11.3.5 | Compliance Material Risk Aggregation Prepared | milestone | 0d | 2015-07-28 | 2015-07-28 | 219d | start no earlier than 2015-07-28 | M. Murphy |  |

| ID | WBS | Task | Type | Duration | Start | Finish | Total slack | Free slack | Constraint | Resources | Work |
| --- | --- | --- | --- | --- | --- | --- | --- | --- | --- | --- | --- |
| 645 | 1.1.4.5.11.4 | **Model Material Risk Aggregation** |  | 20d | 2015-07-01 | 2015-07-28 |  |  |  | M. Murphy | 320h |
| 646 | 1.1.4.5.11.4.1 | ERM disseminates Workshop Pre-Read Materials to Risk Managers |  | 8d | 2015-07-01 | 2015-07-10 | 230d |  | start no earlier than 2015-07-01 | M. Murphy | 64h |
| 647 | 1.1.4.5.11.4.2 | Risk Manager conducts Pre-workshop Enrichment and Aggregation activities |  | 5d | 2015-07-13 | 2015-07-17 | 225d |  | start no earlier than 2015-07-13 | M. Murphy | 40h |
| 648 | 1.1.4.5.11.4.3 | ERM facilitates Aggregation and Enrichment Workshop |  | 5d | 2015-07-20 | 2015-07-24 | 220d |  | start no earlier than 2015-07-20 | M. Murphy | 40h |
| 649 | 1.1.4.5.11.4.4 | Risk Manager presents inventory to level II subcommittee |  | 2d | 2015-07-27 | 2015-07-28 | 218d |  | start no earlier than 2015-07-27 | M. Murphy | 16h |
| 650 | 1.1.4.5.11.4.5 | Model Material Risk Aggregation Prepared | milestone | 0d | 2015-07-28 | 2015-07-28 | 219d |  | start no earlier than 2015-07-28 | M. Murphy |  |
| 651 | 1.1.4.5.11.5 | **Liquidity/Market Material Risk Aggregation** |  | 20d | 2015-07-01 | 2015-07-28 |  |  |  | M. Murphy | 320h |
| 652 | 1.1.4.5.11.5.1 | ERM disseminates Workshop Pre-Read Materials to Risk Managers |  | 8d | 2015-07-01 | 2015-07-10 | 230d |  | start no earlier than 2015-07-01 | M. Murphy | 64h |
| 653 | 1.1.4.5.11.5.2 | Risk Manager conducts Pre-workshop Enrichment and Aggregation activities |  | 5d | 2015-07-13 | 2015-07-17 | 225d |  | start no earlier than 2015-07-13 | M. Murphy | 40h |
| 654 | 1.1.4.5.11.5.3 | ERM facilitates Aggregation and Enrichment Workshop |  | 5d | 2015-07-20 | 2015-07-24 | 220d |  | start no earlier than 2015-07-20 | M. Murphy | 40h |
| 655 | 1.1.4.5.11.5.4 | Risk Manager presents inventory to level II subcommittee |  | 2d | 2015-07-27 | 2015-07-28 | 218d |  | start no earlier than 2015-07-27 | M. Murphy | 16h |
| 656 | 1.1.4.5.11.5.5 | Liquidity Material Risk Aggregation Prepared | milestone | 0d | 2015-07-28 | 2015-07-28 | 219d |  | start no earlier than 2015-07-28 | M. Murphy |  |
| 657 | 1.1.4.5.11.6 | **Reputational/Strategic Material Risk Aggregation** |  | 20d | 2015-07-01 | 2015-07-28 |  |  |  | M. Murphy | 320h |
| 658 | 1.1.4.5.11.6.1 | ERM disseminates Workshop Pre-Read Materials to Risk Managers |  | 8d | 2015-07-01 | 2015-07-10 | 230d |  | start no earlier than 2015-07-01 | M. Murphy | 64h |
| 659 | 1.1.4.5.11.6.2 | Risk Manager conducts Pre-workshop Enrichment and Aggregation activities |  | 5d | 2015-07-13 | 2015-07-17 | 225d |  | start no earlier than 2015-07-13 | M. Murphy | 40h |
| 660 | 1.1.4.5.11.6.3 | ERM facilitates Aggregation and Enrichment Workshop |  | 5d | 2015-07-20 | 2015-07-24 | 220d |  | start no earlier than 2015-07-20 | M. Murphy | 40h |
| 661 | 1.1.4.5.11.6.4 | Risk Manager presents inventory to level II subcommittee |  | 2d | 2015-07-27 | 2015-07-28 | 218d |  | start no earlier than 2015-07-27 | M. Murphy | 16h |
| 662 | 1.1.4.5.11.6.5 | Reputational/Strategic Material Risk Aggregation Prepared | milestone | 0d | 2015-07-28 | 2015-07-28 | 219d | 0d | start no earlier than 2015-07-28 | M. Murphy |  |
| 663 | 1.1.4.5.12 | Conduct NY SIS Top Down Review |  | 25d | 2015-07-28 | 2015-08-31 | 194d |  | start no earlier than 2015-07-28 | M. Murphy | 200h |
| 664 | 1.1.4.5.13 | Present Results to NY SIS ERMC |  | 25d | 2015-07-28 | 2015-08-31 | 194d |  | finish no earlier than 2015-08-31 | M. Murphy | 200h |
| 665 | 1.1.4.5.14 | Present Results to NY SIS BERC |  | 25d | 2015-07-28 | 2015-08-31 | 194d |  | finish no earlier than 2015-08-31 | M. Murphy | 200h |
| 666 | 1.1.4.6 | **Puerto Rico - Business Entity Material Risk Program** |  | 68d | 2015-05-28 | 2015-08-31 | 0d |  |  | D. Fabrizio | 12664h |
| 667 | 1.1.4.6.1 | **Retail Banking Material Risk Inventory** |  | 24d | 2015-05-28 | 2015-06-30 |  |  |  | D. Fabrizio | 2232h |
| 668 | 1.1.4.6.1.1 | **Personal Loans Banking Material Risk Inventory** |  | 24d | 2015-05-28 | 2015-06-30 |  |  |  | D. Fabrizio | 408h |
| 669 | 1.1.4.6.1.1.1 | Create risk Inventory |  | 17d | 2015-05-28 | 2015-06-19 | 245d |  | finish no earlier than 2015-06-19 | D. Fabrizio | 136h |
| 670 | 1.1.4.6.1.1.2 | Present Draft to ERM |  | 3d | 2015-06-19 | 2015-06-23 | 243d |  | finish no earlier than 2015-06-23 | D. Fabrizio | 24h |
| 671 | 1.1.4.6.1.1.3 | ERM provides feedback |  | 5d | 2015-06-23 | 2015-06-29 | 239d |  | finish no earlier than 2015-06-29 | D. Fabrizio | 40h |
| 672 | 1.1.4.6.1.1.4 | Deliver Final to ERM |  | 2d | 2015-06-29 | 2015-06-30 | 238d |  | start no earlier than 2015-06-29 | D. Fabrizio | 16h |
| 673 | 1.1.4.6.1.1.5 | Personal Loans Banking Material Risk Inventory Prepared | milestone | 0d | 2015-06-30 | 2015-06-30 | 239d |  | start no earlier than 2015-06-30 | D. Fabrizio |  |

| ID | WBS | Task | Type | Duration | Start | Finish | Total slack | Constraint | Resources | Work |
| --- | --- | --- | --- | --- | --- | --- | --- | --- | --- | --- |
| 674 | 1.1.4.6.1.2 | **Small Business Banking Material Risk Inventory** |  | 24d | 2015-05-28 | 2015-06-30 |  |  | D. Fabrizio | 408h |
| 675 | 1.1.4.6.1.2.1 | Create risk Inventory |  | 17d | 2015-05-28 | 2015-06-19 | 245d | finish no earlier than 2015-06-19 | D. Fabrizio | 136h |
| 676 | 1.1.4.6.1.2.2 | Present Draft to ERM |  | 3d | 2015-06-19 | 2015-06-23 | 243d | finish no earlier than 2015-06-23 | D. Fabrizio | 24h |
| 677 | 1.1.4.6.1.2.3 | ERM provides feedback |  | 5d | 2015-06-23 | 2015-06-29 | 239d | finish no earlier than 2015-06-29 | D. Fabrizio | 40h |
| 678 | 1.1.4.6.1.2.4 | Deliver Final to ERM |  | 2d | 2015-06-29 | 2015-06-30 | 238d | finish no earlier than 2015-06-30 | D. Fabrizio | 16h |
| 679 | 1.1.4.6.1.2.5 | Small Business Banking Material Risk Inventory Prepared | milestone | 0d | 2015-06-30 | 2015-06-30 | 239d | start no earlier than 2015-06-30 | D. Fabrizio |  |
| 680 | 1.1.4.6.1.3 | **Santander Insurance Agency Material Risk Inventory** |  | 24d | 2015-05-28 | 2015-06-30 |  |  | D. Fabrizio | 408h |
| 681 | 1.1.4.6.1.3.1 | Create risk Inventory |  | 17d | 2015-05-28 | 2015-06-19 | 245d | finish no earlier than 2015-06-19 | D. Fabrizio | 136h |
| 682 | 1.1.4.6.1.3.2 | Present Draft to ERM |  | 3d | 2015-06-19 | 2015-06-23 | 243d | finish no earlier than 2015-06-23 | D. Fabrizio | 24h |
| 683 | 1.1.4.6.1.3.3 | ERM provides feedback |  | 5d | 2015-06-23 | 2015-06-29 | 239d | finish no earlier than 2015-06-29 | D. Fabrizio | 40h |
| 684 | 1.1.4.6.1.3.4 | Deliver Final to ERM |  | 2d | 2015-06-29 | 2015-06-30 | 238d | finish no earlier than 2015-06-30 | D. Fabrizio | 16h |
| 685 | 1.1.4.6.1.3.5 | Santander Insurance Agency Material Risk Inventory Prepared | milestone | 0d | 2015-06-30 | 2015-06-30 | 238d | finish no earlier than 2015-06-30 | D. Fabrizio |  |
| 686 | 1.1.4.6.1.4 | **Credit Cards Material Risk Inventory** |  | 24d | 2015-05-28 | 2015-06-30 |  |  | D. Fabrizio | 408h |
| 687 | 1.1.4.6.1.4.1 | Create risk Inventory |  | 17d | 2015-05-28 | 2015-06-19 | 245d | finish no earlier than 2015-06-19 | D. Fabrizio | 136h |
| 688 | 1.1.4.6.1.4.2 | Present Draft to ERM |  | 3d | 2015-06-19 | 2015-06-23 | 243d | finish no earlier than 2015-06-23 | D. Fabrizio | 24h |
| 689 | 1.1.4.6.1.4.3 | ERM provides feedback |  | 5d | 2015-06-23 | 2015-06-29 | 239d | finish no earlier than 2015-06-29 | D. Fabrizio | 40h |
| 690 | 1.1.4.6.1.4.4 | Deliver Final to ERM |  | 2d | 2015-06-29 | 2015-06-30 | 238d | finish no earlier than 2015-06-30 | D. Fabrizio | 16h |
| 691 | 1.1.4.6.1.4.5 | Credit Cards Material Risk Inventory Prepared | milestone | 0d | 2015-06-30 | 2015-06-30 | 238d | finish no earlier than 2015-06-30 | D. Fabrizio |  |
| 692 | 1.1.4.6.1.5 | **Mortgages Material Risk Inventory** |  | 24d | 2015-05-28 | 2015-06-30 |  |  | D. Fabrizio | 408h |
| 693 | 1.1.4.6.1.5.1 | Create risk Inventory |  | 17d | 2015-05-28 | 2015-06-19 | 245d | finish no earlier than 2015-06-19 | D. Fabrizio | 136h |
| 694 | 1.1.4.6.1.5.2 | Present Draft to ERM |  | 3d | 2015-06-19 | 2015-06-23 | 243d | finish no earlier than 2015-06-23 | D. Fabrizio | 24h |
| 695 | 1.1.4.6.1.5.3 | ERM provides feedback |  | 5d | 2015-06-23 | 2015-06-29 | 239d | finish no earlier than 2015-06-29 | D. Fabrizio | 40h |
| 696 | 1.1.4.6.1.5.4 | Deliver Final to ERM |  | 2d | 2015-06-29 | 2015-06-30 | 238d | finish no earlier than 2015-06-30 | D. Fabrizio | 16h |
| 697 | 1.1.4.6.1.5.5 | Mortgages Material Risk Inventory Prepared | milestone | 0d | 2015-06-30 | 2015-06-30 | 238d | finish no earlier than 2015-06-30 | D. Fabrizio |  |

| ID | WBS | Task | Type | Duration | Start | Finish | Total slack | Constraint | Resources | Work |
| --- | --- | --- | --- | --- | --- | --- | --- | --- | --- | --- |
| 698 | 1.1.4.6.2 | **Retail Banking: Create Retail Banking Material Risk Inventory** |  | 24d | 2015-05-28 | 2015-06-30 |  |  | D. Fabrizio | 400h |
| 699 | 1.1.4.6.2.1 | Create Segment Material Risk Inventory (Aggregation) |  | 24d | 2015-05-28 | 2015-06-30 | 238d | finish no earlier than 2015-06-30 | D. Fabrizio | 192h |
| 700 | 1.1.4.6.2.2 | Segment head presents inventory to ERMC |  | 2d | 2015-06-29 | 2015-06-30 | 238d | finish no earlier than 2015-06-30 | D. Fabrizio | 16h |
| 701 | 1.1.4.6.2.3 | Retail Banking Material Risk Inventory Prepared | milestone | 0d | 2015-06-30 | 2015-06-30 | 238d | finish no earlier than 2015-06-30 | D. Fabrizio |  |
| 702 | 1.1.4.6.3 | **Global Banking/Commercial Banking and CRE/Speciality and Gov't Banking Material Risk Inventory** |  | 24d | 2015-05-28 | 2015-06-30 |  |  | D. Fabrizio | 1416h |
| 703 | 1.1.4.6.3.1 | **GBM Material Risk Inventory** |  | 24d | 2015-05-28 | 2015-06-30 |  |  | D. Fabrizio | 408h |
| 704 | 1.1.4.6.3.1.1 | Create risk Inventory |  | 17d | 2015-05-28 | 2015-06-19 | 245d | finish no earlier than 2015-06-19 | D. Fabrizio | 136h |
| 705 | 1.1.4.6.3.1.2 | Present Draft to ERM |  | 3d | 2015-06-19 | 2015-06-23 | 243d | finish no earlier than 2015-06-23 | D. Fabrizio | 24h |
| 706 | 1.1.4.6.3.1.3 | ERM provides feedback |  | 5d | 2015-06-23 | 2015-06-29 | 239d | finish no earlier than 2015-06-29 | D. Fabrizio | 40h |
| 707 | 1.1.4.6.3.1.4 | Deliver Final to ERM |  | 2d | 2015-06-29 | 2015-06-30 | 238d | finish no earlier than 2015-06-30 | D. Fabrizio | 16h |
| 708 | 1.1.4.6.3.1.5 | GBM Material Risk Inventory Prepared | milestone | 0d | 2015-06-30 | 2015-06-30 | 238d | finish no earlier than 2015-06-30 | D. Fabrizio |  |
| 709 | 1.1.4.6.3.2 | **Enterprise Material Risk Inventory** |  | 24d | 2015-05-28 | 2015-06-30 |  |  | D. Fabrizio | 408h |
| 710 | 1.1.4.6.3.2.1 | Create risk Inventory |  | 17d | 2015-05-28 | 2015-06-19 | 245d | finish no earlier than 2015-06-19 | D. Fabrizio | 136h |
| 711 | 1.1.4.6.3.2.2 | Present Draft to ERM |  | 3d | 2015-06-19 | 2015-06-23 | 243d | finish no earlier than 2015-06-23 | D. Fabrizio | 24h |
| 712 | 1.1.4.6.3.2.3 | ERM provides feedback |  | 5d | 2015-06-23 | 2015-06-29 | 239d | finish no earlier than 2015-06-29 | D. Fabrizio | 40h |
| 713 | 1.1.4.6.3.2.4 | Deliver Final to ERM |  | 2d | 2015-06-29 | 2015-06-30 | 238d | finish no earlier than 2015-06-30 | D. Fabrizio | 16h |
| 714 | 1.1.4.6.3.2.5 | Enterprise Material Risk Inventory Prepared | milestone | 0d | 2015-06-30 | 2015-06-30 | 238d | finish no earlier than 2015-06-30 | D. Fabrizio |  |
| 715 | 1.1.4.6.3.3 | **Institutional/Public Sector Material Risk Inventory** |  | 24d | 2015-05-28 | 2015-06-30 |  |  | D. Fabrizio | 408h |
| 716 | 1.1.4.6.3.3.1 | Create risk Inventory |  | 17d | 2015-05-28 | 2015-06-19 | 245d | finish no earlier than 2015-06-19 | D. Fabrizio | 136h |
| 717 | 1.1.4.6.3.3.2 | Present Draft to ERM |  | 3d | 2015-06-19 | 2015-06-23 | 243d | finish no earlier than 2015-06-23 | D. Fabrizio | 24h |
| 718 | 1.1.4.6.3.3.3 | ERM provides feedback |  | 5d | 2015-06-23 | 2015-06-29 | 239d | finish no earlier than 2015-06-29 | D. Fabrizio | 40h |
| 719 | 1.1.4.6.3.3.4 | Deliver Final to ERM |  | 2d | 2015-06-29 | 2015-06-30 | 238d | finish no earlier than 2015-06-30 | D. Fabrizio | 16h |
| 720 | 1.1.4.6.3.3.5 | Institutional/Public Sector Material Risk Inventory Prepared | milestone | 0d | 2015-06-30 | 2015-06-30 | 238d | finish no earlier than 2015-06-30 | D. Fabrizio |  |
| 721 | 1.1.4.6.4 | **Global Banking/Commercial Banking/CRE & Speciality: Create Global Banking Material Risk Inventory** |  | 24d | 2015-05-28 | 2015-06-30 |  |  | D. Fabrizio | 400h |
| 722 | 1.1.4.6.4.1 | Create Segment Material Risk Inventory (Aggregation) |  | 24d | 2015-05-28 | 2015-06-30 | 238d | finish no earlier than 2015-06-30 | D. Fabrizio | 192h |
| 723 | 1.1.4.6.4.2 | Segment head presents inventory to ERMC |  | 2d | 2015-06-29 | 2015-06-30 | 238d | finish no earlier than 2015-06-30 | D. Fabrizio | 16h |
| 724 | 1.1.4.6.4.3 | Global Banking/Commercial Banking/CRE&Specialty: Create Global Banking Material Risk Inventory Prepared | milestone | 0d | 2015-06-30 | 2015-06-30 | 238d | finish no earlier than 2015-06-30 | D. Fabrizio |  |

| ID | WBS | Task | Type | Duration | Start | Finish | Total slack | Constraint | Resources | Work |
| --- | --- | --- | --- | --- | --- | --- | --- | --- | --- | --- |
| 725 | 1.1.4.6.5 | **Mortgage Servicing Material Risk Inventory** |  | 24d | 2015-05-28 | 2015-06-30 |  |  | D. Fabrizio | 416h |
| 726 | 1.1.4.6.5.1 | Create risk Inventory |  | 17d | 2015-05-28 | 2015-06-19 | 245d | finish no earlier than 2015-06-19 | D. Fabrizio | 136h |
| 727 | 1.1.4.6.5.2 | Present Draft to ERM |  | 3d | 2015-06-19 | 2015-06-23 | 243d | finish no earlier than 2015-06-23 | D. Fabrizio | 24h |
| 728 | 1.1.4.6.5.3 | ERM provides feedback |  | 4d | 2015-06-23 | 2015-06-26 | 240d | finish no earlier than 2015-06-26 | D. Fabrizio | 32h |
| 729 | 1.1.4.6.5.4 | Deliver Final to ERM |  | 2d | 2015-06-26 | 2015-06-29 | 239d | finish no earlier than 2015-06-29 | D. Fabrizio | 16h |
| 730 | 1.1.4.6.5.5 | Present inventory to ERMC |  | 2d | 2015-06-29 | 2015-06-30 | 238d | finish no earlier than 2015-06-30 | D. Fabrizio | 16h |
| 731 | 1.1.4.6.5.6 | Mortgage Servicing Material Risk Inventory Prepared | milestone | 0d | 2015-06-30 | 2015-06-30 | 238d | finish no earlier than 2015-06-30 | D. Fabrizio |  |
| 732 | 1.1.4.6.6 | **Investment Services Material Risk Inventory** |  | 24d | 2015-05-28 | 2015-06-30 |  |  | D. Fabrizio | 416h |
| 733 | 1.1.4.6.6.1 | Create risk Inventory |  | 17d | 2015-05-28 | 2015-06-19 | 245d | finish no earlier than 2015-06-19 | D. Fabrizio | 136h |
| 734 | 1.1.4.6.6.2 | Present Draft to ERM |  | 3d | 2015-06-19 | 2015-06-23 | 243d | finish no earlier than 2015-06-23 | D. Fabrizio | 24h |
| 735 | 1.1.4.6.6.3 | ERM provides feedback |  | 4d | 2015-06-23 | 2015-06-26 | 240d | finish no earlier than 2015-06-26 | D. Fabrizio | 32h |
| 736 | 1.1.4.6.6.4 | Deliver Final to ERM |  | 2d | 2015-06-26 | 2015-06-29 | 239d | finish no earlier than 2015-06-29 | D. Fabrizio | 16h |
| 737 | 1.1.4.6.6.5 | Present inventory to ERMC |  | 2d | 2015-06-29 | 2015-06-30 | 238d | finish no earlier than 2015-06-30 | D. Fabrizio | 16h |
| 738 | 1.1.4.6.6.6 | Investment Services Material Risk Inventory Prepared | milestone | 0d | 2015-06-30 | 2015-06-30 | 239d | start no earlier than 2015-06-30 | D. Fabrizio |  |
| 739 | 1.1.4.6.7 | **Trust Material Risk Inventory** |  | 24d | 2015-05-28 | 2015-06-30 |  |  | D. Fabrizio | 416h |
| 740 | 1.1.4.6.7.1 | Create risk Inventory |  | 17d | 2015-05-28 | 2015-06-19 | 245d | finish no earlier than 2015-06-19 | D. Fabrizio | 136h |
| 741 | 1.1.4.6.7.2 | Present Draft to ERM |  | 3d | 2015-06-19 | 2015-06-23 | 243d | finish no earlier than 2015-06-23 | D. Fabrizio | 24h |
| 742 | 1.1.4.6.7.3 | ERM provides feedback |  | 4d | 2015-06-23 | 2015-06-26 | 240d | finish no earlier than 2015-06-26 | D. Fabrizio | 32h |
| 743 | 1.1.4.6.7.4 | Deliver Final to ERM |  | 2d | 2015-06-26 | 2015-06-29 | 239d | finish no earlier than 2015-06-29 | D. Fabrizio | 16h |
| 744 | 1.1.4.6.7.5 | Present inventory to ERMC |  | 2d | 2015-06-29 | 2015-06-30 | 238d | finish no earlier than 2015-06-30 | D. Fabrizio | 16h |
| 745 | 1.1.4.6.7.6 | Trust Material Risk Inventory Prepared | milestone | 0d | 2015-06-30 | 2015-06-30 | 239d | start no earlier than 2015-06-30 | D. Fabrizio |  |
| 746 | 1.1.4.6.8 | **Pension Plan Material Risk Inventory** |  | 24d | 2015-05-28 | 2015-06-30 |  |  | D. Fabrizio | 416h |
| 747 | 1.1.4.6.8.1 | Create risk Inventory |  | 17d | 2015-05-28 | 2015-06-19 | 245d | finish no earlier than 2015-06-19 | D. Fabrizio | 136h |
| 748 | 1.1.4.6.8.2 | Present Draft to ERM |  | 3d | 2015-06-19 | 2015-06-23 | 243d | finish no earlier than 2015-06-23 | D. Fabrizio | 24h |
| 749 | 1.1.4.6.8.3 | ERM provides feedback |  | 4d | 2015-06-23 | 2015-06-26 | 240d | finish no earlier than 2015-06-26 | D. Fabrizio | 32h |
| 750 | 1.1.4.6.8.4 | Deliver Final to ERM |  | 2d | 2015-06-26 | 2015-06-29 | 239d | finish no earlier than 2015-06-29 | D. Fabrizio | 16h |
| 751 | 1.1.4.6.8.5 | Present inventory to ERMC |  | 2d | 2015-06-29 | 2015-06-30 | 238d | finish no earlier than 2015-06-30 | D. Fabrizio | 16h |
| 752 | 1.1.4.6.8.6 | Pension Plan Material Risk Inventory Prepared | milestone | 0d | 2015-06-30 | 2015-06-30 | 239d | start no earlier than 2015-06-30 | D. Fabrizio |  |

| ID | WBS | Task | Type | Duration | Start | Finish | Total slack | Constraint | Resources | Work |
| --- | --- | --- | --- | --- | --- | --- | --- | --- | --- | --- |
| 753 | 1.1.4.6.9 | **Foreign Accounts Material Risk Inventory** |  | 24d | 2015-05-28 | 2015-06-30 |  |  | D. Fabrizio | 416h |
| 754 | 1.1.4.6.9.1 | Create risk Inventory |  | 17d | 2015-05-28 | 2015-06-19 | 245d | finish no earlier than 2015-06-19 | D. Fabrizio | 136h |
| 755 | 1.1.4.6.9.2 | Present Draft to ERM |  | 3d | 2015-06-19 | 2015-06-23 | 243d | finish no earlier than 2015-06-23 | D. Fabrizio | 24h |
| 756 | 1.1.4.6.9.3 | ERM provides feedback |  | 4d | 2015-06-23 | 2015-06-26 | 240d | finish no earlier than 2015-06-26 | D. Fabrizio | 32h |
| 757 | 1.1.4.6.9.4 | Deliver Final to ERM |  | 2d | 2015-06-26 | 2015-06-29 | 239d | finish no earlier than 2015-06-29 | D. Fabrizio | 16h |
| 758 | 1.1.4.6.9.5 | Present inventory to ERMC |  | 2d | 2015-06-29 | 2015-06-30 | 238d | finish no earlier than 2015-06-30 | D. Fabrizio | 16h |
| 759 | 1.1.4.6.9.6 | Foreign Accounts Material Risk Inventory Prepared | milestone | 0d | 2015-06-30 | 2015-06-30 | 239d | start no earlier than 2015-06-30 | D. Fabrizio |  |
| 760 | 1.1.4.6.10 | **Human Resources Material Risk Inventory** |  | 24d | 2015-05-28 | 2015-06-30 |  |  | D. Fabrizio | 416h |
| 761 | 1.1.4.6.10.1 | Create risk Inventory |  | 17d | 2015-05-28 | 2015-06-19 | 245d | finish no earlier than 2015-06-19 | D. Fabrizio | 136h |
| 762 | 1.1.4.6.10.2 | Present Draft to ERM |  | 3d | 2015-06-19 | 2015-06-23 | 243d | finish no earlier than 2015-06-23 | D. Fabrizio | 24h |
| 763 | 1.1.4.6.10.3 | ERM provides feedback |  | 4d | 2015-06-23 | 2015-06-26 | 240d | finish no earlier than 2015-06-26 | D. Fabrizio | 32h |
| 764 | 1.1.4.6.10.4 | Deliver Final to ERM |  | 2d | 2015-06-26 | 2015-06-29 | 239d | finish no earlier than 2015-06-29 | D. Fabrizio | 16h |
| 765 | 1.1.4.6.10.5 | Present inventory to ERMC |  | 2d | 2015-06-29 | 2015-06-30 | 238d | finish no earlier than 2015-06-30 | D. Fabrizio | 16h |
| 766 | 1.1.4.6.10.6 | Human Resources Material Risk Inventory Prepared | milestone | 0d | 2015-06-30 | 2015-06-30 | 239d | start no earlier than 2015-06-30 | D. Fabrizio |  |
| 767 | 1.1.4.6.11 | **Technology and Operations Material Risk Inventory** |  | 24d | 2015-05-28 | 2015-06-30 |  |  | D. Fabrizio | 416h |
| 768 | 1.1.4.6.11.1 | Create risk Inventory |  | 17d | 2015-05-28 | 2015-06-19 | 245d | finish no earlier than 2015-06-19 | D. Fabrizio | 136h |
| 769 | 1.1.4.6.11.2 | Present Draft to ERM |  | 3d | 2015-06-19 | 2015-06-23 | 243d | finish no earlier than 2015-06-23 | D. Fabrizio | 24h |
| 770 | 1.1.4.6.11.3 | ERM provides feedback |  | 4d | 2015-06-23 | 2015-06-26 | 240d | finish no earlier than 2015-06-26 | D. Fabrizio | 32h |
| 771 | 1.1.4.6.11.4 | Deliver Final to ERM |  | 2d | 2015-06-26 | 2015-06-29 | 239d | finish no earlier than 2015-06-29 | D. Fabrizio | 16h |
| 772 | 1.1.4.6.11.5 | Present inventory to ERMC |  | 2d | 2015-06-29 | 2015-06-30 | 238d | finish no earlier than 2015-06-30 | D. Fabrizio | 16h |
| 773 | 1.1.4.6.11.6 | Tech and Ops Material Risk Inventory Prepared | milestone | 0d | 2015-06-30 | 2015-06-30 | 239d | start no earlier than 2015-06-30 | D. Fabrizio |  |
| 774 | 1.1.4.6.12 | **Legal Material Risk Inventory** |  | 24d | 2015-05-28 | 2015-06-30 |  |  | D. Fabrizio | 416h |
| 775 | 1.1.4.6.12.1 | Create risk Inventory |  | 17d | 2015-05-28 | 2015-06-19 | 245d | finish no earlier than 2015-06-19 | D. Fabrizio | 136h |
| 776 | 1.1.4.6.12.2 | Present Draft to ERM |  | 3d | 2015-06-19 | 2015-06-23 | 243d | finish no earlier than 2015-06-23 | D. Fabrizio | 24h |
| 777 | 1.1.4.6.12.3 | ERM provides feedback |  | 4d | 2015-06-23 | 2015-06-26 | 240d | finish no earlier than 2015-06-26 | D. Fabrizio | 32h |
| 778 | 1.1.4.6.12.4 | Deliver Final to ERM |  | 2d | 2015-06-26 | 2015-06-29 | 239d | finish no earlier than 2015-06-29 | D. Fabrizio | 16h |
| 779 | 1.1.4.6.12.5 | Present inventory to ERMC |  | 2d | 2015-06-29 | 2015-06-30 | 238d | finish no earlier than 2015-06-30 | D. Fabrizio | 16h |
| 780 | 1.1.4.6.12.6 | Legal Material Risk Inventory Prepared | milestone | 0d | 2015-06-30 | 2015-06-30 | 239d | start no earlier than 2015-06-30 | D. Fabrizio |  |

| ID | WBS | Task | Type | Duration | Start | Finish | Total slack | Constraint | Resources | Work |
| --- | --- | --- | --- | --- | --- | --- | --- | --- | --- | --- |
| 781 | 1.1.4.6.13 | **Finance Material Risk Inventory** |  | 24d | 2015-05-28 | 2015-06-30 |  |  | D. Fabrizio | 416h |
| 782 | 1.1.4.6.13.1 | Create risk Inventory |  | 17d | 2015-05-28 | 2015-06-19 | 245d | finish no earlier than 2015-06-19 | D. Fabrizio | 136h |
| 783 | 1.1.4.6.13.2 | Present Draft to ERM |  | 3d | 2015-06-19 | 2015-06-23 | 243d | finish no earlier than 2015-06-23 | D. Fabrizio | 24h |
| 784 | 1.1.4.6.13.3 | ERM provides feedback |  | 4d | 2015-06-23 | 2015-06-26 | 240d | finish no earlier than 2015-06-26 | D. Fabrizio | 32h |
| 785 | 1.1.4.6.13.4 | Deliver Final to ERM |  | 2d | 2015-06-26 | 2015-06-29 | 239d | finish no earlier than 2015-06-29 | D. Fabrizio | 16h |
| 786 | 1.1.4.6.13.5 | Present inventory to ERMC |  | 2d | 2015-06-29 | 2015-06-30 | 238d | finish no earlier than 2015-06-30 | D. Fabrizio | 16h |
| 787 | 1.1.4.6.13.6 | Finance Material Risk Inventory Prepared | milestone | 0d | 2015-06-30 | 2015-06-30 | 239d | start no earlier than 2015-06-30 | D. Fabrizio |  |
| 788 | 1.1.4.6.14 | **SFS - Island Finance Material Risk Inventory** |  | 24d | 2015-05-28 | 2015-06-30 |  |  | D. Fabrizio | 416h |
| 789 | 1.1.4.6.14.1 | Create risk Inventory |  | 17d | 2015-05-28 | 2015-06-19 | 245d | finish no earlier than 2015-06-19 | D. Fabrizio | 136h |
| 790 | 1.1.4.6.14.2 | Present Draft to ERM |  | 3d | 2015-06-19 | 2015-06-23 | 243d | finish no earlier than 2015-06-23 | D. Fabrizio | 24h |
| 791 | 1.1.4.6.14.3 | ERM provides feedback |  | 4d | 2015-06-23 | 2015-06-26 | 240d | finish no earlier than 2015-06-26 | D. Fabrizio | 32h |
| 792 | 1.1.4.6.14.4 | Deliver Final to ERM |  | 2d | 2015-06-26 | 2015-06-29 | 239d | finish no earlier than 2015-06-29 | D. Fabrizio | 16h |
| 793 | 1.1.4.6.14.5 | Present inventory to ERMC |  | 2d | 2015-06-29 | 2015-06-30 | 238d | finish no earlier than 2015-06-30 | D. Fabrizio | 16h |
| 794 | 1.1.4.6.14.6 | SFS-Island Finance Material Risk Inventory Prepared | milestone | 0d | 2015-06-30 | 2015-06-30 | 239d | start no earlier than 2015-06-30 | D. Fabrizio |  |
| 795 | 1.1.4.6.15 | **SFS - Special Assets Material Risk Inventory** |  | 24d | 2015-05-28 | 2015-06-30 |  |  | D. Fabrizio | 416h |
| 796 | 1.1.4.6.15.1 | Create risk Inventory |  | 17d | 2015-05-28 | 2015-06-19 | 245d | finish no earlier than 2015-06-19 | D. Fabrizio | 136h |
| 797 | 1.1.4.6.15.2 | Present Draft to ERM |  | 3d | 2015-06-19 | 2015-06-23 | 243d | finish no earlier than 2015-06-23 | D. Fabrizio | 24h |
| 798 | 1.1.4.6.15.3 | ERM provides feedback |  | 4d | 2015-06-23 | 2015-06-26 | 240d | finish no earlier than 2015-06-26 | D. Fabrizio | 32h |
| 799 | 1.1.4.6.15.4 | Deliver Final to ERM |  | 2d | 2015-06-26 | 2015-06-29 | 239d | finish no earlier than 2015-06-29 | D. Fabrizio | 16h |
| 800 | 1.1.4.6.15.5 | Present inventory to ERMC |  | 2d | 2015-06-29 | 2015-06-30 | 238d | finish no earlier than 2015-06-30 | D. Fabrizio | 16h |
| 801 | 1.1.4.6.15.6 | SFS-Special Assets Material Risk Inventory Prepared | milestone | 0d | 2015-06-30 | 2015-06-30 | 239d | start no earlier than 2015-06-30 | D. Fabrizio |  |
| 802 | 1.1.4.6.16 | **Santander Overseas Bank - GBM Material Risk Inventory** |  | 24d | 2015-05-28 | 2015-06-30 |  |  | D. Fabrizio | 416h |
| 803 | 1.1.4.6.16.1 | Create risk Inventory |  | 17d | 2015-05-28 | 2015-06-19 | 245d | finish no earlier than 2015-06-19 | D. Fabrizio | 136h |
| 804 | 1.1.4.6.16.2 | Present Draft to ERM |  | 3d | 2015-06-19 | 2015-06-23 | 243d | finish no earlier than 2015-06-23 | D. Fabrizio | 24h |
| 805 | 1.1.4.6.16.3 | ERM provides feedback |  | 4d | 2015-06-23 | 2015-06-26 | 240d | finish no earlier than 2015-06-26 | D. Fabrizio | 32h |
| 806 | 1.1.4.6.16.4 | Deliver Final to ERM |  | 2d | 2015-06-26 | 2015-06-29 | 239d | finish no earlier than 2015-06-29 | D. Fabrizio | 16h |
| 807 | 1.1.4.6.16.5 | Present inventory to ERMC |  | 2d | 2015-06-29 | 2015-06-30 | 238d | finish no earlier than 2015-06-30 | D. Fabrizio | 16h |
| 808 | 1.1.4.6.16.6 | Santander Overseas Bank-GBM Material Risk Inventory Prepared | milestone | 0d | 2015-06-30 | 2015-06-30 | 239d | start no earlier than 2015-06-30 | D. Fabrizio |  |

| ID | WBS | Task | Type | Duration | Start | Finish | Total slack | Constraint | Resources | Work |
| --- | --- | --- | --- | --- | --- | --- | --- | --- | --- | --- |
| 809 | 1.1.4.6.17 | **Puerto Rico - Santander Bancorp Aggregation Workshops** |  | 20d | 2015-07-01 | 2015-07-28 |  |  | D. Fabrizio | 2080h |
| 810 | 1.1.4.6.17.1 | **Credit Risk Aggregation** |  | 20d | 2015-07-01 | 2015-07-28 |  |  | D. Fabrizio | 320h |
| 811 | 1.1.4.6.17.1.1 | ERM disseminates Workshop Pre-Read Materials to Risk Managers |  | 8d | 2015-07-01 | 2015-07-10 | 230d | finish no earlier than 2015-07-10 | D. Fabrizio | 64h |
| 812 | 1.1.4.6.17.1.2 | Risk Manager conducts Pre-workshop Enrichment and Aggregation activities |  | 5d | 2015-07-13 | 2015-07-17 | 225d | finish no earlier than 2015-07-17 | D. Fabrizio | 40h |
| 813 | 1.1.4.6.17.1.3 | ERM facilitates Aggregation and Enrichment Workshop |  | 5d | 2015-07-20 | 2015-07-24 | 220d | finish no earlier than 2015-07-24 | D. Fabrizio | 40h |
| 814 | 1.1.4.6.17.1.4 | Risk Manager presents inventory to level II subcommittee |  | 2d | 2015-07-27 | 2015-07-28 | 218d | finish no earlier than 2015-07-28 | D. Fabrizio | 16h |
| 815 | 1.1.4.6.17.1.5 | Credit Risk Aggregation Prepared | milestone | 0d | 2015-07-28 | 2015-07-28 | 219d | start no earlier than 2015-07-28 | D. Fabrizio |  |
| 816 | 1.1.4.6.17.2 | **Operational Risk Material Risk Aggregation** |  | 20d | 2015-07-01 | 2015-07-28 |  |  | D. Fabrizio | 320h |
| 817 | 1.1.4.6.17.2.1 | ERM disseminates Workshop Pre-Read Materials to Risk Managers |  | 8d | 2015-07-01 | 2015-07-10 | 230d | finish no earlier than 2015-07-10 | D. Fabrizio | 64h |
| 818 | 1.1.4.6.17.2.2 | Risk Manager conducts Pre-workshop Enrichment and Aggregation activities |  | 5d | 2015-07-13 | 2015-07-17 | 225d | finish no earlier than 2015-07-17 | D. Fabrizio | 40h |
| 819 | 1.1.4.6.17.2.3 | ERM facilitates Aggregation and Enrichment Workshop |  | 5d | 2015-07-20 | 2015-07-24 | 220d | finish no earlier than 2015-07-24 | D. Fabrizio | 40h |
| 820 | 1.1.4.6.17.2.4 | Risk Manager presents inventory to level II subcommittee |  | 2d | 2015-07-27 | 2015-07-28 | 218d | finish no earlier than 2015-07-28 | D. Fabrizio | 16h |
| 821 | 1.1.4.6.17.2.5 | Operational Risk Material Risk Aggregation Prepared | milestone | 0d | 2015-07-28 | 2015-07-28 | 219d | start no earlier than 2015-07-28 | D. Fabrizio |  |
| 822 | 1.1.4.6.17.3 | **Compliance Material Risk Aggregation** |  | 20d | 2015-07-01 | 2015-07-28 |  |  | D. Fabrizio | 320h |
| 823 | 1.1.4.6.17.3.1 | ERM disseminates Workshop Pre-Read Materials to Risk Managers |  | 8d | 2015-07-01 | 2015-07-10 | 230d | finish no earlier than 2015-07-10 | D. Fabrizio | 64h |
| 824 | 1.1.4.6.17.3.2 | Risk Manager conducts Pre-workshop Enrichment and Aggregation activities |  | 5d | 2015-07-13 | 2015-07-17 | 225d | finish no earlier than 2015-07-17 | D. Fabrizio | 40h |
| 825 | 1.1.4.6.17.3.3 | ERM facilitates Aggregation and Enrichment Workshop |  | 5d | 2015-07-20 | 2015-07-24 | 220d | finish no earlier than 2015-07-24 | D. Fabrizio | 40h |
| 826 | 1.1.4.6.17.3.4 | Risk Manager presents inventory to level II subcommittee |  | 2d | 2015-07-27 | 2015-07-28 | 218d | finish no earlier than 2015-07-28 | D. Fabrizio | 16h |
| 827 | 1.1.4.6.17.3.5 | Compliance Material Risk Aggregation Prepared | milestone | 0d | 2015-07-28 | 2015-07-28 | 219d | start no earlier than 2015-07-28 | D. Fabrizio |  |
| 828 | 1.1.4.6.17.4 | **Model Material Risk Aggregation** |  | 20d | 2015-07-01 | 2015-07-28 |  |  | D. Fabrizio | 320h |
| 829 | 1.1.4.6.17.4.1 | ERM disseminates Workshop Pre-Read Materials to Risk Managers |  | 8d | 2015-07-01 | 2015-07-10 | 230d | finish no earlier than 2015-07-10 | D. Fabrizio | 64h |
| 830 | 1.1.4.6.17.4.2 | Risk Manager conducts Pre-workshop Enrichment and Aggregation activities |  | 5d | 2015-07-13 | 2015-07-17 | 225d | finish no earlier than 2015-07-17 | D. Fabrizio | 40h |
| 831 | 1.1.4.6.17.4.3 | ERM facilitates Aggregation and Enrichment Workshop |  | 5d | 2015-07-20 | 2015-07-24 | 220d | finish no earlier than 2015-07-24 | D. Fabrizio | 40h |
| 832 | 1.1.4.6.17.4.4 | Risk Manager presents inventory to level II subcommittee |  | 2d | 2015-07-27 | 2015-07-28 | 218d | finish no earlier than 2015-07-28 | D. Fabrizio | 16h |
| 833 | 1.1.4.6.17.4.5 | Model Material Risk Aggregation Prepared | milestone | 0d | 2015-07-28 | 2015-07-28 | 219d | start no earlier than 2015-07-28 | D. Fabrizio |  |

| ID | WBS | Task | Type | Duration | Start | Finish | Total slack | Free slack | Constraint | Resources | Work |
| --- | --- | --- | --- | --- | --- | --- | --- | --- | --- | --- | --- |
| 834 | 1.1.4.6.17.5 | **Liquidity/Market Material Risk Aggregation** |  | 20d | 2015-07-01 | 2015-07-28 |  |  |  | D. Fabrizio | 320h |
| 835 | 1.1.4.6.17.5.1 | ERM disseminates Workshop Pre-Read Materials to Risk Managers |  | 8d | 2015-07-01 | 2015-07-10 | 230d |  | finish no earlier than 2015-07-10 | D. Fabrizio | 64h |
| 836 | 1.1.4.6.17.5.2 | Risk Manager conducts Pre-workshop Enrichment and Aggregation activities |  | 5d | 2015-07-13 | 2015-07-17 | 225d |  | finish no earlier than 2015-07-17 | D. Fabrizio | 40h |
| 837 | 1.1.4.6.17.5.3 | ERM facilitates Aggregation and Enrichment Workshop |  | 5d | 2015-07-20 | 2015-07-24 | 220d |  | finish no earlier than 2015-07-24 | D. Fabrizio | 40h |
| 838 | 1.1.4.6.17.5.4 | Risk Manager presents inventory to level II subcommittee |  | 2d | 2015-07-27 | 2015-07-28 | 218d |  | finish no earlier than 2015-07-28 | D. Fabrizio | 16h |
| 839 | 1.1.4.6.17.5.5 | Liquidity/Market Material Risk Aggregation Prepared | milestone | 0d | 2015-07-28 | 2015-07-28 | 219d |  | start no earlier than 2015-07-28 | D. Fabrizio |  |
| 840 | 1.1.4.6.17.6 | **Reputational/Strategic Material Risk Aggregation** |  | 20d | 2015-07-01 | 2015-07-28 |  |  |  | D. Fabrizio | 320h |
| 841 | 1.1.4.6.17.6.1 | ERM disseminates Workshop Pre-Read Materials to Risk Managers |  | 8d | 2015-07-01 | 2015-07-10 | 230d |  | finish no earlier than 2015-07-10 | D. Fabrizio | 64h |
| 842 | 1.1.4.6.17.6.2 | Risk Manager conducts Pre-workshop Enrichment and Aggregation activities |  | 5d | 2015-07-13 | 2015-07-17 | 225d |  | finish no earlier than 2015-07-17 | D. Fabrizio | 40h |
| 843 | 1.1.4.6.17.6.3 | ERM facilitates Aggregation and Enrichment Workshop |  | 5d | 2015-07-20 | 2015-07-24 | 220d |  | finish no earlier than 2015-07-24 | D. Fabrizio | 40h |
| 844 | 1.1.4.6.17.6.4 | Risk Manager presents inventory to level II subcommittee |  | 2d | 2015-07-27 | 2015-07-28 | 218d |  | finish no earlier than 2015-07-28 | D. Fabrizio | 16h |
| 845 | 1.1.4.6.17.6.5 | Reputational/Strategic Material Risk Aggregation Prepared | milestone | 0d | 2015-07-28 | 2015-07-28 | 219d | 0d | start no earlier than 2015-07-28 | D. Fabrizio |  |
| 846 | 1.1.4.6.18 | Conduct PR Santander Bancorp Top Down Review |  | 25d | 2015-07-28 | 2015-08-31 | 194d |  | start no earlier than 2015-07-28 | D. Fabrizio | 200h |
| 847 | 1.1.4.6.19 | Present Results to PR Santander Bancorp ERMC |  | 25d | 2015-07-28 | 2015-08-31 | 194d |  | start no earlier than 2015-07-28 | D. Fabrizio | 200h |
| 848 | 1.1.4.6.20 | Present Results to PR Santander Bancorp BERC |  | 25d | 2015-07-28 | 2015-08-31 | 194d |  | start no earlier than 2015-07-28 | D. Fabrizio | 200h |
| 849 | 1.1.4.7 | **Miami - Business Entity Material Risk Program** |  | 68d | 2015-05-28 | 2015-08-31 |  |  |  | L. Madariaga | 5696h |
| 850 | 1.1.4.7.1 | **Private Banking Material Risk Inventory** |  | 24d | 2015-05-28 | 2015-06-30 |  |  |  | L. Madariaga | 416h |
| 851 | 1.1.4.7.1.1 | Create risk Inventory |  | 17d | 2015-05-28 | 2015-06-19 | 245d |  | start no earlier than 2015-05-28 | L. Madariaga | 136h |
| 852 | 1.1.4.7.1.2 | Present Draft to ERM |  | 3d | 2015-06-19 | 2015-06-23 | 243d |  | start no earlier than 2015-06-19 | L. Madariaga | 24h |
| 853 | 1.1.4.7.1.3 | ERM provides feedback |  | 4d | 2015-06-23 | 2015-06-26 | 240d |  | start no earlier than 2015-06-23 | L. Madariaga | 32h |
| 854 | 1.1.4.7.1.4 | Deliver Final to ERM |  | 2d | 2015-06-26 | 2015-06-29 | 239d |  | start no earlier than 2015-06-26 | L. Madariaga | 16h |
| 855 | 1.1.4.7.1.5 | Present inventory to ERMC |  | 2d | 2015-06-29 | 2015-06-30 | 238d |  | start no earlier than 2015-06-29 | L. Madariaga | 16h |
| 856 | 1.1.4.7.1.6 | Private Banking Material Risk Inventory Prepared | milestone | 0d | 2015-06-30 | 2015-06-30 | 239d |  | start no earlier than 2015-06-30 | L. Madariaga |  |
| 857 | 1.1.4.7.2 | **Personal Lending Material Risk Inventory** |  | 24d | 2015-05-28 | 2015-06-30 |  |  |  | L. Madariaga | 416h |
| 858 | 1.1.4.7.2.1 | Create risk Inventory |  | 17d | 2015-05-28 | 2015-06-19 | 245d |  | start no earlier than 2015-05-28 | L. Madariaga | 136h |
| 859 | 1.1.4.7.2.2 | Present Draft to ERM |  | 3d | 2015-06-19 | 2015-06-23 | 243d |  | start no earlier than 2015-06-19 | L. Madariaga | 24h |
| 860 | 1.1.4.7.2.3 | ERM provides feedback |  | 4d | 2015-06-23 | 2015-06-26 | 240d |  | start no earlier than 2015-06-23 | L. Madariaga | 32h |
| 861 | 1.1.4.7.2.4 | Deliver Final to ERM |  | 2d | 2015-06-26 | 2015-06-29 | 239d |  | start no earlier than 2015-06-26 | L. Madariaga | 16h |
| 862 | 1.1.4.7.2.5 | Present inventory to ERMC |  | 2d | 2015-06-29 | 2015-06-30 | 238d |  | start no earlier than 2015-06-29 | L. Madariaga | 16h |
| 863 | 1.1.4.7.2.6 | Personal Lending Material Risk Inventory Prepared | milestone | 0d | 2015-06-30 | 2015-06-30 | 239d |  | start no earlier than 2015-06-30 | L. Madariaga |  |

| ID | WBS | Task | Type | Duration | Start | Finish | Total slack | Constraint | Resources | Work |
| --- | --- | --- | --- | --- | --- | --- | --- | --- | --- | --- |
| 864 | 1.1.4.7.3 | **Human Resources Material Risk Inventory** |  | 24d | 2015-05-28 | 2015-06-30 |  |  | L. Madariaga | 416h |
| 865 | 1.1.4.7.3.1 | Create risk Inventory |  | 17d | 2015-05-28 | 2015-06-19 | 245d | start no earlier than 2015-05-28 | L. Madariaga | 136h |
| 866 | 1.1.4.7.3.2 | Present Draft to ERM |  | 3d | 2015-06-19 | 2015-06-23 | 243d | start no earlier than 2015-06-19 | L. Madariaga | 24h |
| 867 | 1.1.4.7.3.3 | ERM provides feedback |  | 4d | 2015-06-23 | 2015-06-26 | 240d | start no earlier than 2015-06-23 | L. Madariaga | 32h |
| 868 | 1.1.4.7.3.4 | Deliver Final to ERM |  | 2d | 2015-06-26 | 2015-06-29 | 239d | start no earlier than 2015-06-26 | L. Madariaga | 16h |
| 869 | 1.1.4.7.3.5 | Present inventory to ERMC |  | 2d | 2015-06-29 | 2015-06-30 | 238d | start no earlier than 2015-06-29 | L. Madariaga | 16h |
| 870 | 1.1.4.7.3.6 | Human Resources Material Risk Inventory Prepared | milestone | 0d | 2015-06-30 | 2015-06-30 | 239d | start no earlier than 2015-06-30 | L. Madariaga |  |
| 871 | 1.1.4.7.4 | **Finance and Accounting Material Risk Inventory** |  | 24d | 2015-05-28 | 2015-06-30 |  |  | L. Madariaga | 416h |
| 872 | 1.1.4.7.4.1 | Create risk Inventory |  | 17d | 2015-05-28 | 2015-06-19 | 245d | start no earlier than 2015-05-28 | L. Madariaga | 136h |
| 873 | 1.1.4.7.4.2 | Present Draft to ERM |  | 3d | 2015-06-19 | 2015-06-23 | 243d | start no earlier than 2015-06-19 | L. Madariaga | 24h |
| 874 | 1.1.4.7.4.3 | ERM provides feedback |  | 4d | 2015-06-23 | 2015-06-26 | 240d | start no earlier than 2015-06-23 | L. Madariaga | 32h |
| 875 | 1.1.4.7.4.4 | Deliver Final to ERM |  | 2d | 2015-06-26 | 2015-06-29 | 239d | start no earlier than 2015-06-26 | L. Madariaga | 16h |
| 876 | 1.1.4.7.4.5 | Present inventory to ERMC |  | 2d | 2015-06-29 | 2015-06-30 | 238d | start no earlier than 2015-06-29 | L. Madariaga | 16h |
| 877 | 1.1.4.7.4.6 | Finance and Accounting Material Risk Inventory Prepared | milestone | 0d | 2015-06-30 | 2015-06-30 | 239d | start no earlier than 2015-06-30 | L. Madariaga |  |
| 878 | 1.1.4.7.5 | **Technology and Operations Material Risk Inventory** |  | 24d | 2015-05-28 | 2015-06-30 |  |  | L. Madariaga | 416h |
| 879 | 1.1.4.7.5.1 | Create risk Inventory |  | 17d | 2015-05-28 | 2015-06-19 | 245d | start no earlier than 2015-05-28 | L. Madariaga | 136h |
| 880 | 1.1.4.7.5.2 | Present Draft to ERM |  | 3d | 2015-06-19 | 2015-06-23 | 243d | start no earlier than 2015-06-19 | L. Madariaga | 24h |
| 881 | 1.1.4.7.5.3 | ERM provides feedback |  | 4d | 2015-06-23 | 2015-06-26 | 240d | start no earlier than 2015-06-23 | L. Madariaga | 32h |
| 882 | 1.1.4.7.5.4 | Deliver Final to ERM |  | 2d | 2015-06-26 | 2015-06-29 | 239d | start no earlier than 2015-06-26 | L. Madariaga | 16h |
| 883 | 1.1.4.7.5.5 | Present inventory to ERMC |  | 2d | 2015-06-29 | 2015-06-30 | 238d | start no earlier than 2015-06-29 | L. Madariaga | 16h |
| 884 | 1.1.4.7.5.6 | Tech and Ops Material Risk Inventory Prepared | milestone | 0d | 2015-06-30 | 2015-06-30 | 239d | start no earlier than 2015-06-30 | L. Madariaga |  |
| 885 | 1.1.4.7.6 | **Legal Material Risk Inventory** |  | 24d | 2015-05-28 | 2015-06-30 |  |  | L. Madariaga | 392h |
| 886 | 1.1.4.7.6.1 | Create risk Inventory |  | 12d | 2015-05-28 | 2015-06-12 | 250d | start no earlier than 2015-05-28 | L. Madariaga | 96h |
| 887 | 1.1.4.7.6.2 | Present Draft to ERM |  | 6d | 2015-06-12 | 2015-06-19 | 245d | start no earlier than 2015-06-12 | L. Madariaga | 48h |
| 888 | 1.1.4.7.6.3 | ERM provides feedback |  | 3d | 2015-06-19 | 2015-06-23 | 243d | start no earlier than 2015-06-19 | L. Madariaga | 24h |
| 889 | 1.1.4.7.6.4 | Deliver Final to ERM |  | 2d | 2015-06-29 | 2015-06-30 | 238d | start no earlier than 2015-06-29 | L. Madariaga | 16h |
| 890 | 1.1.4.7.6.5 | Present inventory to ERMC |  | 2d | 2015-06-29 | 2015-06-30 | 238d | start no earlier than 2015-06-29 | L. Madariaga | 16h |
| 891 | 1.1.4.7.6.6 | Legal Material Risk Inventory Prepared | milestone | 0d | 2015-06-30 | 2015-06-30 | 239d | start no earlier than 2015-06-30 | L. Madariaga |  |

| ID | WBS | Task | Type | Duration | Start | Finish | Total slack | Constraint | Resources | Work |
| --- | --- | --- | --- | --- | --- | --- | --- | --- | --- | --- |
| 892 | 1.1.4.7.7 | **Miami Aggregation Workshops** |  | 20d | 2015-07-01 | 2015-07-28 |  |  | L. Madariaga | 2080h |
| 893 | 1.1.4.7.7.1 | **Credit Risk Aggregation** |  | 20d | 2015-07-01 | 2015-07-28 |  |  | L. Madariaga | 320h |
| 894 | 1.1.4.7.7.1.1 | ERM disseminates Workshop Pre-Read Materials to Risk Managers |  | 8d | 2015-07-01 | 2015-07-10 | 230d | start no earlier than 2015-07-01 | L. Madariaga | 64h |
| 895 | 1.1.4.7.7.1.2 | Risk Manager conducts Pre-workshop Enrichment and Aggregation activities |  | 5d | 2015-07-13 | 2015-07-17 | 225d | start no earlier than 2015-07-13 | L. Madariaga | 40h |
| 896 | 1.1.4.7.7.1.3 | ERM facilitates Aggregation and Enrichment Workshop |  | 5d | 2015-07-20 | 2015-07-24 | 220d | start no earlier than 2015-07-20 | L. Madariaga | 40h |
| 897 | 1.1.4.7.7.1.4 | Risk Manager presents inventory to level II subcommittee |  | 2d | 2015-07-27 | 2015-07-28 | 218d | start no earlier than 2015-07-27 | L. Madariaga | 16h |
| 898 | 1.1.4.7.7.1.5 | Credit Risk Aggregation Prepared | milestone | 0d | 2015-07-28 | 2015-07-28 | 219d | start no earlier than 2015-07-28 | L. Madariaga |  |
| 899 | 1.1.4.7.7.2 | **Operational Risk Material Risk Aggregation** |  | 20d | 2015-07-01 | 2015-07-28 |  |  | L. Madariaga | 320h |
| 900 | 1.1.4.7.7.2.1 | ERM disseminates Workshop Pre-Read Materials to Risk Managers |  | 8d | 2015-07-01 | 2015-07-10 | 230d | start no earlier than 2015-07-01 | L. Madariaga | 64h |
| 901 | 1.1.4.7.7.2.2 | Risk Manager conducts Pre-workshop Enrichment and Aggregation activities |  | 5d | 2015-07-13 | 2015-07-17 | 225d | start no earlier than 2015-07-13 | L. Madariaga | 40h |
| 902 | 1.1.4.7.7.2.3 | ERM facilitates Aggregation and Enrichment Workshop |  | 5d | 2015-07-20 | 2015-07-24 | 220d | start no earlier than 2015-07-20 | L. Madariaga | 40h |
| 903 | 1.1.4.7.7.2.4 | Risk Manager presents inventory to level II subcommittee |  | 2d | 2015-07-27 | 2015-07-28 | 218d | start no earlier than 2015-07-27 | L. Madariaga | 16h |
| 904 | 1.1.4.7.7.2.5 | Operational Risk Material Risk Aggregation Prepared | milestone | 0d | 2015-07-28 | 2015-07-28 | 219d | start no earlier than 2015-07-28 | L. Madariaga |  |
| 905 | 1.1.4.7.7.3 | **Compliance Material Risk Aggregation** |  | 20d | 2015-07-01 | 2015-07-28 |  |  | L. Madariaga | 320h |
| 906 | 1.1.4.7.7.3.1 | ERM disseminates Workshop Pre-Read Materials to Risk Managers |  | 8d | 2015-07-01 | 2015-07-10 | 230d | start no earlier than 2015-07-01 | L. Madariaga | 64h |
| 907 | 1.1.4.7.7.3.2 | Risk Manager conducts Pre-workshop Enrichment and Aggregation activities |  | 5d | 2015-07-13 | 2015-07-17 | 225d | start no earlier than 2015-07-13 | L. Madariaga | 40h |
| 908 | 1.1.4.7.7.3.3 | ERM facilitates Aggregation and Enrichment Workshop |  | 5d | 2015-07-20 | 2015-07-24 | 220d | start no earlier than 2015-07-20 | L. Madariaga | 40h |
| 909 | 1.1.4.7.7.3.4 | Risk Manager presents inventory to level II subcommittee |  | 2d | 2015-07-27 | 2015-07-28 | 218d | start no earlier than 2015-07-27 | L. Madariaga | 16h |
| 910 | 1.1.4.7.7.3.5 | Compliance Material Risk Aggregation Prepared | milestone | 0d | 2015-07-28 | 2015-07-28 | 219d | start no earlier than 2015-07-28 | L. Madariaga |  |
| 911 | 1.1.4.7.7.4 | **Model Material Risk Aggregation** |  | 20d | 2015-07-01 | 2015-07-28 |  |  | L. Madariaga | 320h |
| 912 | 1.1.4.7.7.4.1 | ERM disseminates Workshop Pre-Read Materials to Risk Managers |  | 8d | 2015-07-01 | 2015-07-10 | 230d | start no earlier than 2015-07-01 | L. Madariaga | 64h |
| 913 | 1.1.4.7.7.4.2 | Risk Manager conducts Pre-workshop Enrichment and Aggregation activities |  | 5d | 2015-07-13 | 2015-07-17 | 225d | start no earlier than 2015-07-13 | L. Madariaga | 40h |
| 914 | 1.1.4.7.7.4.3 | ERM facilitates Aggregation and Enrichment Workshop |  | 5d | 2015-07-20 | 2015-07-24 | 220d | start no earlier than 2015-07-20 | L. Madariaga | 40h |
| 915 | 1.1.4.7.7.4.4 | Risk Manager presents inventory to level II subcommittee |  | 2d | 2015-07-27 | 2015-07-28 | 218d | start no earlier than 2015-07-27 | L. Madariaga | 16h |
| 916 | 1.1.4.7.7.4.5 | Model Material Risk Aggregation Prepared | milestone | 0d | 2015-07-28 | 2015-07-28 | 219d | start no earlier than 2015-07-28 | L. Madariaga |  |

| ID | WBS | Task | Type | Duration | Start | Finish | Total slack | Free slack | Constraint | Resources | Work |
| --- | --- | --- | --- | --- | --- | --- | --- | --- | --- | --- | --- |
| 917 | 1.1.4.7.7.5 | **Liquidity/Market Material Risk Aggregation** |  | 20d | 2015-07-01 | 2015-07-28 |  |  |  | L. Madariaga | 320h |
| 918 | 1.1.4.7.7.5.1 | ERM disseminates Workshop Pre-Read Materials to Risk Managers |  | 8d | 2015-07-01 | 2015-07-10 | 230d |  | start no earlier than 2015-07-01 | L. Madariaga | 64h |
| 919 | 1.1.4.7.7.5.2 | Risk Manager conducts Pre-workshop Enrichment and Aggregation activities |  | 5d | 2015-07-13 | 2015-07-17 | 225d |  | start no earlier than 2015-07-13 | L. Madariaga | 40h |
| 920 | 1.1.4.7.7.5.3 | ERM facilitates Aggregation and Enrichment Workshop |  | 5d | 2015-07-20 | 2015-07-24 | 220d |  | start no earlier than 2015-07-20 | L. Madariaga | 40h |
| 921 | 1.1.4.7.7.5.4 | Risk Manager presents inventory to level II subcommittee |  | 2d | 2015-07-27 | 2015-07-28 | 218d |  | start no earlier than 2015-07-27 | L. Madariaga | 16h |
| 922 | 1.1.4.7.7.5.5 | Liquidity/Market Material Risk Aggregation Prepared | milestone | 0d | 2015-07-28 | 2015-07-28 | 219d |  | start no earlier than 2015-07-28 | L. Madariaga |  |
| 923 | 1.1.4.7.7.6 | **Reputational/Strategic Material Risk Aggregation** |  | 20d | 2015-07-01 | 2015-07-28 |  |  |  | L. Madariaga | 320h |
| 924 | 1.1.4.7.7.6.1 | ERM disseminates Workshop Pre-Read Materials to Risk Managers |  | 8d | 2015-07-01 | 2015-07-10 | 230d |  | start no earlier than 2015-07-01 | L. Madariaga | 64h |
| 925 | 1.1.4.7.7.6.2 | Risk Manager conducts Pre-workshop Enrichment and Aggregation activities |  | 5d | 2015-07-13 | 2015-07-17 | 225d |  | start no earlier than 2015-07-13 | L. Madariaga | 40h |
| 926 | 1.1.4.7.7.6.3 | ERM facilitates Aggregation and Enrichment Workshop |  | 5d | 2015-07-20 | 2015-07-24 | 220d |  | start no earlier than 2015-07-20 | L. Madariaga | 40h |
| 927 | 1.1.4.7.7.6.4 | Risk Manager presents inventory to level II subcommittee |  | 2d | 2015-07-27 | 2015-07-28 | 218d |  | start no earlier than 2015-07-27 | L. Madariaga | 16h |
| 928 | 1.1.4.7.7.6.5 | Reputational/Strategic Material Risk Aggregation Prepared | milestone | 0d | 2015-07-28 | 2015-07-28 | 219d | 0d | start no earlier than 2015-07-28 | L. Madariaga |  |
| 929 | 1.1.4.7.8 | Conduct Miami Top Down Review |  | 25d | 2015-07-28 | 2015-08-31 | 194d |  | start no earlier than 2015-07-28 | L. Madariaga | 200h |
| 930 | 1.1.4.7.9 | Present Miami to SCUSA ERMC |  | 25d | 2015-07-28 | 2015-08-31 | 194d |  | finish no earlier than 2015-08-31 | L. Madariaga | 200h |
| 931 | 1.1.4.7.10 | Present Miami to SCUSA BERC |  | 25d | 2015-07-28 | 2015-08-31 | 194d |  | finish no earlier than 2015-08-31 | L. Madariaga | 200h |
| 932 | 1.1.5 | **Financial Risk Mgmt-Design and operationalize** |  | 1d? | 2015-06-05 | 2015-06-05 | 255d |  |  |  |  |
| 933 | 1.1.5.1 | **Conduct high level of credit risk management** |  | 1d? | 2015-06-05 | 2015-06-05 | 255d |  |  |  |  |
| 934 | 1.1.5.1.1 | High level wholesale credit process review incl. limits / controls and DoA at SCUSA and SBNA |  | 1d? | 2015-06-05 | 2015-06-05 | 255d |  |  |  |  |
| 935 | 1.1.5.1.2 | MILESTONE |  | 1d? | 2015-06-05 | 2015-06-05 | 255d |  |  |  |  |
| 936 | 1.1.5.2 | **Conduct liquidity risk gap analysis** |  | 1d? | 2015-06-05 | 2015-06-05 | 255d |  |  |  |  |
| 937 | 1.1.5.2.1 | Definition of target liq. risk capabilities, current state review and remediation plan |  | 1d? | 2015-06-05 | 2015-06-05 | 255d |  |  |  |  |
| 938 | 1.1.5.2.2 | MILESTONE |  | 1d? | 2015-06-05 | 2015-06-05 | 255d |  |  |  |  |
| 939 | 1.1.6 | **Update internal reporting** |  | 1d? | 2015-06-05 | 2015-06-05 | 255d |  |  |  |  |
| 940 | 1.1.6.1 | **Enhance internal reporting** |  | 1d? | 2015-06-05 | 2015-06-05 | 255d |  |  |  |  |
| 941 | 1.1.6.1.1 | Assessment of current reporting landscape with quick win enhancements |  | 1d? | 2015-06-05 | 2015-06-05 | 255d |  |  |  |  |
| 942 | 1.1.6.1.2 | Definition of target risk reporting landscape |  | 1d? | 2015-06-05 | 2015-06-05 | 255d |  |  |  |  |
| 943 | 1.1.6.1.3 | Template reports and socialization of high priority reports |  | 1d? | 2015-06-05 | 2015-06-05 | 255d |  |  |  |  |
| 944 | 1.1.6.1.4 | Operationalization of high priority reports e.g. allocate reporting resources |  | 1d? | 2015-06-05 | 2015-06-05 | 255d |  |  |  |  |
| 945 | 1.1.6.1.5 | Template reports and socialization of low priority reports |  | 1d? | 2015-06-05 | 2015-06-05 | 255d |  |  |  |  |
| 946 | 1.1.6.1.6 | MILESTONE |  | 1d? | 2015-06-05 | 2015-06-05 | 255d |  |  |  |  |
