# 1111 CART- Risk Transformation Deliverable Inventory_0615

Schedule from MS Project, 2015-05-28 to 2016-05-27.

## Calendars

- Standard: Mon-Fri 08:00-12:00, 13:00-17:00; Sat-Sun off.

## Resources

| Resource |
| --- |
| David Mael |
| R. Alhadeff/M. Carbone |
| J. Smith/T. Ploetz |
| M. Murphy |
| D. Fabrizio |
| L. Madariaga |

## Schedule

| ID | WBS | Task | Type | Duration | Start | Finish | Predecessors | Total slack | Free slack | Constraint | Deadline | Work | Tracking Status |
| --- | --- | --- | --- | --- | --- | --- | --- | --- | --- | --- | --- | --- | --- |
| 1 | 1 | **CART- Risk Transformation Deliverable Inventory_0611** |  | 262d? | 2015-05-28 | 2016-05-27 |  | -117d | 0d |  |  | 6080h |  |
| 2 | 1.1 | **Capital and Risk Transformation SHUSA** |  | 262d? | 2015-05-28 | 2016-05-27 |  | -117d | 0d |  |  | 6080h |  |
| 3 | 1.1.1 | **Risk Transformation** |  | 262d? | 2015-05-28 | 2016-05-27 |  | -117d | 0d |  |  | 6080h |  |
| 4 | 1.1.1.1 | **Risk Appetite Statement(RAS)** |  | 260d | 2015-06-01 | 2016-05-27 |  | 0d |  |  |  |  | Late |
| 5 | 1.1.1.1.1 | **RAS Deliverables** |  | 0d | 2015-12-31 | 2015-12-31 |  | 106d |  |  |  |  | Late |
| 6 | 1.1.1.1.1.1 | example deliverable (linked to the detail below) | milestone | 0d | 2015-12-31 | 2015-12-31 | 33, 44, 48, 119, 122, 71 | 106d |  |  |  |  | Late |
| 7 | 1.1.1.1.2 | **Re-designed SHUSA RAS framework** |  | 105d | 2015-06-08 | 2015-10-30 |  | 0d |  |  |  |  | Late |
| 8 | 1.1.1.1.2.1 | **SHUSA-level RAS** |  | 60d | 2015-06-08 | 2015-08-28 |  | 0d |  |  |  |  | Late |
| 9 | 1.1.1.1.2.1.1 | **Finalize project plan and communicate to CART stakeholders** |  | 10d | 2015-06-08 | 2015-06-19 |  | 61d |  |  |  |  | Late |
| 10 | 1.1.1.1.2.1.1.1 | Finalize CART plan at task-level |  | 1d | 2015-06-08 | 2015-06-08 |  | 245d | 0d | start no earlier than 2015-06-08 |  |  | Late |
| 11 | 1.1.1.1.2.1.1.2 | Socialize plan with key stakeholders (SHUSA, SBNA, SCUSA) |  | 9d | 2015-06-09 | 2015-06-19 | 10 | 245d |  | start no earlier than 2015-06-08 |  |  | Late |
| 12 | 1.1.1.1.2.1.1.3 | Communicate plan to CART stakeholders |  | 5d | 2015-06-15 | 2015-06-19 |  | 245d |  | start no earlier than 2015-06-15 |  |  | Late |
| 13 | 1.1.1.1.2.1.1.4 | Plan submitted to CART / Leadership Committee | milestone | 0d | 2015-06-19 | 2015-06-19 |  | 52d |  | start no earlier than 2015-06-19 | 2015-08-31 |  | Late |
| 14 | 1.1.1.1.2.1.2 | **Define principles and approach for choosing metrics and setting limits** |  | 10d | 2015-06-08 | 2015-06-19 |  | 62d |  |  |  |  |  |
| 15 | 1.1.1.1.2.1.2.1 | Draft principles and approach for metrics and limits (no Finance metrics, risk profile, risk appetite, stressed metrics) |  | 5d | 2015-06-08 | 2015-06-12 |  | 62d | 0d | finish no earlier than 2015-06-12 |  |  | Late |
| 16 | 1.1.1.1.2.1.2.2 | Socialize Risk Appetite principles to stakeholders (SHUSA, SBNA, SCUSA) |  | 5d | 2015-06-15 | 2015-06-19 | 15 | 62d | 0d | start no earlier than 2015-06-08 |  |  | Late |
| 17 | 1.1.1.1.2.1.2.3 | Finalized principles and approach for choosing metrics and setting limits | milestone | 0d | 2015-06-19 | 2015-06-19 | 16 | 62d |  |  | 2015-09-15 |  | Late |
| 18 | 1.1.1.1.2.1.3 | **Articulate enterprise-wide RAS philosophy and major risk categories** |  | 10d | 2015-06-08 | 2015-06-19 |  | 83d |  |  |  |  |  |
| 19 | 1.1.1.1.2.1.3.1 | Draft of enterprise-wide RAS philosophy and major risk categories (e.g. credit) |  | 5d | 2015-06-08 | 2015-06-12 |  | 250d |  | start no earlier than 2015-06-08 |  |  | Late |
| 20 | 1.1.1.1.2.1.3.2 | Socialize Risk Appetite philosophy to stakeholders (SHUSA, SBNA, SCUSA) |  | 5d | 2015-06-15 | 2015-06-19 |  | 245d |  | start no earlier than 2015-06-15 |  |  | Late |
| 21 | 1.1.1.1.2.1.3.3 | Finalized enterprise-wide RAS philosophy and major risk categories | milestone | 0d | 2015-06-19 | 2015-06-19 |  | 74d |  | start no earlier than 2015-06-19 | 2015-09-30 |  | Late |
| 22 | 1.1.1.1.2.1.4 | **Detail material risks and constraints for enterprise** |  | 15d | 2015-06-08 | 2015-06-26 |  | 100d |  |  |  |  |  |
| 23 | 1.1.1.1.2.1.4.1 | Identify and document material risks for enterprise, including input from stakeholders (SHUSA, SBNA, SCUSA) |  | 5d | 2015-06-08 | 2015-06-12 |  | 250d |  | start no earlier than 2015-06-08 |  |  | Late |
| 24 | 1.1.1.1.2.1.4.2 | Identify and document constraints from regulators and other stakeholders (i.e. ratings agencies) |  | 5d | 2015-06-15 | 2015-06-19 |  | 245d |  | start no earlier than 2015-06-15 |  |  | Late |
| 25 | 1.1.1.1.2.1.4.3 | Consolidate all requirements from Group, including updated corporate metrics (recalculated with April numbers) |  | 5d | 2015-06-15 | 2015-06-19 |  | 245d |  | start no earlier than 2015-06-15 |  |  | Late |
| 26 | 1.1.1.1.2.1.4.4 | Document owners and rationale for all corporate metrics |  | 5d | 2015-06-15 | 2015-06-19 |  | 245d |  | start no earlier than 2015-06-15 |  |  | Late |
| 27 | 1.1.1.1.2.1.4.5 | Facilitate review and challenge session for list of material risks with key stakeholders (SHUSA, SBNA, SCUSA) |  | 3d | 2015-06-22 | 2015-06-24 |  | 242d |  | start no earlier than 2015-06-22 |  |  | Late |
| 28 | 1.1.1.1.2.1.4.6 | Update documentation of material risks and constraints, given stakeholder input |  | 3d | 2015-06-24 | 2015-06-26 |  | 240d |  | start no earlier than 2015-06-24 |  |  | Late |
| 29 | 1.1.1.1.2.1.4.7 | Finalized documentation of material risks and constraints for enterprise | milestone | 0d | 2015-06-26 | 2015-06-26 |  | 86d |  | start no earlier than 2015-06-26 | 2015-10-23 |  | Late |

Notes:
- 6: Description of Deliverable

| ID | WBS | Task | Type | Duration | Start | Finish | Predecessors | Total slack | Free slack | Constraint | Deadline | Tracking Status |
| --- | --- | --- | --- | --- | --- | --- | --- | --- | --- | --- | --- | --- |
| 30 | 1.1.1.1.2.1.5 | **For each risk, determine a qualitative risk appetite statement** |  | 20d | 2015-06-08 | 2015-07-03 |  |  |  |  |  |  |
| 31 | 1.1.1.1.2.1.5.1 | Draft a qualitative risk appetite statement for all risks detailed in documentation of material risks for enterprise, considering documented constraints |  | 15d | 2015-06-08 | 2015-06-26 |  | 0d |  |  |  | Late |
| 32 | 1.1.1.1.2.1.5.2 | Socialize SHUSA-level qualitative statements with stakeholders (SHUSA, SBNA, SCUSA) |  | 5d | 2015-06-29 | 2015-07-03 | 31 | 0d |  |  |  | Late |
| 33 | 1.1.1.1.2.1.5.3 | Finalized qualitative risk appetite statements for material risks | milestone | 0d | 2015-07-03 | 2015-07-03 | 32 | 0d |  |  | 2015-12-31 | Late |
| 34 | 1.1.1.1.2.1.6 | **For quantifiable statements, identify key metrics and calibrate limits** |  | 45d | 2015-06-15 | 2015-08-14 |  | 139d |  |  |  |  |
| 35 | 1.1.1.1.2.1.6.1 | Finalize list of proposed SHUSA metrics |  | 1d | 2015-06-15 | 2015-06-15 |  | 249d |  | start no earlier than 2015-06-15 |  | Late |
| 36 | 1.1.1.1.2.1.6.2 | Facilitate review and challenge session for proposed metrics, limits and thresholds with key stakeholders (SHUSA, SBNA, SCUSA) |  | 1d | 2015-06-16 | 2015-06-16 |  | 248d |  | start no earlier than 2015-06-16 |  | Late |
| 37 | 1.1.1.1.2.1.6.3 | Update list of SHUSA metrics, given stakeholder input, and identify and document owners for each metric |  | 3d | 2015-06-17 | 2015-06-19 |  | 210d | 0d | start no earlier than 2015-06-17 |  | Late |
| 38 | 1.1.1.1.2.1.6.4 | Detail limits and thresholds for list of SHUSA metrics |  | 5d | 2015-06-22 | 2015-06-26 | 37 | 210d | 0d | start no earlier than 2015-06-22 |  | Late |
| 39 | 1.1.1.1.2.1.6.5 | Calibrate limits based on analysis of historical data, industry benchmarking, etc. |  | 30d | 2015-06-29 | 2015-08-07 | 38 | 210d |  | start no earlier than 2015-06-29 |  | Late |
| 40 | 1.1.1.1.2.1.6.6 | Document rationale for SHUSA metrics |  | 5d | 2015-07-13 | 2015-07-17 |  | 225d |  | start no earlier than 2015-07-13 |  | Late |
| 41 | 1.1.1.1.2.1.6.7 | Document IT requirements for SHUSA metrics |  | 15d | 2015-07-13 | 2015-07-31 |  | 215d |  | start no earlier than 2015-07-13 |  | Late |
| 42 | 1.1.1.1.2.1.6.8 | Consolidate metrics, limits and thresholds into quantifiable statements for material risks |  | 3d | 2015-08-10 | 2015-08-12 |  | 99d | 0d | start no earlier than 2015-08-10 |  | Late |
| 43 | 1.1.1.1.2.1.6.9 | Socialize quantitative statements with stakeholders (SHUSA, SBNA, SCUSA) |  | 2d | 2015-08-13 | 2015-08-14 | 42 | 99d | 0d | start no earlier than 2015-08-12 |  | Late |
| 44 | 1.1.1.1.2.1.6.10 | Finalized quantitative risk appetite statements for material risks | milestone | 0d | 2015-08-14 | 2015-08-14 | 43 | 99d |  | start no earlier than 2015-07-31 | 2015-12-31 | Late |
| 45 | 1.1.1.1.2.1.7 | **Consolidate qualitative and quantitative statements into SHUSA-level RAS and socialize with stakeholders** |  | 10d | 2015-08-17 | 2015-08-28 |  | 89d |  |  |  |  |
| 46 | 1.1.1.1.2.1.7.1 | Draft SHUSA-level RAS |  | 5d | 2015-08-17 | 2015-08-21 |  | 89d | 0d | start no earlier than 2015-08-17 |  | Late |
| 47 | 1.1.1.1.2.1.7.2 | Socialize SHUSA-level RAS with stakeholders (SHUSA, SBNA, SCUSA) |  | 5d | 2015-08-24 | 2015-08-28 | 46 | 89d | 0d |  |  | Late |
| 48 | 1.1.1.1.2.1.7.3 | Final draft of SHUSA-level RAS | milestone | 0d | 2015-08-28 | 2015-08-28 | 47 | 89d |  |  | 2015-12-31 | Late |
| 49 | 1.1.1.1.2.2 | **SHUSA-level RAS supporting processes and documentation** |  | 30d | 2015-07-06 | 2015-08-14 |  | 205d |  |  |  | Late |
| 50 | 1.1.1.1.2.2.1 | **Document SHUSA-level RAS reporting, monitoring and escalation processes** |  | 20d | 2015-07-06 | 2015-07-31 |  | 215d |  |  |  |  |
| 51 | 1.1.1.1.2.2.1.1 | Draft SHUSA-level RAS reporting and monitoring process |  | 15d | 2015-07-06 | 2015-07-24 |  | 220d |  | start no earlier than 2015-07-06 |  | Late |
| 52 | 1.1.1.1.2.2.1.2 | Draft SHUSA-level RAS breach escalation process and detail consequences |  | 15d | 2015-07-06 | 2015-07-24 |  | 215d | 0d | start no earlier than 2015-07-06 |  | Late |
| 53 | 1.1.1.1.2.2.1.3 | Socialize processes with stakeholders (SHUSA, SBNA, SCUSA) |  | 5d | 2015-07-27 | 2015-07-31 | 52 | 215d | 0d | start no earlier than 2015-07-27 |  | Late |
| 54 | 1.1.1.1.2.2.1.4 | Finalized SHUSA-level RAS reporting, monitoring and escalation processes | milestone | 0d | 2015-07-31 | 2015-07-31 | 53 | 215d |  | start no earlier than 2015-07-31 |  | Late |

| ID | WBS | Task | Type | Duration | Start | Finish | Predecessors | Total slack | Free slack | Constraint | Deadline | Tracking Status |
| --- | --- | --- | --- | --- | --- | --- | --- | --- | --- | --- | --- | --- |
| 55 | 1.1.1.1.2.2.2 | **Document SHUSA-level RAS development and governance process** |  | 20d | 2015-07-20 | 2015-08-14 |  | 205d |  |  |  |  |
| 56 | 1.1.1.1.2.2.2.1 | Draft SHUSA-level RAS development documentation and governance process |  | 15d | 2015-07-20 | 2015-08-07 |  | 205d | 0d | start no earlier than 2015-07-20 |  | Late |
| 57 | 1.1.1.1.2.2.2.2 | Socialize documents with stakeholders (SHUSA, SBNA, SCUSA) |  | 5d | 2015-08-10 | 2015-08-14 | 56 | 205d | 0d | start no earlier than 2015-08-07 |  | Late |
| 58 | 1.1.1.1.2.2.2.3 | Finalized SHUSA-level RAS development documentation and governance process | milestone | 0d | 2015-08-14 | 2015-08-14 | 57 | 205d |  | start no earlier than 2015-07-31 |  | Late |
| 59 | 1.1.1.1.2.3 | **SHUSA-level RAS framework approval process** |  | 45d | 2015-08-31 | 2015-10-30 |  | 44d |  |  |  | Late |
| 60 | 1.1.1.1.2.3.1 | **Educate Board and senior committees on RAS and secure approval** |  | 45d | 2015-08-31 | 2015-10-30 |  | 44d |  |  |  |  |
| 61 | 1.1.1.1.2.3.1.1 | Create materials for Board training on RAS roles & responsibilities |  | 5d | 2015-08-31 | 2015-09-04 |  | 190d |  | start no earlier than 2015-08-31 |  | Late |
| 62 | 1.1.1.1.2.3.1.2 | Create materials for Board training on RAS structure and metrics |  | 5d | 2015-08-31 | 2015-09-04 |  | 190d |  | start no earlier than 2015-08-31 |  | Late |
| 63 | 1.1.1.1.2.3.1.3 | Deliver Board training session(s) |  | 5d | 2015-09-21 | 2015-09-25 |  | 175d |  | start no earlier than 2015-09-21 |  | Late |
| 64 | 1.1.1.1.2.3.1.4 | Present SHUSA-level RAS to ERMC/EMC |  | 10d | 2015-08-31 | 2015-09-11 |  | 44d | 0d | start no earlier than 2015-08-31 |  | Late |
| 65 | 1.1.1.1.2.3.1.5 | Present CDR presentation to Madrid for review |  | 10d | 2015-08-31 | 2015-09-11 | 64FS-10d | 44d | 0d |  |  | Late |
| 66 | 1.1.1.1.2.3.1.6 | Update RAS given feedback from SHUSA and Madrid risk committees |  | 5d | 2015-09-14 | 2015-09-18 | 65 | 44d | 0d | start no earlier than 2015-09-14 |  | Late |
| 67 | 1.1.1.1.2.3.1.7 | Present to Board/BERC for review |  | 10d | 2015-09-21 | 2015-10-02 | 66 | 44d | 0d | start no earlier than 2015-09-07 |  | Late |
| 68 | 1.1.1.1.2.3.1.8 | Present SHUSA-level RAS to CDR |  | 5d | 2015-10-05 | 2015-10-09 | 67 | 44d | 0d | start no earlier than 2015-09-14 |  | Late |
| 69 | 1.1.1.1.2.3.1.9 | Update RAS given feedback from CDR |  | 10d | 2015-10-12 | 2015-10-23 | 68 | 44d | 0d |  |  | Late |
| 70 | 1.1.1.1.2.3.1.10 | Submit SHUSA-level RAS for Board approval |  | 5d | 2015-10-26 | 2015-10-30 | 69 | 44d | 0d | start no earlier than 2015-09-21 |  | Late |
| 71 | 1.1.1.1.2.3.1.11 | Board-approved SHUSA-level RAS | milestone | 0d | 2015-10-30 | 2015-10-30 | 70 | 44d |  | start no earlier than 2015-10-30 | 2015-12-31 | Late |
| 72 | 1.1.1.1.3 | **Cascaded RAS across enterprise** |  | 260d | 2015-06-01 | 2016-05-27 |  | 0d |  |  |  | Late |
| 73 | 1.1.1.1.3.1 | **Assessment of short-term SCUSA RAS** |  | 20d | 2015-06-01 | 2015-06-26 |  | 61d |  |  |  | Late |
| 74 | 1.1.1.1.3.1.1 | **Assess SCUSA RAS and determine plan for short-term remediation** |  | 5d | 2015-06-01 | 2015-06-05 |  | 66d |  |  |  | Late |
| 75 | 1.1.1.1.3.1.1.1 | Assess current state of SCUSA RAS, focusing on pre-determined "pain points" (not reviewing RAS in entirety) |  | 1d | 2015-06-01 | 2015-06-01 |  | 259d |  | start no earlier than 2015-06-01 |  | Late |
| 76 | 1.1.1.1.3.1.1.2 | Determine plan for short-term remediation |  | 5d | 2015-06-01 | 2015-06-05 |  | 255d |  | start no earlier than 2015-06-01 |  | Late |
| 77 | 1.1.1.1.3.1.1.3 | Finalized plan for SCUSA RAS short-term remediation | milestone | 0d | 2015-06-05 | 2015-06-05 |  | 62d |  | start no earlier than 2015-06-05 | 2015-08-31 | Late |
| 78 | 1.1.1.1.3.1.2 | **Implement remediations in the form of updated key limits** |  | 15d | 2015-06-08 | 2015-06-26 |  | 56d |  |  |  | Late |
| 79 | 1.1.1.1.3.1.2.1 | Redefine SCUSA liquidity limit |  | 5d | 2015-06-08 | 2015-06-12 |  | 250d |  | start no earlier than 2015-06-08 |  | Late |
| 80 | 1.1.1.1.3.1.2.2 | Redefine SCUSA RWA limit |  | 5d | 2015-06-08 | 2015-06-12 |  | 250d |  | start no earlier than 2015-06-08 |  | Late |
| 81 | 1.1.1.1.3.1.2.3 | Redefine SCUSA total asset limit |  | 5d | 2015-06-08 | 2015-06-12 |  | 56d |  | start no earlier than 2015-06-08 | 2015-08-31 | Late |
| 82 | 1.1.1.1.3.1.2.4 | Socialize updated limits and all proposed remediations to SCUSA RAS |  | 5d | 2015-06-15 | 2015-06-19 |  | 245d |  | start no earlier than 2015-06-15 |  | Late |
| 83 | 1.1.1.1.3.1.2.5 | Update SCUSA RAS based on agreed upon remediations |  | 5d | 2015-06-22 | 2015-06-26 |  | 240d |  | start no earlier than 2015-06-22 |  | Late |
| 84 | 1.1.1.1.3.1.2.6 | Finalized SCUSA RAS (for short-term use) | milestone | 0d | 2015-06-26 | 2015-06-26 |  | 47d |  | start no earlier than 2015-06-26 | 2015-08-31 | Late |

| ID | WBS | Task | Type | Duration | Start | Finish | Predecessors | Total slack | Free slack | Constraint | Deadline | Tracking Status |
| --- | --- | --- | --- | --- | --- | --- | --- | --- | --- | --- | --- | --- |
| 85 | 1.1.1.1.3.2 | **Definition of approach for cascading SHUSA-level RAS to subsidiaries and levels below** |  | 10d | 2015-08-03 | 2015-08-14 |  | 21d |  |  |  | Late |
| 86 | 1.1.1.1.3.2.1 | **Document approach for cascading SHUSA-level RAS to subsidiaries and levels below** |  | 10d | 2015-08-03 | 2015-08-14 |  | 21d |  |  |  | Late |
| 87 | 1.1.1.1.3.2.1.1 | Determine organizational levels to which cascading is appropriate and draft planned approach |  | 5d | 2015-08-03 | 2015-08-07 |  | 210d |  | finish no earlier than 2015-08-07 |  | Late |
| 88 | 1.1.1.1.3.2.1.2 | Facilitate review and challenge sessions for cascading approach with stakeholders (SHUSA, SBNA, SCUSA) |  | 3d | 2015-08-10 | 2015-08-12 |  | 207d |  | start no earlier than 2015-08-10 |  | Late |
| 89 | 1.1.1.1.3.2.1.3 | Update documentation for cascading approach, given stakeholder input |  | 3d | 2015-08-12 | 2015-08-14 |  | 205d |  | start no earlier than 2015-08-12 |  | Late |
| 90 | 1.1.1.1.3.2.1.4 | Finalized plan for cascading SHUSA-level RAS to subsidiaries and levels below | milestone | 0d | 2015-08-14 | 2015-08-14 |  | 12d |  | start no earlier than 2015-08-14 | 2015-08-31 | Late |
| 91 | 1.1.1.1.3.3 | **RAS for priority subsidiaries SBNA & SCUSA – follow similar process as SHUSA** |  | 120d | 2015-08-17 | 2016-01-29 |  |  |  |  |  | Late |
| 92 | 1.1.1.1.3.3.1 | **Detail material risks specific to SBNA and SCUSA (leveraging SHUSA-level list, but making additions as necessary)** |  | 10d | 2015-08-17 | 2015-08-28 |  | 110d |  |  |  |  |
| 93 | 1.1.1.1.3.3.1.1 | Identify and document subsidiary-specific risks and constraints, including those not captured in SHUSA-level RAS |  | 5d | 2015-08-17 | 2015-08-21 |  | 110d | 0d |  |  | Late |
| 94 | 1.1.1.1.3.3.1.2 | Identify and document constraints from Group, regulators and other stakeholders (i.e. ratings agencies) |  | 5d | 2015-08-17 | 2015-08-21 |  | 115d |  |  |  | Late |
| 95 | 1.1.1.1.3.3.1.3 | Facilitate review and challenge session for list of material risks with key stakeholders (SHUSA, SBNA, SCUSA) |  | 3d | 2015-08-24 | 2015-08-26 | 93 | 110d | 0d |  |  | Late |
| 96 | 1.1.1.1.3.3.1.4 | Update documentation of subsidiary-specific risks and constraints, given stakeholder input |  | 2d | 2015-08-27 | 2015-08-28 | 95 | 110d |  |  |  | Late |
| 97 | 1.1.1.1.3.3.1.5 | Finalized documentation of material risks and constraints specific to priority subsidiaries | milestone | 0d | 2015-08-17 | 2015-08-17 |  | 120d |  |  |  | Late |
| 98 | 1.1.1.1.3.3.2 | **For each risk, determine a qualitative risk appetite statement (leveraging SHUSA-level RAS)** |  | 15d | 2015-08-31 | 2015-09-18 |  | 95d |  |  |  | Late |
| 99 | 1.1.1.1.3.3.2.1 | Determine SHUSA-level RAS statements relevant to subsidiaries |  | 3d | 2015-08-31 | 2015-09-02 |  | 95d | 0d | start no earlier than 2015-08-31 |  | Late |
| 100 | 1.1.1.1.3.3.2.2 | Detail statements for material risks specific to the subsidiary, not captured in SHUSA-level RAS |  | 7d | 2015-09-03 | 2015-09-11 | 99 | 95d | 0d | start no earlier than 2015-08-31 |  | Late |
| 101 | 1.1.1.1.3.3.2.3 | Consolidate into subsidiary specific-list of statements (leverage existing work) |  | 3d | 2015-09-14 | 2015-09-16 | 100 | 95d | 0d | start no earlier than 2015-09-14 |  | Late |
| 102 | 1.1.1.1.3.3.2.4 | Socialize SBNA and SCUSA qualitative statements with key stakeholders (SHUSA, SBNA, SCUSA) |  | 2d | 2015-09-17 | 2015-09-18 | 101 | 95d | 0d |  |  | Late |
| 103 | 1.1.1.1.3.3.2.5 | Finalized qualitative risk appetite statements for subsidiary-specific risks | milestone | 0d | 2015-09-18 | 2015-09-18 | 102 | 95d |  |  |  | Late |
| 104 | 1.1.1.1.3.3.3 | **For quantifiable statements, identify key metrics and calibrate limits (leveraging SHUSA-level RAS)** |  | 40d | 2015-09-14 | 2015-11-06 |  | 60d |  |  |  | Late |
| 105 | 1.1.1.1.3.3.3.1 | Determine SHUSA-level RAS metrics relevant to subsidiaries |  | 3d | 2015-09-14 | 2015-09-16 |  | 95d | 0d | start no earlier than 2015-09-14 |  | Late |
| 106 | 1.1.1.1.3.3.3.2 | Identify metrics for material risks specific to the subsidiary, not captured in SHUSA-level RAS, and compile in list with relevant metrics from SHUSA-level RAS |  | 2d | 2015-09-17 | 2015-09-18 | 105 | 95d |  |  |  | Late |
| 107 | 1.1.1.1.3.3.3.3 | Facilitate review and challenge session for proposed metrics, limits and thresholds with key stakeholders (SHUSA, SBNA, SCUSA) |  | 1d | 2015-09-28 | 2015-09-28 | 109 | 85d | 0d | start no earlier than 2015-07-06 |  | Late |
| 108 | 1.1.1.1.3.3.3.4 | Update list of subsidiary-specific metrics, given stakeholder input, and identify and document owners for each metric |  | 4d | 2015-09-29 | 2015-10-02 | 107 | 85d |  | finish no earlier than 2015-07-10 |  | Late |
| 109 | 1.1.1.1.3.3.3.5 | Detail limits and thresholds for list of subsidiary-specific metrics |  | 5d | 2015-09-21 | 2015-09-25 |  | 85d | 0d | start no earlier than 2015-09-21 |  | Late |
| 110 | 1.1.1.1.3.3.3.6 | Calibrate limits for subsidiary risks, ensure subsidiary-level limits align to SHUSA-level limits |  | 30d | 2015-09-21 | 2015-10-30 |  | 60d | 0d | start no earlier than 2015-09-21 |  | Late |
| 111 | 1.1.1.1.3.3.3.7 | Document rationale for SHUSA metrics |  | 5d | 2015-09-21 | 2015-09-25 |  | 90d |  | start no earlier than 2015-09-21 |  | Late |
| 112 | 1.1.1.1.3.3.3.8 | Document IT requirements for SHUSA metrics |  | 15d | 2015-09-14 | 2015-10-02 |  | 85d |  | start no earlier than 2015-09-14 |  | Late |
| 113 | 1.1.1.1.3.3.3.9 | Consolidate metrics, limits and thresholds into quantifiable statements for subsidiary-specific risks |  | 3d | 2015-11-02 | 2015-11-04 | 110 | 60d | 0d | finish no earlier than 2015-07-29 |  | Late |
| 114 | 1.1.1.1.3.3.3.10 | Socialize SBNA and SCUSA quantitative statements with stakeholders (SHUSA, SBNA, SCUSA) |  | 2d | 2015-11-05 | 2015-11-06 | 113 | 60d | 0d | finish no earlier than 2015-07-31 |  | Late |
| 115 | 1.1.1.1.3.3.3.11 | Finalized quantitative risk appetite statements for subsidiary-specific risks | milestone | 0d | 2015-11-06 | 2015-11-06 | 114 | 60d |  | start no earlier than 2015-07-31 |  | Late |

| ID | WBS | Task | Type | Duration | Start | Finish | Predecessors | Total slack | Free slack | Constraint | Deadline | Tracking Status |
| --- | --- | --- | --- | --- | --- | --- | --- | --- | --- | --- | --- | --- |
| 116 | 1.1.1.1.3.3.4 | **Consolidate qualitative and quantitative statements into SBNA RAS and SCUSA RAS and socialize with stakeholders** |  | 10d | 2015-11-09 | 2015-11-20 |  | 29d |  |  |  |  |
| 117 | 1.1.1.1.3.3.4.1 | Draft SBNA RAS and SCUSA RAS |  | 5d | 2015-11-09 | 2015-11-13 |  | 29d | 0d | start no earlier than 2015-11-09 |  | Late |
| 118 | 1.1.1.1.3.3.4.2 | Socialize SBNA RAS and SCUSA RAS with stakeholders (SHUSA, SBNA, SCUSA) |  | 5d | 2015-11-16 | 2015-11-20 | 117 | 29d | 0d |  |  | Late |
| 119 | 1.1.1.1.3.3.4.3 | Final drafts of SBNA RAS and SCUSA RAS | milestone | 0d | 2015-11-20 | 2015-11-20 | 118 | 29d |  |  | 2015-12-31 | Late |
| 120 | 1.1.1.1.3.3.5 | **Secure Board approval of RAS for priority subsidiaries** |  | 30d | 2015-11-20 | 2015-12-31 |  | 0d |  |  |  |  |
| 121 | 1.1.1.1.3.3.5.1 | 6-week buffer for governance process |  | 30d | 2015-11-20 | 2015-12-31 |  | 0d |  | start no earlier than 2015-11-20 |  | Late |
| 122 | 1.1.1.1.3.3.5.2 | Board-approved SHUSA-level RAS | milestone | 0d | 2015-12-31 | 2015-12-31 | 121 | 0d |  | start no earlier than 2015-12-04 | 2015-12-31 | Late |
| 123 | 1.1.1.1.3.3.6 | **Communicate SHUSA, SBNA, and SCUSA RAS to enterprise** |  | 40d | 2015-12-31 | 2016-02-24 |  | -18d | 0d |  |  | Late |
| 124 | 1.1.1.1.3.3.6.1 | Create communication materials to aid in socialization process |  | 10d | 2015-12-31 | 2016-01-13 |  | -18d | 0d | start no earlier than 2015-12-31 |  | Late |
| 125 | 1.1.1.1.3.3.6.2 | Facilitate training, town halls, etc. to communicate RAS to enterprise |  | 30d | 2016-01-14 | 2016-02-24 | 124 | -18d | 0d | start no earlier than 2015-12-21 |  | Late |
| 126 | 1.1.1.1.3.3.6.3 | Completed formal communication process to enterprise | milestone | 0d | 2016-02-24 | 2016-02-24 | 125 | -18d | 0d |  |  | Late |
| 127 | 1.1.1.1.3.4 | **RAS for remainder of subsidiaries and select BUs** |  | 85d | 2016-02-01 | 2016-05-27 |  | 0d |  |  |  | Late |
| 128 | 1.1.1.1.3.4.1 | Same cascading process as above | manual | 17w | 2016-02-01 | 2016-05-27 |  |  |  |  |  | Late |
| 129 | 1.1.1.1.4 | **Embedded RAS across enterprise** |  | 5w | 2016-02-01 | 2016-03-04 |  |  |  |  |  | Late |
| 130 | 1.1.1.1.4.1 | **Initialized embedding of RAS in material processes** |  | 20d | 2016-02-01 | 2016-02-26 |  | -114d | 0d |  |  | Late |
| 131 | 1.1.1.1.4.1.1 | **Update process maps for key processes with explicit RAS links** |  | 20d | 2016-02-01 | 2016-02-26 |  | -114d | 0d |  |  | Late |
| 132 | 1.1.1.1.4.1.1.1 | Identify processes that should be explicitly linked to RAS (e.g. strategic planning, capital planning) |  | 5d | 2016-02-01 | 2016-02-05 |  | 20d |  | finish no earlier than 2015-11-06 |  | Late |
| 133 | 1.1.1.1.4.1.1.2 | Detail nature of process linkage, including alignment to statements, metrics and limits described in the RAS |  | 5d | 2016-02-01 | 2016-02-05 |  | 20d |  | start no earlier than 2015-11-02 |  | Late |
| 134 | 1.1.1.1.4.1.1.3 | Assess degree to which RAS considerations are already embedded in key processes |  | 5d | 2016-02-01 | 2016-02-05 |  | -114d | 0d | finish no earlier than 2015-11-13 | 2015-08-31 | Late |
| 135 | 1.1.1.1.4.1.1.4 | Identify gaps and update key process maps accordingly |  | 15d | 2016-02-08 | 2016-02-26 | 134 | 5d | 0d | start no earlier than 2016-02-08 |  | Late |
| 136 | 1.1.1.1.4.1.1.5 | Updated process maps for key processes | milestone | 0d | 2016-02-26 | 2016-02-26 | 135 | 5d |  | start no earlier than 2015-12-04 |  | Late |
| 137 | 1.1.1.1.4.2 | **Plan implementation of RAS in all material processes** |  | 1d? | 2016-02-01 | 2016-02-01 |  | 24d |  |  |  | Late |
| 138 | 1.1.1.1.4.2.1 | Detail plan for RAS roll-out |  | 1d? | 2016-02-01 | 2016-02-01 |  | 24d |  |  |  | Late |
| 139 | 1.1.1.1.4.2.2 | Implement RAS across enterprise |  | 1d? | 2016-02-01 | 2016-02-01 |  | 24d |  |  |  | Late |
| 140 | 1.1.1.1.4.2.3 | TBD |  | 1d? | 2016-02-01 | 2016-02-01 |  | 24d |  |  |  | Late |

| ID | WBS | Task | Type | Duration | Start | Finish | Predecessors | Total slack | Free slack | Constraint | Deadline | Tracking Status |
| --- | --- | --- | --- | --- | --- | --- | --- | --- | --- | --- | --- | --- |
| 141 | 1.1.1.2 | **Board and Management Committee Oversight** |  | 256d | 2015-06-05 | 2016-05-27 |  | 0d |  |  |  | Late |
| 142 | 1.1.1.2.1 | **Strengthen Board and Management Committee Oversight Deliverables** |  | 0d | 2015-06-05 | 2015-06-05 |  | 256d |  |  |  | Late |
| 143 | 1.1.1.2.1.1 | example deliverable (linked to the detail below) | milestone | 0d | 2015-06-05 | 2015-06-05 |  | 256d |  |  |  | Late |
| 144 | 1.1.1.2.2 | Diagnostic of Risk Mgt. Committee effectiveness |  | 15d | 2015-06-05 | 2015-06-25 |  | 221d | 0d |  |  | Late |
| 145 | 1.1.1.2.3 | Delivery of Board Training (session 1) |  | 20d | 2015-06-22 | 2015-07-17 |  | 130d | 0d | finish no earlier than 2015-07-17 |  | Late |
| 146 | 1.1.1.2.4 | Board risk training curriculum and schedule |  | 25d | 2016-04-25 | 2016-05-27 | 147SF | 0d |  | as late as possible |  | Late |
| 147 | 1.1.1.2.5 | Delivery of Board Training (session 2) |  | 15d | 2015-08-10 | 2015-08-28 |  | 195d |  | finish no earlier than 2015-08-28 |  | Late |
| 148 | 1.1.1.2.6 | Governance and coordination mechanisms between SHUSA and parent |  | 20d | 2015-06-26 | 2015-07-23 | 144 | 221d |  |  |  | Late |
| 149 | 1.1.1.2.7 | Definition of composition / mandates / charters for BERC and Level 1 Risk Committees |  | 45d | 2015-07-20 | 2015-09-18 | 145 | 130d | 0d |  |  | Late |
| 150 | 1.1.1.2.8 | Definition of composition / mandates / charters for Level 2 Risk Committees |  | 45d | 2015-08-31 | 2015-10-30 | 149FS-15d | 130d | 0d |  |  | Late |
| 151 | 1.1.1.2.9 | High level assessment and remediation of performance scorecards |  | 20d | 2015-11-02 | 2015-11-27 | 150 | 130d |  |  |  | Late |
| 152 | 1.1.1.3 | **Target Operating Model** |  | 255d | 2015-06-05 | 2016-05-26 |  | -123d | 0d |  |  | Late |
| 153 | 1.1.1.3.1 | **Target Operating Model Deliverables** |  | 0d | 2015-06-05 | 2015-06-05 |  | 256d |  |  |  | Late |
| 154 | 1.1.1.3.1.1 | example deliverable (linked to the detail below) | milestone | 0d | 2015-06-05 | 2015-06-05 |  | 256d |  |  |  | Late |
| 155 | 1.1.1.3.2 | **Update High-level risk leadership structure** |  | 25d | 2015-06-05 | 2015-07-09 |  | 231d |  |  |  | Late |
| 156 | 1.1.1.3.2.1 | Formalize subsidiary CRO reporting lines, socialize and refine solution |  | 10d | 2015-06-05 | 2015-06-18 |  | 241d | 0d |  |  | Late |
| 157 | 1.1.1.3.2.2 | Define implications of reporting lines (Performance assessment, hiring/firing authority) |  | 10d | 2015-06-12 | 2015-06-25 | 156FS-5d | 241d |  |  |  | Late |
| 158 | 1.1.1.3.2.3 | Design High-level risk organization structure including the role of RCO |  | 25d | 2015-06-05 | 2015-07-09 |  | 231d |  |  |  | Late |
| 159 | 1.1.1.3.3 | **Design Target Operating Model by risk type** |  | 255d | 2015-06-05 | 2016-05-26 |  | -123d | 0d |  |  | Late |
| 160 | 1.1.1.3.3.1 | Review of existing 1st LoD capabilities |  | 20d | 2015-06-05 | 2015-07-02 |  | -123d | 0d |  |  | Late |
| 161 | 1.1.1.3.3.2 | **Risk Data Aggregation** |  | 70d | 2015-06-05 | 2015-09-10 |  | -113d | 0d |  |  | Late |
| 162 | 1.1.1.3.3.2.1 | Refining frameworks |  | 15d | 2015-06-05 | 2015-06-25 |  | -113d | 0d |  |  | Late |
| 163 | 1.1.1.3.3.2.2 | Org. Structure and Talent Assessment |  | 30d | 2015-06-26 | 2015-08-06 | 162 | -8d | 0d |  |  | Late |
| 164 | 1.1.1.3.3.2.3 | Implementation Planning |  | 25d | 2015-08-07 | 2015-09-10 | 163 | -8d | 0d |  |  | Late |
| 165 | 1.1.1.3.3.2.4 | MILESTONE | milestone | 0d | 2015-09-10 | 2015-09-10 | 164 | -8d | 0d |  | 2015-08-31 | Late |

Notes:
- 143: Description of Deliverable
- 154: Description of Deliverable

| ID | WBS | Task | Type | Duration | Start | Finish | Predecessors | Total slack | Free slack | Deadline | Tracking Status |
| --- | --- | --- | --- | --- | --- | --- | --- | --- | --- | --- | --- |
| 166 | 1.1.1.3.3.3 | **Enterprise Risk Management** |  | 55d | 2015-06-19 | 2015-09-03 |  | -123d | 0d |  | Late |
| 167 | 1.1.1.3.3.3.1 | Refining frameworks |  | 10d | 2015-06-19 | 2015-07-02 | 160SS+10d | -123d | 0d |  | Late |
| 168 | 1.1.1.3.3.3.2 | Org. Structure and Talent Assessment |  | 20d | 2015-07-03 | 2015-07-30 | 167 | -3d | 0d |  | Late |
| 169 | 1.1.1.3.3.3.3 | Implementation Planning |  | 25d | 2015-07-31 | 2015-09-03 | 168 | -3d | 0d |  | Late |
| 170 | 1.1.1.3.3.3.4 | MILESTONE | milestone | 0d | 2015-09-03 | 2015-09-03 | 169 | -3d | 0d | 2015-08-31 | Late |
| 171 | 1.1.1.3.3.4 | **Market and liquidity risk** |  | 55d | 2015-06-19 | 2015-09-03 |  | -123d | 0d |  | Late |
| 172 | 1.1.1.3.3.4.1 | Refining frameworks |  | 10d | 2015-06-19 | 2015-07-02 | 162SS, 167SS | -123d | 0d |  | Late |
| 173 | 1.1.1.3.3.4.2 | Org. Structure and Talent Assessment |  | 20d | 2015-07-03 | 2015-07-30 | 172 | -123d | 0d |  | Late |
| 174 | 1.1.1.3.3.4.3 | Implementation Planning |  | 25d | 2015-07-31 | 2015-09-03 | 173 | -123d | 0d |  | Late |
| 175 | 1.1.1.3.3.4.4 | MILESTONE | milestone | 0d | 2015-09-03 | 2015-09-03 | 174 | -3d | 0d | 2015-08-31 | Late |
| 176 | 1.1.1.3.3.5 | **Credit Risk** |  | 70d | 2015-08-28 | 2015-12-03 |  | -123d | 0d |  | Late |
| 177 | 1.1.1.3.3.5.1 | Refining frameworks |  | 15d | 2015-08-28 | 2015-09-17 | 174FS-5d | -123d | 0d |  | Late |
| 178 | 1.1.1.3.3.5.2 | Org. Structure and Talent Assessment |  | 30d | 2015-09-18 | 2015-10-29 | 177 | -68d | 0d |  | Late |
| 179 | 1.1.1.3.3.5.3 | Implementation Planning |  | 25d | 2015-10-30 | 2015-12-03 | 178 | -68d | 0d |  | Late |
| 180 | 1.1.1.3.3.5.4 | MILESTONE | milestone | 0d | 2015-12-03 | 2015-12-03 | 179 | -68d | 0d | 2015-08-31 | Late |
| 181 | 1.1.1.3.3.6 | **Compliance Risk** |  | 75d | 2015-08-28 | 2015-12-10 |  | -123d | 0d |  | Late |
| 182 | 1.1.1.3.3.6.1 | Refining frameworks |  | 20d | 2015-08-28 | 2015-09-24 | 177SS | -123d | 0d |  | Late |
| 183 | 1.1.1.3.3.6.2 | Org. Structure and Talent Assessment |  | 30d | 2015-09-25 | 2015-11-05 | 182 | -123d | 0d |  | Late |
| 184 | 1.1.1.3.3.6.3 | Implementation Planning |  | 25d | 2015-11-06 | 2015-12-10 | 183 | -123d | 0d |  | Late |
| 185 | 1.1.1.3.3.6.4 | MILESTONE | milestone | 0d | 2015-12-10 | 2015-12-10 | 184 | -73d | 0d | 2015-08-31 | Late |
| 186 | 1.1.1.3.3.7 | **Capital Risk** |  | 120d | 2015-09-04 | 2016-02-18 |  | -123d | 0d |  | Late |
| 187 | 1.1.1.3.3.7.1 | Refining frameworks |  | 15d | 2015-09-04 | 2015-09-24 | 182SS+5d | -68d | 0d |  | Late |
| 188 | 1.1.1.3.3.7.2 | Org. Structure and Talent Assessment |  | 25d | 2015-12-11 | 2016-01-14 | 184, 187 | -123d | 0d |  | Late |
| 189 | 1.1.1.3.3.7.3 | Implementation Planning |  | 25d | 2016-01-15 | 2016-02-18 | 188 | -123d | 0d |  | Late |
| 190 | 1.1.1.3.3.7.4 | MILESTONE | milestone | 0d | 2016-02-18 | 2016-02-18 | 189 | -123d | 0d | 2015-08-31 | Late |

| ID | WBS | Task | Type | Duration | Start | Finish | Predecessors | Total slack | Free slack | Constraint | Deadline | Resources | Work | Tracking Status |
| --- | --- | --- | --- | --- | --- | --- | --- | --- | --- | --- | --- | --- | --- | --- |
| 191 | 1.1.1.3.3.8 | **Strategic Risk** |  | 120d | 2015-09-04 | 2016-02-18 |  | -123d | 0d |  |  |  |  | Late |
| 192 | 1.1.1.3.3.8.1 | Refining frameworks |  | 15d | 2015-09-04 | 2015-09-24 | 187SS | -68d | 0d |  |  |  |  | Late |
| 193 | 1.1.1.3.3.8.2 | Org. Structure and Talent Assessment |  | 25d | 2015-12-11 | 2016-01-14 | 184, 192 | -123d | 0d |  |  |  |  | Late |
| 194 | 1.1.1.3.3.8.3 | Implementation Planning |  | 25d | 2016-01-15 | 2016-02-18 | 193 | -123d | 0d |  |  |  |  | Late |
| 195 | 1.1.1.3.3.8.4 | MILESTONE | milestone | 0d | 2016-02-18 | 2016-02-18 | 194 | -123d | 0d |  | 2015-08-31 |  |  | Late |
| 196 | 1.1.1.3.3.9 | **RAS Framework** |  | 190d | 2015-09-04 | 2016-05-26 |  | -38d | 0d |  |  |  |  | Late |
| 197 | 1.1.1.3.3.9.1 | Refining frameworks |  | 10d | 2015-09-04 | 2015-09-17 | 192SS | -38d | 0d |  |  |  |  | Late |
| 198 | 1.1.1.3.3.9.2 | Org. Structure and Talent Assessment |  | 10d | 2015-09-18 | 2015-10-01 | 197 | -38d | 0d |  |  |  |  | Late |
| 199 | 1.1.1.3.3.9.3 | Implementation Planning |  | 15d | 2015-10-02 | 2015-10-22 | 198 | -38d | 0d |  |  |  |  | Late |
| 200 | 1.1.1.3.3.9.4 | MILESTONE | milestone | 0d | 2015-10-22 | 2015-10-22 | 199 | -38d | 0d |  | 2015-08-31 |  |  | Late |
| 201 | 1.1.1.3.3.9.5 | Post Implementation Review (First Round) |  | 30d | 2015-12-11 | 2016-01-21 | 184 | 1d | 0d |  |  |  |  | Late |
| 202 | 1.1.1.3.3.9.6 | Post Implementation Review (Second Round) |  | 35d | 2016-04-08 | 2016-05-26 | 201FS+55d | 1d |  |  |  |  |  | Late |
| 203 | 1.1.1.3.3.9.7 | Strong and desired culture |  | 35d | 2016-02-19 | 2016-04-07 | 194 | 36d |  |  |  |  |  | Late |
| 204 | 1.1.1.4 | **Risk Measurement** |  | 141d | 2015-05-28 | 2015-12-10 |  | 0d |  |  |  |  | 6080h |  |
| 205 | 1.1.1.4.1 | **Risk Measurement Deliverables** |  | 97d | 2015-07-28 | 2015-12-10 |  | 122d |  |  |  |  |  |  |
| 206 | 1.1.1.4.1.1 | Business Entity Material Risk Program Established for SHUSA | milestone | 0d | 2015-12-10 | 2015-12-10 | 283 | 122d |  |  |  |  |  | Late |
| 207 | 1.1.1.4.1.2 | Business Entity Material Risk Program Established for SBNA | milestone | 0d | 2015-07-28 | 2015-07-28 | 321 | 219d |  |  |  |  |  | Late |
| 208 | 1.1.1.4.1.3 | Business Entity Material Risk Program Established for SCUSA | milestone | 0d | 2015-07-28 | 2015-07-28 | 362 | 219d |  |  |  |  |  | Late |
| 209 | 1.1.1.4.1.4 | Business Entity Material Risk Program Established for New York(SIS) | milestone | 0d | 2015-07-28 | 2015-07-28 | 403 | 219d |  |  |  |  |  | Late |
| 210 | 1.1.1.4.1.5 | Business Entity Material Risk Program Established for Puerto Rico | milestone | 0d | 2015-07-28 | 2015-07-28 | 444 | 219d |  |  |  |  |  | Late |
| 211 | 1.1.1.4.1.6 | Business Entity Material Risk Program Established for Miami | milestone | 0d | 2015-07-28 | 2015-07-28 | 485 | 219d |  |  |  |  |  | Late |
| 212 | 1.1.1.4.2 | **SHUSA - Business Entity Material Risk Program** |  | 45d | 2015-09-01 | 2015-10-31 |  |  |  |  |  | David Mael | 360h |  |
| 213 | 1.1.1.4.2.1 | **Preparation for Aggregation to Create SHUSA Material Risk Inventory** |  | 11d | 2015-09-01 | 2015-09-15 |  |  |  |  |  |  |  |  |
| 214 | 1.1.1.4.2.1.1 | ERM Collects Risk Inventories from Entity Risk Managers |  | 6d? | 2015-09-01 | 2015-09-08 |  | 188d |  | finish no earlier than 2015-09-08 |  |  |  | Late |
| 215 | 1.1.1.4.2.1.2 | ERM Sorts risks and groups by Risk Type |  | 6d? | 2015-09-01 | 2015-09-08 |  | 188d |  | finish no earlier than 2015-09-08 |  |  |  | Late |
| 216 | 1.1.1.4.2.1.3 | ERM Creates pre-Workshop, pre-read Materials and instructions for SHUSA Risk Managers |  | 6d? | 2015-09-01 | 2015-09-08 |  | 188d |  | finish no earlier than 2015-09-08 |  |  |  | Late |
| 217 | 1.1.1.4.2.1.4 | ERM Distributes Workshop Materials to Responsible parties |  | 2d? | 2015-09-08 | 2015-09-09 |  | 187d |  | finish no earlier than 2015-09-09 |  |  |  | Late |
| 218 | 1.1.1.4.2.1.5 | Aggregation to Create SHUSA Material Risk Inventory Prepared | milestone | 0d | 2015-09-15 | 2015-09-15 |  | 184d |  | start no earlier than 2015-09-15 |  |  |  | Late |

| ID | WBS | Task | Type | Duration | Start | Finish | Total slack | Constraint | Tracking Status |
| --- | --- | --- | --- | --- | --- | --- | --- | --- | --- |
| 219 | 1.1.1.4.2.2 | **SHUSA Aggregation Workshops** |  | 13d | 2015-09-09 | 2015-09-25 |  |  |  |
| 220 | 1.1.1.4.2.2.1 | **Credit Risk Material Risk Aggregation** |  | 13d | 2015-09-09 | 2015-09-25 |  |  |  |
| 221 | 1.1.1.4.2.2.1.1 | Credit Risk performs pre-Read and analysis |  | 5d? | 2015-09-09 | 2015-09-15 | 183d | finish no earlier than 2015-09-15 | Late |
| 222 | 1.1.1.4.2.2.1.2 | Risk Managers Conduct Credit pre-Workshop Enrichment and Aggregation Activites |  | 5d? | 2015-09-09 | 2015-09-15 | 183d | finish no earlier than 2015-09-15 | Late |
| 223 | 1.1.1.4.2.2.1.3 | ERM facilitates Credit Aggregation and Enrichment Workshop |  | 7d? | 2015-09-15 | 2015-09-23 | 177d | finish no earlier than 2015-09-23 | Late |
| 224 | 1.1.1.4.2.2.1.4 | Present to Level II Subcommittees |  | 3d? | 2015-09-23 | 2015-09-25 | 175d | finish no earlier than 2015-09-25 | Late |
| 225 | 1.1.1.4.2.2.1.5 | Credit Risk Material Risk Aggregation Prepared | milestone | 0d | 2015-09-25 | 2015-09-25 | 176d | start no earlier than 2015-09-25 | Late |
| 226 | 1.1.1.4.2.2.2 | **Operational Risk Material Risk Aggregation** |  | 13d | 2015-09-09 | 2015-09-25 |  |  |  |
| 227 | 1.1.1.4.2.2.2.1 | Operational Risk performs pre-Read and analysis |  | 5d? | 2015-09-09 | 2015-09-15 | 183d | finish no earlier than 2015-09-15 | Late |
| 228 | 1.1.1.4.2.2.2.2 | Risk Managers Conduct Operational Risk pre-Workshop Enrichment and Aggregation Activites |  | 5d? | 2015-09-09 | 2015-09-15 | 183d | finish no earlier than 2015-09-15 | Late |
| 229 | 1.1.1.4.2.2.2.3 | ERM facilitates Operational Risk Aggregation and Enrichment Workshop |  | 7d? | 2015-09-15 | 2015-09-23 | 177d | finish no earlier than 2015-09-23 | Late |
| 230 | 1.1.1.4.2.2.2.4 | Present to Level II Subcommittees |  | 3d? | 2015-09-23 | 2015-09-25 | 175d | finish no earlier than 2015-09-25 | Late |
| 231 | 1.1.1.4.2.2.2.5 | Operational Risk Material Risk Aggregation Prepared | milestone | 0d | 2015-09-25 | 2015-09-25 | 176d | start no earlier than 2015-09-25 | Late |
| 232 | 1.1.1.4.2.2.3 | **Compliance Material Risk Aggregation** |  | 13d | 2015-09-09 | 2015-09-25 |  |  |  |
| 233 | 1.1.1.4.2.2.3.1 | Compliance performs pre-Read and analysis |  | 5d? | 2015-09-09 | 2015-09-15 | 183d | finish no earlier than 2015-09-15 | Late |
| 234 | 1.1.1.4.2.2.3.2 | Risk Managers Conduct Compliance pre-Workshop Enrichment and Aggregation Activites |  | 5d? | 2015-09-09 | 2015-09-15 | 183d | finish no earlier than 2015-09-15 | Late |
| 235 | 1.1.1.4.2.2.3.3 | ERM facilitates Compliance Aggregation and Enrichment Workshop |  | 7d? | 2015-09-15 | 2015-09-23 | 177d | finish no earlier than 2015-09-23 | Late |
| 236 | 1.1.1.4.2.2.3.4 | Present to Level II Subcommittees |  | 3d? | 2015-09-23 | 2015-09-25 | 175d | finish no earlier than 2015-09-25 | Late |
| 237 | 1.1.1.4.2.2.3.5 | Compliance Material Risk Aggregation Prepared | milestone | 0d | 2015-09-25 | 2015-09-25 | 176d | start no earlier than 2015-09-25 | Late |
| 238 | 1.1.1.4.2.2.4 | **Model Material Risk Aggregation** |  | 13d | 2015-09-09 | 2015-09-25 |  |  |  |
| 239 | 1.1.1.4.2.2.4.1 | Model Risk performs pre-Read and analysis |  | 5d? | 2015-09-09 | 2015-09-15 | 183d | finish no earlier than 2015-09-15 | Late |
| 240 | 1.1.1.4.2.2.4.2 | Risk Managers Conduct Model pre-Workshop Enrichment and Aggregation Activites |  | 5d? | 2015-09-09 | 2015-09-15 | 183d | finish no earlier than 2015-09-15 | Late |
| 241 | 1.1.1.4.2.2.4.3 | ERM facilitates Model Aggregation and Enrichment Workshop |  | 7d? | 2015-09-15 | 2015-09-23 | 177d | finish no earlier than 2015-09-23 | Late |
| 242 | 1.1.1.4.2.2.4.4 | Present to Level II Subcommittees |  | 3d? | 2015-09-23 | 2015-09-25 | 175d | finish no earlier than 2015-09-25 | Late |
| 243 | 1.1.1.4.2.2.4.5 | Model Material Risk Aggregation Prepared | milestone | 0d | 2015-09-25 | 2015-09-25 | 176d | start no earlier than 2015-09-25 | Late |

| ID | WBS | Task | Type | Duration | Start | Finish | Total slack | Constraint | Tracking Status |
| --- | --- | --- | --- | --- | --- | --- | --- | --- | --- |
| 244 | 1.1.1.4.2.2.5 | **Market Material Risk Aggregation** |  | 13d | 2015-09-09 | 2015-09-25 |  |  |  |
| 245 | 1.1.1.4.2.2.5.1 | Market Risk performs pre-Read and analysis |  | 5d? | 2015-09-09 | 2015-09-15 | 183d | finish no earlier than 2015-09-15 | Late |
| 246 | 1.1.1.4.2.2.5.2 | Risk Managers Conduct Market pre-Workshop Enrichment and Aggregation Activites |  | 5d? | 2015-09-09 | 2015-09-15 | 183d | finish no earlier than 2015-09-15 | Late |
| 247 | 1.1.1.4.2.2.5.3 | ERM facilitates Market Aggregation and Enrichment Workshop |  | 7d? | 2015-09-15 | 2015-09-23 | 177d | finish no earlier than 2015-09-23 | Late |
| 248 | 1.1.1.4.2.2.5.4 | Present to Level II Subcommittees |  | 3d? | 2015-09-23 | 2015-09-25 | 175d | finish no earlier than 2015-09-25 | Late |
| 249 | 1.1.1.4.2.2.5.5 | Market Material Risk Aggregation Prepared | milestone | 0d | 2015-09-25 | 2015-09-25 | 176d | start no earlier than 2015-09-25 | Late |
| 250 | 1.1.1.4.2.2.6 | **Liquidity Material Risk Aggregation** |  | 13d | 2015-09-09 | 2015-09-25 |  |  |  |
| 251 | 1.1.1.4.2.2.6.1 | Liquidity Risk performs pre-Read and analysis |  | 5d? | 2015-09-09 | 2015-09-15 | 183d | finish no earlier than 2015-09-15 | Late |
| 252 | 1.1.1.4.2.2.6.2 | Risk Managers Conduct Liquidity pre-Workshop Enrichment and Aggregation Activites |  | 5d? | 2015-09-09 | 2015-09-15 | 183d | finish no earlier than 2015-09-15 | Late |
| 253 | 1.1.1.4.2.2.6.3 | ERM facilitates Liquidity Aggregation and Enrichment Workshop |  | 7d? | 2015-09-15 | 2015-09-23 | 177d | finish no earlier than 2015-09-23 | Late |
| 254 | 1.1.1.4.2.2.6.4 | Present to Level II Subcommittees |  | 3d? | 2015-09-23 | 2015-09-25 | 175d | finish no earlier than 2015-09-25 | Late |
| 255 | 1.1.1.4.2.2.6.5 | Liquidity Material Risk Aggregation Prepared | milestone | 0d | 2015-09-25 | 2015-09-25 | 176d | start no earlier than 2015-09-25 | Late |
| 256 | 1.1.1.4.2.2.7 | **Strategic Material Risk Aggregation** |  | 13d | 2015-09-09 | 2015-09-25 |  |  |  |
| 257 | 1.1.1.4.2.2.7.1 | Strategic Risk performs pre-Read and analysis |  | 5d? | 2015-09-09 | 2015-09-15 | 183d | finish no earlier than 2015-09-15 | Late |
| 258 | 1.1.1.4.2.2.7.2 | Risk Managers Conduct Strategic pre-Workshop Enrichment and Aggregation Activites |  | 5d? | 2015-09-09 | 2015-09-15 | 183d | finish no earlier than 2015-09-15 | Late |
| 259 | 1.1.1.4.2.2.7.3 | ERM facilitates Strategic Aggregation and Enrichment Workshop |  | 7d? | 2015-09-15 | 2015-09-23 | 177d | finish no earlier than 2015-09-23 | Late |
| 260 | 1.1.1.4.2.2.7.4 | Present to Level II Subcommittees |  | 3d? | 2015-09-23 | 2015-09-25 | 175d | finish no earlier than 2015-09-25 | Late |
| 261 | 1.1.1.4.2.2.7.5 | Strategic Material Risk Aggregation Prepared | milestone | 0d | 2015-09-25 | 2015-09-25 | 176d | start no earlier than 2015-09-25 | Late |
| 262 | 1.1.1.4.2.2.8 | **Reputational Material Risk Aggregation** |  | 13d | 2015-09-09 | 2015-09-25 |  |  |  |
| 263 | 1.1.1.4.2.2.8.1 | Reputational Risk performs pre-Read and analysis |  | 5d? | 2015-09-09 | 2015-09-15 | 183d | finish no earlier than 2015-09-15 | Late |
| 264 | 1.1.1.4.2.2.8.2 | Risk Managers Conduct Reputational pre-Workshop Enrichment and Aggregation Activites |  | 5d? | 2015-09-09 | 2015-09-15 | 183d | finish no earlier than 2015-09-15 | Late |
| 265 | 1.1.1.4.2.2.8.3 | ERM facilitates Reputational Aggregation and Enrichment Workshop |  | 7d? | 2015-09-15 | 2015-09-23 | 177d | finish no earlier than 2015-09-23 | Late |
| 266 | 1.1.1.4.2.2.8.4 | Present to Level II Subcommittees |  | 3d? | 2015-09-23 | 2015-09-25 | 175d | finish no earlier than 2015-09-25 | Late |
| 267 | 1.1.1.4.2.2.8.5 | Reputational Material Risk Aggregation Prepared | milestone | 0d | 2015-09-25 | 2015-09-25 | 176d | start no earlier than 2015-09-25 | Late |

| ID | WBS | Task | Type | Duration | Start | Finish | Total slack | Free slack | Constraint | Resources | Work | Tracking Status |
| --- | --- | --- | --- | --- | --- | --- | --- | --- | --- | --- | --- | --- |
| 268 | 1.1.1.4.2.3 | **SHUSA Top Down Aggregation** |  | 11d | 2015-09-25 | 2015-10-09 |  |  |  |  |  |  |
| 269 | 1.1.1.4.2.3.1 | ERM consolidates risks into SHUSA Inventory |  | 2d? | 2015-09-25 | 2015-09-28 | 174d |  | finish no earlier than 2015-09-28 |  |  | Late |
| 270 | 1.1.1.4.2.3.2 | ERM distributes inventory to SHUSA Business and Risk executives |  | 3d? | 2015-09-28 | 2015-09-30 | 172d |  | finish no earlier than 2015-09-30 |  |  | Late |
| 271 | 1.1.1.4.2.3.3 | ERM facilitates top down risk aggregation |  | 8d? | 2015-09-30 | 2015-10-09 | 165d |  | finish no earlier than 2015-10-09 |  |  | Late |
| 272 | 1.1.1.4.2.3.4 | ERM incorporates final risks into SHUSA Inventory |  | 8d? | 2015-09-30 | 2015-10-09 | 165d |  | finish no earlier than 2015-10-09 |  |  | Late |
| 273 | 1.1.1.4.2.3.5 | SHUSA Top Down Aggregation Prepared | milestone | 0d | 2015-10-09 | 2015-10-09 | 166d |  | start no earlier than 2015-10-09 |  |  | Late |
| 274 | 1.1.1.4.2.4 | **Material Risk SHUSA Approval** |  | 16d | 2015-10-09 | 2015-10-30 |  |  |  |  |  |  |
| 275 | 1.1.1.4.2.4.1 | Present SHUSA Material Risks to BERC |  | 6d? | 2015-10-09 | 2015-10-16 | 160d |  | finish no earlier than 2015-10-16 |  |  | Late |
| 276 | 1.1.1.4.2.4.2 | Present SHUSA Material Risks to ERMC |  | 11d? | 2015-10-16 | 2015-10-30 | 150d |  | finish no earlier than 2015-10-30 |  |  | Late |
| 277 | 1.1.1.4.2.4.3 | Present SHUSA Material Risks to CCAR |  | 1d? | 2015-10-30 | 2015-10-30 | 150d |  | start no earlier than 2015-10-30 |  |  | Late |
| 278 | 1.1.1.4.2.4.4 | Material Risk SHUSA Approval | milestone | 0d | 2015-10-30 | 2015-10-30 | 151d |  | start no earlier than 2015-10-30 |  |  | Late |
| 279 | 1.1.1.4.2.5 | **Risk ID and Assessment Policy** |  | 55d | 2015-09-25 | 2015-12-10 |  |  |  |  |  |  |
| 280 | 1.1.1.4.2.5.1 | Risk ID and Assessment group drafts policy |  | 26d? | 2015-09-25 | 2015-10-30 | 150d |  | finish no earlier than 2015-10-30 |  |  | Late |
| 281 | 1.1.1.4.2.5.2 | Risk ID and Assessment group presents draft to ERMC for approval |  | 6d? | 2015-10-30 | 2015-11-08 | 145d |  | finish no earlier than 2015-11-08 |  |  | Late |
| 282 | 1.1.1.4.2.5.3 | Risk ID and Assessment group presents to Risk Committee (BERC) |  | 29d? | 2015-11-02 | 2015-12-10 | 121d |  | finish no earlier than 2015-12-10 |  |  | Late |
| 283 | 1.1.1.4.2.5.4 | Risk ID and Assessment Policy | milestone | 0d | 2015-12-10 | 2015-12-10 | 122d | 0d | start no earlier than 2015-12-10 |  |  | Late |
| 284 | 1.1.1.4.3 | **SBNA - Business Entity Material Risk Program** |  | 68d | 2015-05-28 | 2015-08-31 |  |  |  | R. Alhadeff/M. Carbone | 1144h |  |
| 285 | 1.1.1.4.3.1 | **SBNA Aggregation** |  | 20d | 2015-07-01 | 2015-07-28 |  |  |  |  |  |  |
| 286 | 1.1.1.4.3.1.1 | **Credit Risk Aggregation** |  | 20d? | 2015-07-01 | 2015-07-28 |  |  |  |  |  |  |
| 287 | 1.1.1.4.3.1.1.1 | ERM disseminates Workshop Pre-Read Materials to Risk Managers |  | 8d? | 2015-07-01 | 2015-07-10 | 230d |  | finish no earlier than 2015-07-10 |  |  | Late |
| 288 | 1.1.1.4.3.1.1.2 | Risk Manager conducts Pre-workshop Enrichment and Aggregation activities |  | 5d? | 2015-07-13 | 2015-07-17 | 225d |  | finish no earlier than 2015-07-17 |  |  | Late |
| 289 | 1.1.1.4.3.1.1.3 | ERM facilitates Aggregation and Enrichment Workshop |  | 5d? | 2015-07-20 | 2015-07-24 | 220d |  | finish no earlier than 2015-07-24 |  |  | Late |
| 290 | 1.1.1.4.3.1.1.4 | Risk Manager presents inventory to level II subcommittee |  | 2d? | 2015-07-27 | 2015-07-28 | 218d |  | finish no earlier than 2015-07-28 |  |  | Late |
| 291 | 1.1.1.4.3.1.1.5 | Credit Risk Aggregation Prepared | milestone | 0d | 2015-07-28 | 2015-07-28 | 219d |  | start no earlier than 2015-07-28 |  |  | Late |

| ID | WBS | Task | Type | Duration | Start | Finish | Total slack | Constraint | Tracking Status |
| --- | --- | --- | --- | --- | --- | --- | --- | --- | --- |
| 292 | 1.1.1.4.3.1.2 | **Operational Risk Material Risk Aggregation** |  | 20d | 2015-07-01 | 2015-07-28 |  |  |  |
| 293 | 1.1.1.4.3.1.2.1 | ERM disseminates Workshop Pre-Read Materials to Risk Managers |  | 8d? | 2015-07-01 | 2015-07-10 | 230d | finish no earlier than 2015-07-10 | Late |
| 294 | 1.1.1.4.3.1.2.2 | Risk Manager conducts Pre-workshop Enrichment and Aggregation activities |  | 5d? | 2015-07-13 | 2015-07-17 | 225d | finish no earlier than 2015-07-17 | Late |
| 295 | 1.1.1.4.3.1.2.3 | ERM facilitates Aggregation and Enrichment Workshop |  | 5d? | 2015-07-20 | 2015-07-24 | 220d | finish no earlier than 2015-07-24 | Late |
| 296 | 1.1.1.4.3.1.2.4 | Risk Manager presents inventory to level II subcommittee |  | 2d? | 2015-07-27 | 2015-07-28 | 218d | finish no earlier than 2015-07-28 | Late |
| 297 | 1.1.1.4.3.1.2.5 | Operational Risk Material Risk Aggregation Prepared | milestone | 0d | 2015-07-28 | 2015-07-28 | 219d | start no earlier than 2015-07-28 | Late |
| 298 | 1.1.1.4.3.1.3 | **Compliance Material Risk Aggregation** |  | 20d | 2015-07-01 | 2015-07-28 |  |  |  |
| 299 | 1.1.1.4.3.1.3.1 | ERM disseminates Workshop Pre-Read Materials to Risk Managers |  | 8d? | 2015-07-01 | 2015-07-10 | 230d | finish no earlier than 2015-07-10 | Late |
| 300 | 1.1.1.4.3.1.3.2 | Risk Manager conducts Pre-workshop Enrichment and Aggregation activities |  | 5d? | 2015-07-13 | 2015-07-17 | 225d | finish no earlier than 2015-07-17 | Late |
| 301 | 1.1.1.4.3.1.3.3 | ERM facilitates Aggregation and Enrichment Workshop |  | 5d? | 2015-07-20 | 2015-07-24 | 220d | finish no earlier than 2015-07-24 | Late |
| 302 | 1.1.1.4.3.1.3.4 | Risk Manager presents inventory to level II subcommittee |  | 2d? | 2015-07-27 | 2015-07-28 | 218d | finish no earlier than 2015-07-28 | Late |
| 303 | 1.1.1.4.3.1.3.5 | Compliance Material Risk Aggregation Prepared | milestone | 0d | 2015-07-28 | 2015-07-28 | 219d | start no earlier than 2015-07-28 | Late |
| 304 | 1.1.1.4.3.1.4 | **Model Material Risk Aggregation** |  | 20d | 2015-07-01 | 2015-07-28 |  |  |  |
| 305 | 1.1.1.4.3.1.4.1 | ERM disseminates Workshop Pre-Read Materials to Risk Managers |  | 8d? | 2015-07-01 | 2015-07-10 | 230d | finish no earlier than 2015-07-10 | Late |
| 306 | 1.1.1.4.3.1.4.2 | Risk Manager conducts Pre-workshop Enrichment and Aggregation activities |  | 5d? | 2015-07-13 | 2015-07-17 | 225d | finish no earlier than 2015-07-17 | Late |
| 307 | 1.1.1.4.3.1.4.3 | ERM facilitates Aggregation and Enrichment Workshop |  | 5d? | 2015-07-20 | 2015-07-24 | 220d | finish no earlier than 2015-07-24 | Late |
| 308 | 1.1.1.4.3.1.4.4 | Risk Manager presents inventory to level II subcommittee |  | 2d? | 2015-07-27 | 2015-07-28 | 218d | finish no earlier than 2015-07-28 | Late |
| 309 | 1.1.1.4.3.1.4.5 | Model Material Risk Aggregation Prepared | milestone | 0d | 2015-07-28 | 2015-07-28 | 219d | start no earlier than 2015-07-28 | Late |
| 310 | 1.1.1.4.3.1.5 | **Liquidity/Market Material Risk Aggregation** |  | 20d | 2015-07-01 | 2015-07-28 |  |  |  |
| 311 | 1.1.1.4.3.1.5.1 | ERM disseminates Workshop Pre-Read Materials to Risk Managers |  | 8d? | 2015-07-01 | 2015-07-10 | 230d | finish no earlier than 2015-07-10 | Late |
| 312 | 1.1.1.4.3.1.5.2 | Risk Manager conducts Pre-workshop Enrichment and Aggregation activities |  | 5d? | 2015-07-13 | 2015-07-17 | 225d | finish no earlier than 2015-07-17 | Late |
| 313 | 1.1.1.4.3.1.5.3 | ERM facilitates Aggregation and Enrichment Workshop |  | 5d? | 2015-07-20 | 2015-07-24 | 220d | finish no earlier than 2015-07-24 | Late |
| 314 | 1.1.1.4.3.1.5.4 | Risk Manager presents inventory to level II subcommittee |  | 2d? | 2015-07-27 | 2015-07-28 | 218d | finish no earlier than 2015-07-28 | Late |
| 315 | 1.1.1.4.3.1.5.5 | Liquidity/Market Material Risk Aggregation Prepared | milestone | 0d | 2015-07-28 | 2015-07-28 | 219d | start no earlier than 2015-07-28 | Late |

| ID | WBS | Task | Type | Duration | Start | Finish | Total slack | Free slack | Constraint | Resources | Work | Tracking Status | Text13 |
| --- | --- | --- | --- | --- | --- | --- | --- | --- | --- | --- | --- | --- | --- |
| 316 | 1.1.1.4.3.1.6 | **Reputational/Strategic Material Risk Aggregation** |  | 20d | 2015-07-01 | 2015-07-28 |  |  |  |  |  |  |  |
| 317 | 1.1.1.4.3.1.6.1 | ERM disseminates Workshop Pre-Read Materials to Risk Managers |  | 8d? | 2015-07-01 | 2015-07-10 | 230d |  | finish no earlier than 2015-07-10 |  |  | Late |  |
| 318 | 1.1.1.4.3.1.6.2 | Risk Manager conducts Pre-workshop Enrichment and Aggregation activities |  | 5d? | 2015-07-13 | 2015-07-17 | 225d |  | finish no earlier than 2015-07-17 |  |  | Late |  |
| 319 | 1.1.1.4.3.1.6.3 | ERM facilitates Aggregation and Enrichment Workshop |  | 5d? | 2015-07-20 | 2015-07-24 | 220d |  | finish no earlier than 2015-07-24 |  |  | Late |  |
| 320 | 1.1.1.4.3.1.6.4 | Risk Manager presents inventory to level II subcommittee |  | 2d? | 2015-07-27 | 2015-07-28 | 218d |  | finish no earlier than 2015-07-28 |  |  | Late |  |
| 321 | 1.1.1.4.3.1.6.5 | Reputational/Strategic Material Risk Aggregation Prepared | milestone | 0d | 2015-07-28 | 2015-07-28 | 219d | 0d | start no earlier than 2015-07-28 |  |  | Late |  |
| 322 | 1.1.1.4.3.2 | Conduct SBNA Top Down Review |  | 25d | 2015-07-28 | 2015-08-31 | 194d |  | start no earlier than 2015-07-28 | R. Alhadeff/M. Carbone | 200h | Late |  |
| 323 | 1.1.1.4.3.3 | Present Results to SBNA ERMC |  | 25d | 2015-07-28 | 2015-08-31 | 194d |  | start no earlier than 2015-07-28 | R. Alhadeff/M. Carbone | 200h | Late |  |
| 324 | 1.1.1.4.3.4 | Present Results to SBNA BERC |  | 25d | 2015-07-28 | 2015-08-31 | 194d |  | start no earlier than 2015-07-28 | R. Alhadeff/M. Carbone | 200h | Late |  |
| 325 | 1.1.1.4.4 | **SCUSA - Business Entity Material Risk Program** |  | 68d | 2015-05-28 | 2015-08-31 |  |  |  | J. Smith/T. Ploetz | 1144h |  | J. Smith |
| 326 | 1.1.1.4.4.1 | **SCUSA Aggregation Workshops** |  | 20d | 2015-07-01 | 2015-07-28 |  |  |  |  |  |  | J. Smith |
| 327 | 1.1.1.4.4.1.1 | **Credit Risk Aggregation** |  | 20d | 2015-07-01 | 2015-07-28 |  |  |  |  |  |  | J. Smith |
| 328 | 1.1.1.4.4.1.1.1 | ERM disseminates Workshop Pre-Read Materials to Risk Managers |  | 8d? | 2015-07-01 | 2015-07-10 | 230d |  | finish no earlier than 2015-07-10 |  |  | Late | J. Smith |
| 329 | 1.1.1.4.4.1.1.2 | Risk Manager conducts Pre-workshop Enrichment and Aggregation activities |  | 5d? | 2015-07-13 | 2015-07-17 | 225d |  | finish no earlier than 2015-07-17 |  |  | Late | J. Smith |
| 330 | 1.1.1.4.4.1.1.3 | ERM facilitates Aggregation and Enrichment Workshop |  | 5d? | 2015-07-20 | 2015-07-24 | 220d |  | finish no earlier than 2015-07-24 |  |  | Late | J. Smith |
| 331 | 1.1.1.4.4.1.1.4 | Risk Manager presents inventory to level II subcommittee |  | 2d? | 2015-07-27 | 2015-07-28 | 218d |  | finish no earlier than 2015-07-28 |  |  | Late | J. Smith |
| 332 | 1.1.1.4.4.1.1.5 | Credit Risk Aggregation Prepared | milestone | 0d | 2015-07-28 | 2015-07-28 | 219d |  | start no earlier than 2015-07-28 |  |  | Late |  |
| 333 | 1.1.1.4.4.1.2 | **Operational Risk Material Risk Aggregation** |  | 20d | 2015-07-01 | 2015-07-28 |  |  |  |  |  |  | J. Smith |
| 334 | 1.1.1.4.4.1.2.1 | ERM disseminates Workshop Pre-Read Materials to Risk Managers |  | 8d? | 2015-07-01 | 2015-07-10 | 230d |  | finish no earlier than 2015-07-10 |  |  | Late | J. Smith |
| 335 | 1.1.1.4.4.1.2.2 | Risk Manager conducts Pre-workshop Enrichment and Aggregation activities |  | 5d? | 2015-07-13 | 2015-07-17 | 225d |  | finish no earlier than 2015-07-17 |  |  | Late | J. Smith |
| 336 | 1.1.1.4.4.1.2.3 | ERM facilitates Aggregation and Enrichment Workshop |  | 5d? | 2015-07-20 | 2015-07-24 | 220d |  | finish no earlier than 2015-07-24 |  |  | Late | J. Smith |
| 337 | 1.1.1.4.4.1.2.4 | Risk Manager presents inventory to level II subcommittee |  | 2d? | 2015-07-27 | 2015-07-28 | 218d |  | finish no earlier than 2015-07-28 |  |  | Late | J. Smith |
| 338 | 1.1.1.4.4.1.2.5 | Operational Risk Material Risk Aggregation Prepared | milestone | 0d | 2015-07-28 | 2015-07-28 | 219d |  | start no earlier than 2015-07-28 |  |  | Late |  |
| 339 | 1.1.1.4.4.1.3 | **Compliance Material Risk Aggregation** |  | 20d | 2015-07-01 | 2015-07-28 |  |  |  |  |  |  | J. Smith |
| 340 | 1.1.1.4.4.1.3.1 | ERM disseminates Workshop Pre-Read Materials to Risk Managers |  | 8d? | 2015-07-01 | 2015-07-10 | 230d |  | finish no earlier than 2015-07-10 |  |  | Late | J. Smith |
| 341 | 1.1.1.4.4.1.3.2 | Risk Manager conducts Pre-workshop Enrichment and Aggregation activities |  | 5d? | 2015-07-13 | 2015-07-17 | 225d |  | finish no earlier than 2015-07-17 |  |  | Late | J. Smith |
| 342 | 1.1.1.4.4.1.3.3 | ERM facilitates Aggregation and Enrichment Workshop |  | 5d? | 2015-07-20 | 2015-07-24 | 220d |  | finish no earlier than 2015-07-24 |  |  | Late | J. Smith |
| 343 | 1.1.1.4.4.1.3.4 | Risk Manager presents inventory to level II subcommittee |  | 2d? | 2015-07-27 | 2015-07-28 | 218d |  | finish no earlier than 2015-07-28 |  |  | Late | J. Smith |
| 344 | 1.1.1.4.4.1.3.5 | Compliance Material Risk Aggregation Prepared | milestone | 0d | 2015-07-28 | 2015-07-28 | 219d |  | start no earlier than 2015-07-28 |  |  | Late |  |

Notes:
- 322: no owner name in Excel template

| ID | WBS | Task | Type | Duration | Start | Finish | Total slack | Free slack | Constraint | Resources | Work | Text13 | Tracking Status |
| --- | --- | --- | --- | --- | --- | --- | --- | --- | --- | --- | --- | --- | --- |
| 345 | 1.1.1.4.4.1.4 | **Model Material Risk Aggregation** |  | 20d | 2015-07-01 | 2015-07-28 |  |  |  |  |  | J. Smith |  |
| 346 | 1.1.1.4.4.1.4.1 | ERM disseminates Workshop Pre-Read Materials to Risk Managers |  | 8d? | 2015-07-01 | 2015-07-10 | 230d |  | finish no earlier than 2015-07-10 |  |  | J. Smith | Late |
| 347 | 1.1.1.4.4.1.4.2 | Risk Manager conducts Pre-workshop Enrichment and Aggregation activities |  | 5d? | 2015-07-13 | 2015-07-17 | 225d |  | finish no earlier than 2015-07-17 |  |  | J. Smith | Late |
| 348 | 1.1.1.4.4.1.4.3 | ERM facilitates Aggregation and Enrichment Workshop |  | 5d? | 2015-07-20 | 2015-07-24 | 220d |  | finish no earlier than 2015-07-24 |  |  | J. Smith | Late |
| 349 | 1.1.1.4.4.1.4.4 | Risk Manager presents inventory to level II subcommittee |  | 2d? | 2015-07-27 | 2015-07-28 | 218d |  | finish no earlier than 2015-07-28 |  |  | J. Smith | Late |
| 350 | 1.1.1.4.4.1.4.5 | Model Material Risk Aggregation Prepared | milestone | 0d | 2015-07-28 | 2015-07-28 | 219d |  | start no earlier than 2015-07-28 |  |  |  | Late |
| 351 | 1.1.1.4.4.1.5 | **Liquidity/Market Material Risk Aggregation** |  | 20d | 2015-07-01 | 2015-07-28 |  |  |  |  |  | J. Smith |  |
| 352 | 1.1.1.4.4.1.5.1 | ERM disseminates Workshop Pre-Read Materials to Risk Managers |  | 8d? | 2015-07-01 | 2015-07-10 | 230d |  | finish no earlier than 2015-07-10 |  |  | J. Smith | Late |
| 353 | 1.1.1.4.4.1.5.2 | Risk Manager conducts Pre-workshop Enrichment and Aggregation activities |  | 5d? | 2015-07-13 | 2015-07-17 | 225d |  | finish no earlier than 2015-07-17 |  |  | J. Smith | Late |
| 354 | 1.1.1.4.4.1.5.3 | ERM facilitates Aggregation and Enrichment Workshop |  | 5d? | 2015-07-20 | 2015-07-24 | 220d |  | finish no earlier than 2015-07-24 |  |  | J. Smith | Late |
| 355 | 1.1.1.4.4.1.5.4 | Risk Manager presents inventory to level II subcommittee |  | 2d? | 2015-07-27 | 2015-07-28 | 218d |  | finish no earlier than 2015-07-28 |  |  | J. Smith | Late |
| 356 | 1.1.1.4.4.1.5.5 | Liquidity/Market Material Risk Aggregation Prepared | milestone | 0d | 2015-07-28 | 2015-07-28 | 219d |  | start no earlier than 2015-07-28 |  |  |  | Late |
| 357 | 1.1.1.4.4.1.6 | **Reputational/Strategic Material Risk Aggregation** |  | 20d | 2015-07-01 | 2015-07-28 |  |  |  |  |  | J. Smith |  |
| 358 | 1.1.1.4.4.1.6.1 | ERM disseminates Workshop Pre-Read Materials to Risk Managers |  | 8d? | 2015-07-01 | 2015-07-10 | 230d |  | finish no earlier than 2015-07-10 |  |  | J. Smith | Late |
| 359 | 1.1.1.4.4.1.6.2 | Risk Manager conducts Pre-workshop Enrichment and Aggregation activities |  | 5d? | 2015-07-13 | 2015-07-17 | 225d |  | finish no earlier than 2015-07-17 |  |  | J. Smith | Late |
| 360 | 1.1.1.4.4.1.6.3 | ERM facilitates Aggregation and Enrichment Workshop |  | 5d? | 2015-07-20 | 2015-07-24 | 220d |  | finish no earlier than 2015-07-24 |  |  | J. Smith | Late |
| 361 | 1.1.1.4.4.1.6.4 | Risk Manager presents inventory to level II subcommittee |  | 2d? | 2015-07-27 | 2015-07-28 | 218d |  | finish no earlier than 2015-07-28 |  |  | J. Smith | Late |
| 362 | 1.1.1.4.4.1.6.5 | Reputational/Strategic Material Risk Aggregation Prepared | milestone | 0d | 2015-07-28 | 2015-07-28 | 219d | 0d | start no earlier than 2015-07-28 |  |  |  | Late |
| 363 | 1.1.1.4.4.2 | Conduct SCUSA Top Down Review |  | 25d | 2015-07-28 | 2015-08-31 | 194d |  | finish no earlier than 2015-08-31 | J. Smith/T. Ploetz | 200h | J. Smith | Late |
| 364 | 1.1.1.4.4.3 | Present Results to SCUSA ERMC |  | 25d | 2015-07-28 | 2015-08-31 | 194d |  | finish no earlier than 2015-08-31 | J. Smith/T. Ploetz | 200h | J. Smith | Late |
| 365 | 1.1.1.4.4.4 | Present Results to SCUSA BERC |  | 25d | 2015-07-28 | 2015-08-31 | 194d |  | finish no earlier than 2015-08-31 | J. Smith/T. Ploetz | 200h | J. Smith | Late |
| 366 | 1.1.1.4.5 | **New York Santander Investment Securities (SIS) - Business Entity Material Risk Program** |  | 68d | 2015-05-28 | 2015-08-31 |  |  |  | M. Murphy | 1144h | M. Murphy |  |
| 367 | 1.1.1.4.5.1 | **NY SIS Aggregation Workshops** |  | 20d? | 2015-07-01 | 2015-07-28 | 24d |  |  |  |  | M. Murphy |  |
| 368 | 1.1.1.4.5.1.1 | **Credit Risk Aggregation** |  | 20d? | 2015-07-01 | 2015-07-28 | 24d |  |  |  |  | M. Murphy |  |
| 369 | 1.1.1.4.5.1.1.1 | ERM disseminates Workshop Pre-Read Materials to Risk Managers |  | 8d? | 2015-07-01 | 2015-07-10 | 36d |  | finish no earlier than 2015-07-10 |  |  | M. Murphy | Late |
| 370 | 1.1.1.4.5.1.1.2 | Risk Manager conducts Pre-workshop Enrichment and Aggregation activities |  | 5d? | 2015-07-13 | 2015-07-17 | 31d |  | finish no earlier than 2015-07-17 |  |  | M. Murphy | Late |
| 371 | 1.1.1.4.5.1.1.3 | ERM facilitates Aggregation and Enrichment Workshop |  | 5d? | 2015-07-20 | 2015-07-24 | 26d |  | finish no earlier than 2015-07-24 |  |  | M. Murphy | Late |
| 372 | 1.1.1.4.5.1.1.4 | Risk Manager presents inventory to level II subcommittee |  | 2d? | 2015-07-27 | 2015-07-28 | 24d |  | finish no earlier than 2015-07-28 |  |  | M. Murphy | Late |
| 373 | 1.1.1.4.5.1.1.5 | Credit Risk Aggregation Prepared | milestone | 0d | 2015-07-28 | 2015-07-28 | 25d |  | start no earlier than 2015-07-28 |  |  |  | Late |

| ID | WBS | Task | Type | Duration | Start | Finish | Total slack | Constraint | Text13 | Tracking Status |
| --- | --- | --- | --- | --- | --- | --- | --- | --- | --- | --- |
| 374 | 1.1.1.4.5.1.2 | **Operational Risk Material Risk Aggregation** |  | 20d? | 2015-07-01 | 2015-07-28 | 24d |  | M. Murphy |  |
| 375 | 1.1.1.4.5.1.2.1 | ERM disseminates Workshop Pre-Read Materials to Risk Managers |  | 8d? | 2015-07-01 | 2015-07-10 | 36d | finish no earlier than 2015-07-10 | M. Murphy | Late |
| 376 | 1.1.1.4.5.1.2.2 | Risk Manager conducts Pre-workshop Enrichment and Aggregation activities |  | 5d? | 2015-07-13 | 2015-07-17 | 31d | finish no earlier than 2015-07-17 | M. Murphy | Late |
| 377 | 1.1.1.4.5.1.2.3 | ERM facilitates Aggregation and Enrichment Workshop |  | 5d? | 2015-07-20 | 2015-07-24 | 26d | finish no earlier than 2015-07-24 | M. Murphy | Late |
| 378 | 1.1.1.4.5.1.2.4 | Risk Manager presents inventory to level II subcommittee |  | 2d? | 2015-07-27 | 2015-07-28 | 24d | finish no earlier than 2015-07-28 | M. Murphy | Late |
| 379 | 1.1.1.4.5.1.2.5 | Operational Risk Material Risk Aggregation Prepared | milestone | 0d | 2015-07-28 | 2015-07-28 | 25d | start no earlier than 2015-07-28 |  | Late |
| 380 | 1.1.1.4.5.1.3 | **Compliance Material Risk Aggregation** |  | 20d? | 2015-07-01 | 2015-07-28 | 24d |  | M. Murphy |  |
| 381 | 1.1.1.4.5.1.3.1 | ERM disseminates Workshop Pre-Read Materials to Risk Managers |  | 8d? | 2015-07-01 | 2015-07-10 | 36d | finish no earlier than 2015-07-10 | M. Murphy | Late |
| 382 | 1.1.1.4.5.1.3.2 | Risk Manager conducts Pre-workshop Enrichment and Aggregation activities |  | 5d? | 2015-07-13 | 2015-07-17 | 31d | finish no earlier than 2015-07-17 | M. Murphy | Late |
| 383 | 1.1.1.4.5.1.3.3 | ERM facilitates Aggregation and Enrichment Workshop |  | 5d? | 2015-07-20 | 2015-07-24 | 26d | finish no earlier than 2015-07-24 | M. Murphy | Late |
| 384 | 1.1.1.4.5.1.3.4 | Risk Manager presents inventory to level II subcommittee |  | 2d? | 2015-07-27 | 2015-07-28 | 24d | finish no earlier than 2015-07-28 | M. Murphy | Late |
| 385 | 1.1.1.4.5.1.3.5 | Compliance Material Risk Aggregation Prepared | milestone | 0d | 2015-07-28 | 2015-07-28 | 25d | start no earlier than 2015-07-28 |  | Late |
| 386 | 1.1.1.4.5.1.4 | **Model Material Risk Aggregation** |  | 20d? | 2015-07-01 | 2015-07-28 | 24d |  | M. Murphy |  |
| 387 | 1.1.1.4.5.1.4.1 | ERM disseminates Workshop Pre-Read Materials to Risk Managers |  | 8d? | 2015-07-01 | 2015-07-10 | 36d | finish no earlier than 2015-07-10 | M. Murphy | Late |
| 388 | 1.1.1.4.5.1.4.2 | Risk Manager conducts Pre-workshop Enrichment and Aggregation activities |  | 5d? | 2015-07-13 | 2015-07-17 | 31d | finish no earlier than 2015-07-17 | M. Murphy | Late |
| 389 | 1.1.1.4.5.1.4.3 | ERM facilitates Aggregation and Enrichment Workshop |  | 5d? | 2015-07-20 | 2015-07-24 | 26d | finish no earlier than 2015-07-24 | M. Murphy | Late |
| 390 | 1.1.1.4.5.1.4.4 | Risk Manager presents inventory to level II subcommittee |  | 2d? | 2015-07-27 | 2015-07-28 | 24d | finish no earlier than 2015-07-28 | M. Murphy | Late |
| 391 | 1.1.1.4.5.1.4.5 | Model Material Risk Aggregation Prepared | milestone | 0d | 2015-07-28 | 2015-07-28 | 25d | start no earlier than 2015-07-28 |  | Late |
| 392 | 1.1.1.4.5.1.5 | **Liquidity/Market Material Risk Aggregation** |  | 20d? | 2015-07-01 | 2015-07-28 | 24d |  | M. Murphy |  |
| 393 | 1.1.1.4.5.1.5.1 | ERM disseminates Workshop Pre-Read Materials to Risk Managers |  | 8d? | 2015-07-01 | 2015-07-10 | 36d | finish no earlier than 2015-07-10 | M. Murphy | Late |
| 394 | 1.1.1.4.5.1.5.2 | Risk Manager conducts Pre-workshop Enrichment and Aggregation activities |  | 5d? | 2015-07-13 | 2015-07-17 | 31d | finish no earlier than 2015-07-17 | M. Murphy | Late |
| 395 | 1.1.1.4.5.1.5.3 | ERM facilitates Aggregation and Enrichment Workshop |  | 5d? | 2015-07-20 | 2015-07-24 | 26d | finish no earlier than 2015-07-24 | M. Murphy | Late |
| 396 | 1.1.1.4.5.1.5.4 | Risk Manager presents inventory to level II subcommittee |  | 2d? | 2015-07-27 | 2015-07-28 | 24d | finish no earlier than 2015-07-28 | M. Murphy | Late |
| 397 | 1.1.1.4.5.1.5.5 | Liquidity/Market Material Risk Aggregation Prepared | milestone | 0d | 2015-07-28 | 2015-07-28 | 25d | start no earlier than 2015-07-28 |  | Late |

| ID | WBS | Task | Type | Duration | Start | Finish | Total slack | Free slack | Constraint | Resources | Work | Text13 | Tracking Status |
| --- | --- | --- | --- | --- | --- | --- | --- | --- | --- | --- | --- | --- | --- |
| 398 | 1.1.1.4.5.1.6 | **Reputational/Strategic Material Risk Aggregation** |  | 20d? | 2015-07-01 | 2015-07-28 | 24d |  |  |  |  | M. Murphy |  |
| 399 | 1.1.1.4.5.1.6.1 | ERM disseminates Workshop Pre-Read Materials to Risk Managers |  | 8d? | 2015-07-01 | 2015-07-10 | 36d |  | finish no earlier than 2015-07-10 |  |  | M. Murphy | Late |
| 400 | 1.1.1.4.5.1.6.2 | Risk Manager conducts Pre-workshop Enrichment and Aggregation activities |  | 5d? | 2015-07-13 | 2015-07-17 | 31d |  | finish no earlier than 2015-07-17 |  |  | M. Murphy | Late |
| 401 | 1.1.1.4.5.1.6.3 | ERM facilitates Aggregation and Enrichment Workshop |  | 5d? | 2015-07-20 | 2015-07-24 | 26d |  | finish no earlier than 2015-07-24 |  |  | M. Murphy | Late |
| 402 | 1.1.1.4.5.1.6.4 | Risk Manager presents inventory to level II subcommittee |  | 2d? | 2015-07-27 | 2015-07-28 | 24d |  | finish no earlier than 2015-07-28 |  |  | M. Murphy | Late |
| 403 | 1.1.1.4.5.1.6.5 | Reputational/Strategic Material Risk Aggregation Prepared | milestone | 0d | 2015-07-28 | 2015-07-28 | 25d | 0d | start no earlier than 2015-07-28 |  |  |  | Late |
| 404 | 1.1.1.4.5.2 | Conduct NY SIS Top Down Review |  | 25d | 2015-07-28 | 2015-08-31 | 194d |  | start no earlier than 2015-07-28 | M. Murphy | 200h | M. Murphy | Late |
| 405 | 1.1.1.4.5.3 | Present Results to NY SIS ERMC |  | 25d | 2015-07-28 | 2015-08-31 | 194d |  | finish no earlier than 2015-08-31 | M. Murphy | 200h | M. Murphy | Late |
| 406 | 1.1.1.4.5.4 | Present Results to NY SIS BERC |  | 25d | 2015-07-28 | 2015-08-31 | 194d |  | finish no earlier than 2015-08-31 | M. Murphy | 200h | M. Murphy | Late |
| 407 | 1.1.1.4.6 | **Puerto Rico - Business Entity Material Risk Program** |  | 68d | 2015-05-28 | 2015-08-31 |  |  |  | D. Fabrizio | 1144h | D. Fabricio |  |
| 408 | 1.1.1.4.6.1 | **Puerto Rico - Santander Bancorp Aggregation Workshops** |  | 20d | 2015-07-01 | 2015-07-28 |  |  |  |  |  | D. Fabricio |  |
| 409 | 1.1.1.4.6.1.1 | **Credit Risk Aggregation** |  | 20d | 2015-07-01 | 2015-07-28 |  |  |  |  |  | D. Fabricio |  |
| 410 | 1.1.1.4.6.1.1.1 | ERM disseminates Workshop Pre-Read Materials to Risk Managers |  | 8d? | 2015-07-01 | 2015-07-10 | 230d |  | finish no earlier than 2015-07-10 |  |  | D. Fabricio | Late |
| 411 | 1.1.1.4.6.1.1.2 | Risk Manager conducts Pre-workshop Enrichment and Aggregation activities |  | 5d? | 2015-07-13 | 2015-07-17 | 225d |  | finish no earlier than 2015-07-17 |  |  | D. Fabricio | Late |
| 412 | 1.1.1.4.6.1.1.3 | ERM facilitates Aggregation and Enrichment Workshop |  | 5d? | 2015-07-20 | 2015-07-24 | 220d |  | finish no earlier than 2015-07-24 |  |  | D. Fabricio | Late |
| 413 | 1.1.1.4.6.1.1.4 | Risk Manager presents inventory to level II subcommittee |  | 2d? | 2015-07-27 | 2015-07-28 | 218d |  | finish no earlier than 2015-07-28 |  |  | D. Fabricio | Late |
| 414 | 1.1.1.4.6.1.1.5 | Credit Risk Aggregation Prepared | milestone | 0d | 2015-07-28 | 2015-07-28 | 219d |  | start no earlier than 2015-07-28 |  |  |  | Late |
| 415 | 1.1.1.4.6.1.2 | **Operational Risk Material Risk Aggregation** |  | 20d | 2015-07-01 | 2015-07-28 |  |  |  |  |  | D. Fabricio |  |
| 416 | 1.1.1.4.6.1.2.1 | ERM disseminates Workshop Pre-Read Materials to Risk Managers |  | 8d? | 2015-07-01 | 2015-07-10 | 230d |  | finish no earlier than 2015-07-10 |  |  | D. Fabricio | Late |
| 417 | 1.1.1.4.6.1.2.2 | Risk Manager conducts Pre-workshop Enrichment and Aggregation activities |  | 5d? | 2015-07-13 | 2015-07-17 | 225d |  | finish no earlier than 2015-07-17 |  |  | D. Fabricio | Late |
| 418 | 1.1.1.4.6.1.2.3 | ERM facilitates Aggregation and Enrichment Workshop |  | 5d? | 2015-07-20 | 2015-07-24 | 220d |  | finish no earlier than 2015-07-24 |  |  | D. Fabricio | Late |
| 419 | 1.1.1.4.6.1.2.4 | Risk Manager presents inventory to level II subcommittee |  | 2d? | 2015-07-27 | 2015-07-28 | 218d |  | finish no earlier than 2015-07-28 |  |  | D. Fabricio | Late |
| 420 | 1.1.1.4.6.1.2.5 | Operational Risk Material Risk Aggregation Prepared | milestone | 0d | 2015-07-28 | 2015-07-28 | 219d |  | start no earlier than 2015-07-28 |  |  |  | Late |
| 421 | 1.1.1.4.6.1.3 | **Compliance Material Risk Aggregation** |  | 20d | 2015-07-01 | 2015-07-28 |  |  |  |  |  | D. Fabricio |  |
| 422 | 1.1.1.4.6.1.3.1 | ERM disseminates Workshop Pre-Read Materials to Risk Managers |  | 8d? | 2015-07-01 | 2015-07-10 | 230d |  | finish no earlier than 2015-07-10 |  |  | D. Fabricio | Late |
| 423 | 1.1.1.4.6.1.3.2 | Risk Manager conducts Pre-workshop Enrichment and Aggregation activities |  | 5d? | 2015-07-13 | 2015-07-17 | 225d |  | finish no earlier than 2015-07-17 |  |  | D. Fabricio | Late |
| 424 | 1.1.1.4.6.1.3.3 | ERM facilitates Aggregation and Enrichment Workshop |  | 5d? | 2015-07-20 | 2015-07-24 | 220d |  | finish no earlier than 2015-07-24 |  |  | D. Fabricio | Late |
| 425 | 1.1.1.4.6.1.3.4 | Risk Manager presents inventory to level II subcommittee |  | 2d? | 2015-07-27 | 2015-07-28 | 218d |  | finish no earlier than 2015-07-28 |  |  | D. Fabricio | Late |
| 426 | 1.1.1.4.6.1.3.5 | Compliance Material Risk Aggregation Prepared | milestone | 0d | 2015-07-28 | 2015-07-28 | 219d |  | start no earlier than 2015-07-28 |  |  |  | Late |

| ID | WBS | Task | Type | Duration | Start | Finish | Total slack | Free slack | Constraint | Resources | Work | Text13 | Tracking Status |
| --- | --- | --- | --- | --- | --- | --- | --- | --- | --- | --- | --- | --- | --- |
| 427 | 1.1.1.4.6.1.4 | **Model Material Risk Aggregation** |  | 20d | 2015-07-01 | 2015-07-28 |  |  |  |  |  | D. Fabricio |  |
| 428 | 1.1.1.4.6.1.4.1 | ERM disseminates Workshop Pre-Read Materials to Risk Managers |  | 8d? | 2015-07-01 | 2015-07-10 | 230d |  | finish no earlier than 2015-07-10 |  |  | D. Fabricio | Late |
| 429 | 1.1.1.4.6.1.4.2 | Risk Manager conducts Pre-workshop Enrichment and Aggregation activities |  | 5d? | 2015-07-13 | 2015-07-17 | 225d |  | finish no earlier than 2015-07-17 |  |  | D. Fabricio | Late |
| 430 | 1.1.1.4.6.1.4.3 | ERM facilitates Aggregation and Enrichment Workshop |  | 5d? | 2015-07-20 | 2015-07-24 | 220d |  | finish no earlier than 2015-07-24 |  |  | D. Fabricio | Late |
| 431 | 1.1.1.4.6.1.4.4 | Risk Manager presents inventory to level II subcommittee |  | 2d? | 2015-07-27 | 2015-07-28 | 218d |  | finish no earlier than 2015-07-28 |  |  | D. Fabricio | Late |
| 432 | 1.1.1.4.6.1.4.5 | Model Material Risk Aggregation Prepared | milestone | 0d | 2015-07-28 | 2015-07-28 | 219d |  | start no earlier than 2015-07-28 |  |  |  | Late |
| 433 | 1.1.1.4.6.1.5 | **Liquidity/Market Material Risk Aggregation** |  | 20d | 2015-07-01 | 2015-07-28 |  |  |  |  |  | D. Fabricio |  |
| 434 | 1.1.1.4.6.1.5.1 | ERM disseminates Workshop Pre-Read Materials to Risk Managers |  | 8d? | 2015-07-01 | 2015-07-10 | 230d |  | finish no earlier than 2015-07-10 |  |  | D. Fabricio | Late |
| 435 | 1.1.1.4.6.1.5.2 | Risk Manager conducts Pre-workshop Enrichment and Aggregation activities |  | 5d? | 2015-07-13 | 2015-07-17 | 225d |  | finish no earlier than 2015-07-17 |  |  | D. Fabricio | Late |
| 436 | 1.1.1.4.6.1.5.3 | ERM facilitates Aggregation and Enrichment Workshop |  | 5d? | 2015-07-20 | 2015-07-24 | 220d |  | finish no earlier than 2015-07-24 |  |  | D. Fabricio | Late |
| 437 | 1.1.1.4.6.1.5.4 | Risk Manager presents inventory to level II subcommittee |  | 2d? | 2015-07-27 | 2015-07-28 | 218d |  | finish no earlier than 2015-07-28 |  |  | D. Fabricio | Late |
| 438 | 1.1.1.4.6.1.5.5 | Liquidity/Market Material Risk Aggregation Prepared | milestone | 0d | 2015-07-28 | 2015-07-28 | 219d |  | start no earlier than 2015-07-28 |  |  |  | Late |
| 439 | 1.1.1.4.6.1.6 | **Reputational/Strategic Material Risk Aggregation** |  | 20d | 2015-07-01 | 2015-07-28 |  |  |  |  |  | D. Fabricio |  |
| 440 | 1.1.1.4.6.1.6.1 | ERM disseminates Workshop Pre-Read Materials to Risk Managers |  | 8d? | 2015-07-01 | 2015-07-10 | 230d |  | finish no earlier than 2015-07-10 |  |  | D. Fabricio | Late |
| 441 | 1.1.1.4.6.1.6.2 | Risk Manager conducts Pre-workshop Enrichment and Aggregation activities |  | 5d? | 2015-07-13 | 2015-07-17 | 225d |  | finish no earlier than 2015-07-17 |  |  | D. Fabricio | Late |
| 442 | 1.1.1.4.6.1.6.3 | ERM facilitates Aggregation and Enrichment Workshop |  | 5d? | 2015-07-20 | 2015-07-24 | 220d |  | finish no earlier than 2015-07-24 |  |  | D. Fabricio | Late |
| 443 | 1.1.1.4.6.1.6.4 | Risk Manager presents inventory to level II subcommittee |  | 2d? | 2015-07-27 | 2015-07-28 | 218d |  | finish no earlier than 2015-07-28 |  |  | D. Fabricio | Late |
| 444 | 1.1.1.4.6.1.6.5 | Reputational/Strategic Material Risk Aggregation Prepared | milestone | 0d | 2015-07-28 | 2015-07-28 | 219d | 0d | start no earlier than 2015-07-28 |  |  |  | Late |
| 445 | 1.1.1.4.6.2 | Conduct PR Santander Bancorp Top Down Review |  | 25d | 2015-07-28 | 2015-08-31 | 194d |  | start no earlier than 2015-07-28 | D. Fabrizio | 200h | D. Fabricio | Late |
| 446 | 1.1.1.4.6.3 | Present Results to PR Santander Bancorp ERMC |  | 25d | 2015-07-28 | 2015-08-31 | 194d |  | start no earlier than 2015-07-28 | D. Fabrizio | 200h | D. Fabricio | Late |
| 447 | 1.1.1.4.6.4 | Present Results to PR Santander Bancorp BERC |  | 25d | 2015-07-28 | 2015-08-31 | 194d |  | start no earlier than 2015-07-28 | D. Fabrizio | 200h | D. Fabricio | Late |
| 448 | 1.1.1.4.7 | **Miami - Business Entity Material Risk Program** |  | 68d | 2015-05-28 | 2015-08-31 |  |  |  | L. Madariaga | 1144h | L. Madargia |  |
| 449 | 1.1.1.4.7.1 | **Miami Aggregation Workshops** |  | 20d | 2015-07-01 | 2015-07-28 |  |  |  |  |  | L. Madargia |  |
| 450 | 1.1.1.4.7.1.1 | **Credit Risk Aggregation** |  | 20d | 2015-07-01 | 2015-07-28 |  |  |  |  |  | L. Madargia |  |
| 451 | 1.1.1.4.7.1.1.1 | ERM disseminates Workshop Pre-Read Materials to Risk Managers |  | 8d? | 2015-07-01 | 2015-07-10 | 230d |  | finish no earlier than 2015-07-10 |  |  | L. Madargia | Late |
| 452 | 1.1.1.4.7.1.1.2 | Risk Manager conducts Pre-workshop Enrichment and Aggregation activities |  | 5d? | 2015-07-13 | 2015-07-17 | 225d |  | finish no earlier than 2015-07-17 |  |  | L. Madargia | Late |
| 453 | 1.1.1.4.7.1.1.3 | ERM facilitates Aggregation and Enrichment Workshop |  | 5d? | 2015-07-20 | 2015-07-24 | 220d |  | finish no earlier than 2015-07-24 |  |  | L. Madargia | Late |
| 454 | 1.1.1.4.7.1.1.4 | Risk Manager presents inventory to level II subcommittee |  | 2d? | 2015-07-27 | 2015-07-28 | 218d |  | finish no earlier than 2015-07-28 |  |  | L. Madargia | Late |
| 455 | 1.1.1.4.7.1.1.5 | Credit Risk Aggregation Prepared | milestone | 0d | 2015-07-28 | 2015-07-28 | 219d |  | start no earlier than 2015-07-28 |  |  |  | Late |

| ID | WBS | Task | Type | Duration | Start | Finish | Total slack | Constraint | Text13 | Tracking Status |
| --- | --- | --- | --- | --- | --- | --- | --- | --- | --- | --- |
| 456 | 1.1.1.4.7.1.2 | **Operational Risk Material Risk Aggregation** |  | 20d | 2015-07-01 | 2015-07-28 |  |  | L. Madargia |  |
| 457 | 1.1.1.4.7.1.2.1 | ERM disseminates Workshop Pre-Read Materials to Risk Managers |  | 8d? | 2015-07-01 | 2015-07-10 | 230d | finish no earlier than 2015-07-10 | L. Madargia | Late |
| 458 | 1.1.1.4.7.1.2.2 | Risk Manager conducts Pre-workshop Enrichment and Aggregation activities |  | 5d? | 2015-07-13 | 2015-07-17 | 225d | finish no earlier than 2015-07-17 | L. Madargia | Late |
| 459 | 1.1.1.4.7.1.2.3 | ERM facilitates Aggregation and Enrichment Workshop |  | 5d? | 2015-07-20 | 2015-07-24 | 220d | finish no earlier than 2015-07-24 | L. Madargia | Late |
| 460 | 1.1.1.4.7.1.2.4 | Risk Manager presents inventory to level II subcommittee |  | 2d? | 2015-07-27 | 2015-07-28 | 218d | finish no earlier than 2015-07-28 | L. Madargia | Late |
| 461 | 1.1.1.4.7.1.2.5 | Operational Risk Material Risk Aggregation Prepared | milestone | 0d | 2015-07-28 | 2015-07-28 | 219d | start no earlier than 2015-07-28 |  | Late |
| 462 | 1.1.1.4.7.1.3 | **Compliance Material Risk Aggregation** |  | 20d | 2015-07-01 | 2015-07-28 |  |  | L. Madargia |  |
| 463 | 1.1.1.4.7.1.3.1 | ERM disseminates Workshop Pre-Read Materials to Risk Managers |  | 8d? | 2015-07-01 | 2015-07-10 | 230d | finish no earlier than 2015-07-10 | L. Madargia | Late |
| 464 | 1.1.1.4.7.1.3.2 | Risk Manager conducts Pre-workshop Enrichment and Aggregation activities |  | 5d? | 2015-07-13 | 2015-07-17 | 225d | finish no earlier than 2015-07-17 | L. Madargia | Late |
| 465 | 1.1.1.4.7.1.3.3 | ERM facilitates Aggregation and Enrichment Workshop |  | 5d? | 2015-07-20 | 2015-07-24 | 220d | finish no earlier than 2015-07-24 | L. Madargia | Late |
| 466 | 1.1.1.4.7.1.3.4 | Risk Manager presents inventory to level II subcommittee |  | 2d? | 2015-07-27 | 2015-07-28 | 218d | finish no earlier than 2015-07-28 | L. Madargia | Late |
| 467 | 1.1.1.4.7.1.3.5 | Compliance Material Risk Aggregation Prepared | milestone | 0d | 2015-07-28 | 2015-07-28 | 219d | start no earlier than 2015-07-28 |  | Late |
| 468 | 1.1.1.4.7.1.4 | **Model Material Risk Aggregation** |  | 20d | 2015-07-01 | 2015-07-28 |  |  | L. Madargia |  |
| 469 | 1.1.1.4.7.1.4.1 | ERM disseminates Workshop Pre-Read Materials to Risk Managers |  | 8d? | 2015-07-01 | 2015-07-10 | 230d | finish no earlier than 2015-07-10 | L. Madargia | Late |
| 470 | 1.1.1.4.7.1.4.2 | Risk Manager conducts Pre-workshop Enrichment and Aggregation activities |  | 5d? | 2015-07-13 | 2015-07-17 | 225d | finish no earlier than 2015-07-17 | L. Madargia | Late |
| 471 | 1.1.1.4.7.1.4.3 | ERM facilitates Aggregation and Enrichment Workshop |  | 5d? | 2015-07-20 | 2015-07-24 | 220d | finish no earlier than 2015-07-24 | L. Madargia | Late |
| 472 | 1.1.1.4.7.1.4.4 | Risk Manager presents inventory to level II subcommittee |  | 2d? | 2015-07-27 | 2015-07-28 | 218d | finish no earlier than 2015-07-28 | L. Madargia | Late |
| 473 | 1.1.1.4.7.1.4.5 | Model Material Risk Aggregation Prepared | milestone | 0d | 2015-07-28 | 2015-07-28 | 219d | start no earlier than 2015-07-28 |  | Late |
| 474 | 1.1.1.4.7.1.5 | **Liquidity/Market Material Risk Aggregation** |  | 20d | 2015-07-01 | 2015-07-28 |  |  | L. Madargia |  |
| 475 | 1.1.1.4.7.1.5.1 | ERM disseminates Workshop Pre-Read Materials to Risk Managers |  | 8d? | 2015-07-01 | 2015-07-10 | 230d | finish no earlier than 2015-07-10 | L. Madargia | Late |
| 476 | 1.1.1.4.7.1.5.2 | Risk Manager conducts Pre-workshop Enrichment and Aggregation activities |  | 5d? | 2015-07-13 | 2015-07-17 | 225d | finish no earlier than 2015-07-17 | L. Madargia | Late |
| 477 | 1.1.1.4.7.1.5.3 | ERM facilitates Aggregation and Enrichment Workshop |  | 5d? | 2015-07-20 | 2015-07-24 | 220d | finish no earlier than 2015-07-24 | L. Madargia | Late |
| 478 | 1.1.1.4.7.1.5.4 | Risk Manager presents inventory to level II subcommittee |  | 2d? | 2015-07-27 | 2015-07-28 | 218d | finish no earlier than 2015-07-28 | L. Madargia | Late |
| 479 | 1.1.1.4.7.1.5.5 | Liquidity/Market Material Risk Aggregation Prepared | milestone | 0d | 2015-07-28 | 2015-07-28 | 219d | start no earlier than 2015-07-28 |  | Late |

| ID | WBS | Task | Type | Duration | Start | Finish | Total slack | Free slack | Constraint | Resources | Work | Text13 | Tracking Status |
| --- | --- | --- | --- | --- | --- | --- | --- | --- | --- | --- | --- | --- | --- |
| 480 | 1.1.1.4.7.1.6 | **Reputational/Strategic Material Risk Aggregation** |  | 20d | 2015-07-01 | 2015-07-28 |  |  |  |  |  | L. Madargia |  |
| 481 | 1.1.1.4.7.1.6.1 | ERM disseminates Workshop Pre-Read Materials to Risk Managers |  | 8d? | 2015-07-01 | 2015-07-10 | 230d |  | finish no earlier than 2015-07-10 |  |  | L. Madargia | Late |
| 482 | 1.1.1.4.7.1.6.2 | Risk Manager conducts Pre-workshop Enrichment and Aggregation activities |  | 5d? | 2015-07-13 | 2015-07-17 | 225d |  | finish no earlier than 2015-07-17 |  |  | L. Madargia | Late |
| 483 | 1.1.1.4.7.1.6.3 | ERM facilitates Aggregation and Enrichment Workshop |  | 5d? | 2015-07-20 | 2015-07-24 | 220d |  | finish no earlier than 2015-07-24 |  |  | L. Madargia | Late |
| 484 | 1.1.1.4.7.1.6.4 | Risk Manager presents inventory to level II subcommittee |  | 2d? | 2015-07-27 | 2015-07-28 | 218d |  | finish no earlier than 2015-07-28 |  |  | L. Madargia | Late |
| 485 | 1.1.1.4.7.1.6.5 | Reputational/Strategic Material Risk Aggregation Prepared | milestone | 0d | 2015-07-28 | 2015-07-28 | 219d | 0d | start no earlier than 2015-07-28 |  |  |  | Late |
| 486 | 1.1.1.4.7.2 | Conduct Miami Top Down Review |  | 25d | 2015-07-28 | 2015-08-31 | 194d |  | start no earlier than 2015-07-28 | L. Madariaga | 200h | L. Madargia | Late |
| 487 | 1.1.1.4.7.3 | Present Miami to SCUSA ERMC |  | 25d | 2015-07-28 | 2015-08-31 | 194d |  | finish no earlier than 2015-08-31 | L. Madariaga | 200h | L. Madargia | Late |
| 488 | 1.1.1.4.7.4 | Present Miami to SCUSA BERC |  | 25d | 2015-07-28 | 2015-08-31 | 194d |  | finish no earlier than 2015-08-31 | L. Madariaga | 200h | L. Madargia | Late |
| 489 | 1.1.1.5 | **Financial Risk Mgmt-Design and Operationalize** |  | 1d? | 2015-06-05 | 2015-06-05 | 255d |  |  |  |  |  |  |
| 490 | 1.1.1.5.1 | **Conduct high level of credit risk management** |  | 1d? | 2015-06-05 | 2015-06-05 | 255d |  |  |  |  |  |  |
| 491 | 1.1.1.5.1.1 | High level wholesale credit process review incl. limits / controls and DoA at SCUSA and SBNA |  | 1d? | 2015-06-05 | 2015-06-05 | 255d |  |  |  |  |  | Late |
| 492 | 1.1.1.5.1.2 | MILESTONE |  | 1d? | 2015-06-05 | 2015-06-05 | 255d |  |  |  |  |  | Late |
| 493 | 1.1.1.5.2 | **Conduct liquidity risk gap analysis** |  | 1d? | 2015-06-05 | 2015-06-05 | 255d |  |  |  |  |  |  |
| 494 | 1.1.1.5.2.1 | Definition of target liq. risk capabilities, current state review and remediation plan |  | 1d? | 2015-06-05 | 2015-06-05 | 255d |  |  |  |  |  | Late |
| 495 | 1.1.1.5.2.2 | MILESTONE |  | 1d? | 2015-06-05 | 2015-06-05 | 255d |  |  |  |  |  | Late |
| 496 | 1.1.1.6 | **Internal Reporting** |  | 1d? | 2015-06-05 | 2015-06-05 | 255d |  |  |  |  |  |  |
| 497 | 1.1.1.6.1 | **Enhance internal reporting** |  | 1d? | 2015-06-05 | 2015-06-05 | 255d |  |  |  |  |  |  |
| 498 | 1.1.1.6.1.1 | Assessment of current reporting landscape with quick win enhancements |  | 1d? | 2015-06-05 | 2015-06-05 | 255d |  |  |  |  |  | Late |
| 499 | 1.1.1.6.1.2 | Definition of target risk reporting landscape |  | 1d? | 2015-06-05 | 2015-06-05 | 255d |  |  |  |  |  | Late |
| 500 | 1.1.1.6.1.3 | Template reports and socialization of high priority reports |  | 1d? | 2015-06-05 | 2015-06-05 | 255d |  |  |  |  |  | Late |
| 501 | 1.1.1.6.1.4 | Operationalization of high priority reports e.g. allocate reporting resources |  | 1d? | 2015-06-05 | 2015-06-05 | 255d |  |  |  |  |  | Late |
| 502 | 1.1.1.6.1.5 | Template reports and socialization of low priority reports |  | 1d? | 2015-06-05 | 2015-06-05 | 255d |  |  |  |  |  | Late |
| 503 | 1.1.1.6.1.6 | MILESTONE |  | 1d? | 2015-06-05 | 2015-06-05 | 255d |  |  |  |  |  | Late |
