# 1111 CART- Risk Transformation Deliverable Inventory_0615

Schedule from MS Project, 2014-09-19 to 2016-05-27.

## Calendars

- Standard: Mon-Fri 08:00-12:00, 13:00-17:00; Sat-Sun off.

## Resources

| Resource |
| --- |
| David Mael |
| R. Alhadeff/M. Carbone |
| J. Smith/T. Ploetz |
| M. Murphy |
| D. Fabrizio |
| L. Madariaga |

## Schedule

| ID | WBS | Task | Type | Duration | Start | Finish | Total slack | Constraint | Work | Tracking Status | Entity |
| --- | --- | --- | --- | --- | --- | --- | --- | --- | --- | --- | --- |
| 1 | 1 | **CART- Risk Transformation Deliverable Inventory_0611** |  | 441d? | 2014-09-19 | 2016-05-27 | 0d |  | 6080h |  |  |
| 2 | 1.1 | **Capital and Risk Transformation SHUSA** |  | 441d? | 2014-09-19 | 2016-05-27 | 0d |  | 6080h |  |  |
| 3 | 1.1.1 | **Risk Transformation** |  | 441d? | 2014-09-19 | 2016-05-27 | 0d |  | 6080h |  |  |
| 4 | 1.1.1.1 | **Risk Appetite** |  | 260d | 2015-06-01 | 2016-05-27 | 0d |  |  | Late |  |
| 5 | 1.1.1.1.1 | **Risk Appetite Statement(RAS)** |  | 260d | 2015-06-01 | 2016-05-27 | 0d |  |  |  |  |
| 6 | 1.1.1.1.1.1 | **List of Deliverables for Sub Work-Stream** |  | 0d | 2015-12-31 | 2015-12-31 | 106d |  |  |  |  |
| 7 | 1.1.1.1.1.1.1 | example deliverable (linked to the detail below) | milestone | 0d | 2015-12-31 | 2015-12-31 | 106d | finish no earlier than 2015-12-31 |  | Late |  |
| 8 | 1.1.1.1.1.2 | **Re-designed SHUSA RAS framework** |  | 105d | 2015-06-08 | 2015-10-30 | 150d |  |  |  |  |
| 9 | 1.1.1.1.1.2.1 | **SHUSA-level RAS** |  | 60d | 2015-06-08 | 2015-08-28 | 195d |  |  |  | ܁ࢹ |
| 10 | 1.1.1.1.1.2.1.1 | **Finalize project plan and communicate to CART stakeholders** |  | 10d | 2015-06-08 | 2015-06-19 | 245d |  |  |  | ܁ࢹ |
| 11 | 1.1.1.1.1.2.1.1.1 | Finalize CART plan at task-level |  | 1d | 2015-06-08 | 2015-06-08 | 254d | finish no earlier than 2015-06-08 |  | Late | ܁ࢹ |
| 12 | 1.1.1.1.1.2.1.1.2 | Socialize plan with key stakeholders (SHUSA, SBNA, SCUSA) |  | 9d | 2015-06-09 | 2015-06-19 | 245d | finish no earlier than 2015-06-19 |  | Late | ܁ࢹ |
| 13 | 1.1.1.1.1.2.1.1.3 | Communicate plan to CART stakeholders |  | 5d | 2015-06-15 | 2015-06-19 | 245d | finish no earlier than 2015-06-19 |  | Late | ܁ࢹ |
| 14 | 1.1.1.1.1.2.1.1.4 | Plan submitted to CART / Leadership Committee | milestone | 0d | 2015-06-19 | 2015-06-19 | 245d | finish no earlier than 2015-06-19 |  | Late | ܁ࢹ |
| 15 | 1.1.1.1.1.2.1.2 | **Define guidelines and approach for choosing metrics and setting limits** |  | 15d | 2015-06-08 | 2015-06-26 | 240d |  |  |  | ܁ࢹ |
| 16 | 1.1.1.1.1.2.1.2.1 | Draft guidelines and approach for metrics and limits (no Finance metrics, risk profile, risk appetite, stressed metrics) |  | 5d | 2015-06-08 | 2015-06-12 | 250d | finish no earlier than 2015-06-12 |  | Late | ܁ࢹ |
| 17 | 1.1.1.1.1.2.1.2.2 | Socialize Risk Appetite guidelines to stakeholders (SHUSA, SBNA, SCUSA) |  | 5d | 2015-06-15 | 2015-06-19 | 245d | finish no earlier than 2015-06-19 |  | Late | ܁ࢹ |
| 18 | 1.1.1.1.1.2.1.2.3 | Update guidelines per stakeholder feedback |  | 5d | 2015-06-22 | 2015-06-26 | 240d | finish no earlier than 2015-06-26 |  | Late | ܁ࢹ |
| 19 | 1.1.1.1.1.2.1.2.4 | Finalized guidelines and approach for choosing metrics and setting limits | milestone | 0d | 2015-06-26 | 2015-06-26 | 240d | finish no earlier than 2015-06-26 |  | Late | ܁ࢹ |
| 20 | 1.1.1.1.1.2.1.3 | **Articulate enterprise-wide core values, RAS principles and major risk categories** |  | 15d | 2015-06-08 | 2015-06-26 | 240d |  |  |  | ܁ࢹ |
| 21 | 1.1.1.1.1.2.1.3.1 | Draft of enterprise-wide core values, RAS principles and major risk categories (e.g. credit) |  | 5d | 2015-06-08 | 2015-06-12 | 250d | finish no earlier than 2015-06-12 |  | Late | ܁ࢹ |
| 22 | 1.1.1.1.1.2.1.3.2 | Socialize Risk Appetite philosophy to stakeholders (SHUSA, SBNA, SCUSA) |  | 5d | 2015-06-15 | 2015-06-19 | 245d | finish no earlier than 2015-06-19 |  | Late | ܁ࢹ |
| 23 | 1.1.1.1.1.2.1.3.3 | Update values, principles and risk categories per stakeholder feedback |  | 5d | 2015-06-22 | 2015-06-26 | 240d | finish no earlier than 2015-06-26 |  | Late | ܁ࢹ |
| 24 | 1.1.1.1.1.2.1.3.4 | Finalized enterprise-wide RAS philosophy and major risk categories | milestone | 0d | 2015-06-26 | 2015-06-26 | 240d | finish no earlier than 2015-06-26 |  | Late | ܁ࢹ |

| ID | WBS | Task | Type | Duration | Start | Finish | Total slack | Constraint | Entity | Tracking Status |
| --- | --- | --- | --- | --- | --- | --- | --- | --- | --- | --- |
| 25 | 1.1.1.1.1.2.1.4 | **Detail material risks and constraints for enterprise** |  | 15d | 2015-06-08 | 2015-06-26 | 240d |  | ܁ࢹ |  |
| 26 | 1.1.1.1.1.2.1.4.1 | Identify and document material risks for enterprise, including input from stakeholders (SHUSA, SBNA, SCUSA) |  | 5d | 2015-06-08 | 2015-06-12 | 250d | finish no earlier than 2015-06-12 | ܁ࢹ | Late |
| 27 | 1.1.1.1.1.2.1.4.2 | Identify and document constraints from regulators and other stakeholders (i.e. ratings agencies) |  | 5d | 2015-06-15 | 2015-06-19 | 245d | finish no earlier than 2015-06-19 | ܁ࢹ | Late |
| 28 | 1.1.1.1.1.2.1.4.3 | Consolidate all requirements from Group, including updated corporate metrics (recalculated with April numbers) |  | 5d | 2015-06-15 | 2015-06-19 | 245d | finish no earlier than 2015-06-19 | ܁ࢹ | Late |
| 29 | 1.1.1.1.1.2.1.4.4 | Document owners and rationale for all corporate metrics |  | 5d | 2015-06-15 | 2015-06-19 | 245d | finish no earlier than 2015-06-19 | ܁ࢹ | Late |
| 30 | 1.1.1.1.1.2.1.4.5 | Facilitate review and challenge session for list of material risks with key stakeholders (SHUSA, SBNA, SCUSA) |  | 3d | 2015-06-22 | 2015-06-24 | 242d | finish no earlier than 2015-06-24 | ܁ࢹ | Late |
| 31 | 1.1.1.1.1.2.1.4.6 | Update documentation of material risks and constraints, given stakeholder input |  | 3d | 2015-06-24 | 2015-06-26 | 240d | finish no earlier than 2015-06-26 | ܁ࢹ | Late |
| 32 | 1.1.1.1.1.2.1.4.7 | Finalized documentation of material risks and constraints for enterprise | milestone | 0d | 2015-06-26 | 2015-06-26 | 240d | finish no earlier than 2015-06-26 | ܁ࢹ | Late |
| 33 | 1.1.1.1.1.2.1.5 | **For each risk, determine a qualitative risk appetite statement** |  | 25d | 2015-06-08 | 2015-07-10 | 230d |  | ܁ࢹ |  |
| 34 | 1.1.1.1.1.2.1.5.1 | Draft a qualitative risk appetite statement for all risks detailed in documentation of material risks for enterprise, considering documented constraints |  | 20d | 2015-06-08 | 2015-07-03 | 235d | finish no earlier than 2015-07-03 | ܁ࢹ | Late |
| 35 | 1.1.1.1.1.2.1.5.2 | Socialize SHUSA-level qualitative statements with stakeholders (SHUSA, SBNA, SCUSA) |  | 5d | 2015-07-06 | 2015-07-10 | 230d | finish no earlier than 2015-07-10 | ܁ࢹ | Late |
| 36 | 1.1.1.1.1.2.1.5.3 | Finalized qualitative risk appetite statements for material risks | milestone | 0d | 2015-07-10 | 2015-07-10 | 230d | finish no earlier than 2015-07-10 | ܁ࢹ | Late |
| 37 | 1.1.1.1.1.2.1.6 | **For quantifiable statements, identify key metrics and calibrate limits** |  | 45d | 2015-06-15 | 2015-08-14 | 205d |  | ܁ࢹ |  |
| 38 | 1.1.1.1.1.2.1.6.1 | Finalize list of proposed SHUSA metrics |  | 1d | 2015-06-15 | 2015-06-15 | 249d | finish no earlier than 2015-06-15 | ܁ࢹ | Late |
| 39 | 1.1.1.1.1.2.1.6.2 | Facilitate review and challenge session for proposed metrics, limits and thresholds with key stakeholders (SHUSA, SBNA, SCUSA) |  | 1d | 2015-06-16 | 2015-06-16 | 248d | finish no earlier than 2015-06-16 | ܁ࢹ | Late |
| 40 | 1.1.1.1.1.2.1.6.3 | Update list of SHUSA metrics, given stakeholder input, and identify and document owners for each metric |  | 3d | 2015-06-17 | 2015-06-19 | 245d | finish no earlier than 2015-06-19 | ܁ࢹ | Late |
| 41 | 1.1.1.1.1.2.1.6.4 | Detail limits and thresholds for list of SHUSA metrics |  | 5d | 2015-06-22 | 2015-06-26 | 240d | finish no earlier than 2015-06-26 | ܁ࢹ | Late |
| 42 | 1.1.1.1.1.2.1.6.5 | Calibrate limits based on analysis of historical data, industry benchmarking, etc. |  | 30d | 2015-06-29 | 2015-08-07 | 210d | finish no earlier than 2015-08-07 | ܁ࢹ | Late |
| 43 | 1.1.1.1.1.2.1.6.6 | Document rationale for SHUSA metrics |  | 5d | 2015-07-13 | 2015-07-17 | 225d | finish no earlier than 2015-07-17 | ܁ࢹ | Late |
| 44 | 1.1.1.1.1.2.1.6.7 | Document IT requirements for SHUSA metrics |  | 15d | 2015-07-13 | 2015-07-31 | 215d | finish no earlier than 2015-07-31 | ܁ࢹ | Late |
| 45 | 1.1.1.1.1.2.1.6.8 | Consolidate metrics, limits and thresholds into quantifiable statements for material risks |  | 3d | 2015-08-10 | 2015-08-12 | 207d | finish no earlier than 2015-08-12 | ܁ࢹ | Late |
| 46 | 1.1.1.1.1.2.1.6.9 | Socialize quantitative statements with stakeholders (SHUSA, SBNA, SCUSA) |  | 2d | 2015-08-13 | 2015-08-14 | 205d | finish no earlier than 2015-08-14 | ܁ࢹ | Late |
| 47 | 1.1.1.1.1.2.1.6.10 | Finalized quantitative risk appetite statements for material risks | milestone | 0d | 2015-08-14 | 2015-08-14 | 205d | finish no earlier than 2015-08-14 | ܁ࢹ | Late |
| 48 | 1.1.1.1.1.2.1.7 | **Consolidate qualitative and quantitative statements into SHUSA-level RAS and socialize with stakeholders** |  | 10d | 2015-08-17 | 2015-08-28 | 195d |  | ܁ࢹ |  |
| 49 | 1.1.1.1.1.2.1.7.1 | Draft SHUSA-level RAS |  | 5d | 2015-08-17 | 2015-08-21 | 200d | finish no earlier than 2015-08-21 | ܁ࢹ | Late |
| 50 | 1.1.1.1.1.2.1.7.2 | Socialize SHUSA-level RAS with stakeholders (SHUSA, SBNA, SCUSA) |  | 5d | 2015-08-24 | 2015-08-28 | 195d | finish no earlier than 2015-08-28 | ܁ࢹ | Late |
| 51 | 1.1.1.1.1.2.1.7.3 | Final draft of SHUSA-level RAS | milestone | 0d | 2015-08-28 | 2015-08-28 | 195d | finish no earlier than 2015-08-28 | ܁ࢹ | Late |

| ID | WBS | Task | Type | Duration | Start | Finish | Total slack | Constraint | Entity | Tracking Status |
| --- | --- | --- | --- | --- | --- | --- | --- | --- | --- | --- |
| 52 | 1.1.1.1.1.2.2 | **SHUSA-level RAS supporting processes and documentation** |  | 30d | 2015-07-06 | 2015-08-14 | 205d |  | ܁ࢹ |  |
| 53 | 1.1.1.1.1.2.2.1 | **Document SHUSA-level RAS reporting, monitoring and escalation processes** |  | 20d | 2015-07-06 | 2015-07-31 | 215d |  | ܁ࢹ |  |
| 54 | 1.1.1.1.1.2.2.1.1 | Draft SHUSA-level RAS reporting and monitoring process |  | 15d | 2015-07-06 | 2015-07-24 | 220d | finish no earlier than 2015-07-24 | ܁ࢹ | Late |
| 55 | 1.1.1.1.1.2.2.1.2 | Draft SHUSA-level RAS breach escalation process and detail consequences |  | 15d | 2015-07-06 | 2015-07-24 | 220d | finish no earlier than 2015-07-24 | ܁ࢹ | Late |
| 56 | 1.1.1.1.1.2.2.1.3 | Socialize processes with stakeholders (SHUSA, SBNA, SCUSA) |  | 5d | 2015-07-27 | 2015-07-31 | 215d | finish no earlier than 2015-07-31 | ܁ࢹ | Late |
| 57 | 1.1.1.1.1.2.2.1.4 | Finalized SHUSA-level RAS reporting, monitoring and escalation processes | milestone | 0d | 2015-07-31 | 2015-07-31 | 215d | finish no earlier than 2015-07-31 | ܁ࢹ | Late |
| 58 | 1.1.1.1.1.2.2.2 | **Document SHUSA-level RAS development and governance process** |  | 20d | 2015-07-20 | 2015-08-14 | 205d |  | ܁ࢹ |  |
| 59 | 1.1.1.1.1.2.2.2.1 | Draft SHUSA-level RAS development documentation and governance process |  | 15d | 2015-07-20 | 2015-08-07 | 210d | finish no earlier than 2015-08-07 | ܁ࢹ | Late |
| 60 | 1.1.1.1.1.2.2.2.2 | Socialize documents with stakeholders (SHUSA, SBNA, SCUSA) |  | 5d | 2015-08-10 | 2015-08-14 | 205d | finish no earlier than 2015-08-14 | ܁ࢹ | Late |
| 61 | 1.1.1.1.1.2.2.2.3 | Finalized SHUSA-level RAS development documentation and governance process | milestone | 0d | 2015-08-14 | 2015-08-14 | 205d | finish no earlier than 2015-08-14 | ܁ࢹ | Late |
| 62 | 1.1.1.1.1.2.3 | **SHUSA-level RAS framework approval process** |  | 45d | 2015-08-31 | 2015-10-30 | 150d |  | ܁ࢹ |  |
| 63 | 1.1.1.1.1.2.3.1 | **Educate Board and senior committees on RAS and secure approval** |  | 45d | 2015-08-31 | 2015-10-30 | 150d |  | ܁ࢹ |  |
| 64 | 1.1.1.1.1.2.3.1.1 | Create materials for Board training on RAS roles & responsibilities |  | 5d | 2015-08-31 | 2015-09-04 | 190d | finish no earlier than 2015-09-04 | ܁ࢹ | Late |
| 65 | 1.1.1.1.1.2.3.1.2 | Create materials for Board training on RAS structure and metrics |  | 5d | 2015-08-31 | 2015-09-04 | 190d | finish no earlier than 2015-09-04 | ܁ࢹ | Late |
| 66 | 1.1.1.1.1.2.3.1.3 | Deliver Board training session(s) |  | 5d | 2015-09-21 | 2015-09-25 | 175d | finish no earlier than 2015-09-25 | ܁ࢹ | Late |
| 67 | 1.1.1.1.1.2.3.1.4 | Present SHUSA-level RAS to ERMC/EMC |  | 10d | 2015-08-31 | 2015-09-11 | 185d | finish no earlier than 2015-09-11 | ܁ࢹ | Late |
| 68 | 1.1.1.1.1.2.3.1.5 | Present CDR presentation to Madrid for review |  | 10d | 2015-08-31 | 2015-09-11 | 185d | finish no earlier than 2015-09-11 | ܁ࢹ | Late |
| 69 | 1.1.1.1.1.2.3.1.6 | Update RAS given feedback from SHUSA and Madrid risk committees |  | 5d | 2015-09-14 | 2015-09-18 | 180d | finish no earlier than 2015-09-18 | ܁ࢹ | Late |
| 70 | 1.1.1.1.1.2.3.1.7 | Present to Board/BERC for review |  | 10d | 2015-09-21 | 2015-10-02 | 170d | finish no earlier than 2015-10-02 | ܁ࢹ | Late |
| 71 | 1.1.1.1.1.2.3.1.8 | Present SHUSA-level RAS to CDR |  | 5d | 2015-10-05 | 2015-10-09 | 165d | finish no earlier than 2015-10-09 | ܁ࢹ | Late |
| 72 | 1.1.1.1.1.2.3.1.9 | Update RAS given feedback from CDR |  | 10d | 2015-10-12 | 2015-10-23 | 155d | finish no earlier than 2015-10-23 | ܁ࢹ | Late |
| 73 | 1.1.1.1.1.2.3.1.10 | Submit SHUSA-level RAS for Board approval |  | 5d | 2015-10-26 | 2015-10-30 | 150d | finish no earlier than 2015-10-30 | ܁ࢹ | Late |
| 74 | 1.1.1.1.1.2.3.1.11 | Board-approved SHUSA-level RAS | milestone | 0d | 2015-10-30 | 2015-10-30 | 150d | finish no earlier than 2015-10-30 | ܁ࢹ | Late |
| 75 | 1.1.1.1.1.3 | **Cascaded RAS across enterprise through creation of subsidiary-level and, where ncessary, BU-level statements** |  | 260d | 2015-06-01 | 2016-05-27 | 0d |  | ܁ࢻ |  |
| 76 | 1.1.1.1.1.3.1 | **Assessment of short-term SCUSA RAS** |  | 20d | 2015-06-01 | 2015-06-26 | 240d |  | ܁ࢻ |  |
| 77 | 1.1.1.1.1.3.1.1 | **Assess SCUSA RAS and determine plan for short-term remediation** |  | 5d | 2015-06-01 | 2015-06-05 | 255d |  | ܁ࢻ |  |
| 78 | 1.1.1.1.1.3.1.1.1 | Assess current state of SCUSA RAS, focusing on pre-determined "pain points" (not reviewing RAS in entirety) |  | 1d | 2015-06-01 | 2015-06-01 | 259d | finish no earlier than 2015-06-01 | ܁ࢻ | Late |
| 79 | 1.1.1.1.1.3.1.1.2 | Determine plan for short-term remediation |  | 5d | 2015-06-01 | 2015-06-05 | 255d | finish no earlier than 2015-06-05 | ܁ࢻ | Late |
| 80 | 1.1.1.1.1.3.1.1.3 | Finalized plan for SCUSA RAS short-term remediation | milestone | 0d | 2015-06-05 | 2015-06-05 | 255d | finish no earlier than 2015-06-05 | ܁ࢻ | Late |

| ID | WBS | Task | Type | Duration | Start | Finish | Total slack | Constraint | Entity | Tracking Status |
| --- | --- | --- | --- | --- | --- | --- | --- | --- | --- | --- |
| 81 | 1.1.1.1.1.3.1.2 | **Implement remediations in the form of updated key limits** |  | 15d | 2015-06-08 | 2015-06-26 | 240d |  | ܁ࢻ |  |
| 82 | 1.1.1.1.1.3.1.2.1 | Redefine SCUSA liquidity limit |  | 5d | 2015-06-08 | 2015-06-12 | 250d | finish no earlier than 2015-06-12 | ܁ࢻ | Late |
| 83 | 1.1.1.1.1.3.1.2.2 | Redefine SCUSA RWA limit |  | 5d | 2015-06-08 | 2015-06-12 | 250d | finish no earlier than 2015-06-12 | ܁ࢻ | Late |
| 84 | 1.1.1.1.1.3.1.2.3 | Redefine SCUSA total asset limit |  | 5d | 2015-06-08 | 2015-06-12 | 250d | finish no earlier than 2015-06-12 | ܁ࢻ | Late |
| 85 | 1.1.1.1.1.3.1.2.4 | Socialize updated limits and all proposed remediations to SCUSA RAS |  | 5d | 2015-06-15 | 2015-06-19 | 245d | finish no earlier than 2015-06-19 | ܁ࢻ | Late |
| 86 | 1.1.1.1.1.3.1.2.5 | Update SCUSA RAS based on agreed upon remediations |  | 5d | 2015-06-22 | 2015-06-26 | 240d | finish no earlier than 2015-06-26 | ܁ࢻ | Late |
| 87 | 1.1.1.1.1.3.1.2.6 | Finalized SCUSA RAS (for short-term use) | milestone | 0d | 2015-06-26 | 2015-06-26 | 240d | finish no earlier than 2015-06-26 | ܁ࢻ | Late |
| 88 | 1.1.1.1.1.3.2 | **Definition of approach for cascading SHUSA-level RAS to subsidiaries and levels below** |  | 10d | 2015-08-03 | 2015-08-14 | 205d |  |  |  |
| 89 | 1.1.1.1.1.3.2.1 | **Document approach for cascading SHUSA-level RAS to subsidiaries and levels below** |  | 10d | 2015-08-03 | 2015-08-14 | 205d |  |  |  |
| 90 | 1.1.1.1.1.3.2.1.1 | Determine organizational levels to which cascading is appropriate and draft planned approach |  | 5d | 2015-08-03 | 2015-08-07 | 210d | finish no earlier than 2015-08-07 |  | Late |
| 91 | 1.1.1.1.1.3.2.1.2 | Facilitate review and challenge sessions for cascading approach with stakeholders (SHUSA, SBNA, SCUSA) |  | 3d | 2015-08-10 | 2015-08-12 | 207d | finish no earlier than 2015-08-12 |  | Late |
| 92 | 1.1.1.1.1.3.2.1.3 | Update documentation for cascading approach, given stakeholder input |  | 3d | 2015-08-12 | 2015-08-14 | 205d | finish no earlier than 2015-08-14 |  | Late |
| 93 | 1.1.1.1.1.3.2.1.4 | Finalized plan for cascading SHUSA-level RAS to subsidiaries and levels below | milestone | 0d | 2015-08-14 | 2015-08-14 | 205d | finish no earlier than 2015-08-14 |  | Late |
| 94 | 1.1.1.1.1.3.3 | **RAS for priority subsidiaries SBNA & SCUSA – follow similar process as SHUSA** |  | 138d | 2015-08-17 | 2016-02-24 | 67d |  |  |  |
| 95 | 1.1.1.1.1.3.3.1 | **Detail material risks specific to SBNA and SCUSA (leveraging SHUSA-level list, but making additions as necessary)** |  | 10d | 2015-08-17 | 2015-08-28 | 195d |  |  |  |
| 96 | 1.1.1.1.1.3.3.1.1 | Identify and document subsidiary-specific risks and constraints, including those not captured in SHUSA-level RAS |  | 5d | 2015-08-17 | 2015-08-21 | 200d | finish no earlier than 2015-08-21 |  | Late |
| 97 | 1.1.1.1.1.3.3.1.2 | Identify and document constraints from Group, regulators and other stakeholders (i.e. ratings agencies) |  | 5d | 2015-08-17 | 2015-08-21 | 200d | finish no earlier than 2015-08-21 |  | Late |
| 98 | 1.1.1.1.1.3.3.1.3 | Facilitate review and challenge session for list of material risks with key stakeholders (SHUSA, SBNA, SCUSA) |  | 3d | 2015-08-24 | 2015-08-26 | 197d | finish no earlier than 2015-08-26 |  | Late |
| 99 | 1.1.1.1.1.3.3.1.4 | Update documentation of subsidiary-specific risks and constraints, given stakeholder input |  | 2d | 2015-08-27 | 2015-08-28 | 195d | finish no earlier than 2015-08-28 |  | Late |
| 100 | 1.1.1.1.1.3.3.1.5 | Finalized documentation of material risks and constraints specific to priority subsidiaries | milestone | 0d | 2015-08-17 | 2015-08-17 | 204d | finish no earlier than 2015-08-17 |  | Late |
| 101 | 1.1.1.1.1.3.3.2 | **For each risk, determine a qualitative risk appetite statement (leveraging SHUSA-level RAS)** |  | 15d | 2015-08-31 | 2015-09-18 | 180d |  |  |  |
| 102 | 1.1.1.1.1.3.3.2.1 | Determine SHUSA-level RAS statements relevant to subsidiaries |  | 3d | 2015-08-31 | 2015-09-02 | 192d | finish no earlier than 2015-09-02 |  | Late |
| 103 | 1.1.1.1.1.3.3.2.2 | Detail statements for material risks specific to the subsidiary, not captured in SHUSA-level RAS |  | 7d | 2015-09-03 | 2015-09-11 | 185d | finish no earlier than 2015-09-11 |  | Late |
| 104 | 1.1.1.1.1.3.3.2.3 | Consolidate into subsidiary specific-list of statements (leverage existing work) |  | 3d | 2015-09-14 | 2015-09-16 | 182d | finish no earlier than 2015-09-16 |  | Late |
| 105 | 1.1.1.1.1.3.3.2.4 | Socialize SBNA and SCUSA qualitative statements with key stakeholders (SHUSA, SBNA, SCUSA) |  | 2d | 2015-09-17 | 2015-09-18 | 180d | finish no earlier than 2015-09-18 |  | Late |
| 106 | 1.1.1.1.1.3.3.2.5 | Finalized qualitative risk appetite statements for subsidiary-specific risks | milestone | 0d | 2015-09-18 | 2015-09-18 | 180d | finish no earlier than 2015-09-18 |  | Late |

| ID | WBS | Task | Type | Duration | Start | Finish | Total slack | Constraint | Tracking Status | Entity |
| --- | --- | --- | --- | --- | --- | --- | --- | --- | --- | --- |
| 107 | 1.1.1.1.1.3.3.3 | **For quantifiable statements, identify key metrics and calibrate limits (leveraging SHUSA-level RAS)** |  | 40d | 2015-09-14 | 2015-11-06 | 145d |  |  |  |
| 108 | 1.1.1.1.1.3.3.3.1 | Determine SHUSA-level RAS metrics relevant to subsidiaries |  | 3d | 2015-09-14 | 2015-09-16 | 182d | finish no earlier than 2015-09-16 | Late |  |
| 109 | 1.1.1.1.1.3.3.3.2 | Identify metrics for material risks specific to the subsidiary, not captured in SHUSA-level RAS, and compile in list with relevant metrics from SHUSA-level RAS |  | 2d | 2015-09-17 | 2015-09-18 | 180d | finish no earlier than 2015-09-18 | Late |  |
| 110 | 1.1.1.1.1.3.3.3.3 | Facilitate review and challenge session for proposed metrics, limits and thresholds with key stakeholders (SHUSA, SBNA, SCUSA) |  | 1d | 2015-09-28 | 2015-09-28 | 174d | finish no earlier than 2015-09-28 | Late |  |
| 111 | 1.1.1.1.1.3.3.3.4 | Update list of subsidiary-specific metrics, given stakeholder input, and identify and document owners for each metric |  | 4d | 2015-09-29 | 2015-10-02 | 170d | finish no earlier than 2015-10-02 | Late |  |
| 112 | 1.1.1.1.1.3.3.3.5 | Detail limits and thresholds for list of subsidiary-specific metrics |  | 5d | 2015-09-21 | 2015-09-25 | 175d | finish no earlier than 2015-09-25 | Late |  |
| 113 | 1.1.1.1.1.3.3.3.6 | Calibrate limits for subsidiary risks, ensure subsidiary-level limits align to SHUSA-level limits |  | 30d | 2015-09-21 | 2015-10-30 | 150d | finish no earlier than 2015-10-30 | Late |  |
| 114 | 1.1.1.1.1.3.3.3.7 | Document rationale for SHUSA metrics |  | 5d | 2015-09-21 | 2015-09-25 | 175d | finish no earlier than 2015-09-25 | Late | ܁ࢹ |
| 115 | 1.1.1.1.1.3.3.3.8 | Document IT requirements for SHUSA metrics |  | 15d | 2015-09-14 | 2015-10-02 | 170d | finish no earlier than 2015-10-02 | Late | ܁ࢹ |
| 116 | 1.1.1.1.1.3.3.3.9 | Consolidate metrics, limits and thresholds into quantifiable statements for subsidiary-specific risks |  | 3d | 2015-11-02 | 2015-11-04 | 147d | finish no earlier than 2015-11-04 | Late |  |
| 117 | 1.1.1.1.1.3.3.3.10 | Socialize SBNA and SCUSA quantitative statements with stakeholders (SHUSA, SBNA, SCUSA) |  | 2d | 2015-11-05 | 2015-11-06 | 145d | finish no earlier than 2015-11-06 | Late |  |
| 118 | 1.1.1.1.1.3.3.3.11 | Finalized quantitative risk appetite statements for subsidiary-specific risks | milestone | 0d | 2015-11-06 | 2015-11-06 | 145d | finish no earlier than 2015-11-06 | Late |  |
| 119 | 1.1.1.1.1.3.3.4 | **Consolidate qualitative and quantitative statements into SBNA RAS and SCUSA RAS and socialize with stakeholders** |  | 10d | 2015-11-09 | 2015-11-20 | 135d |  |  |  |
| 120 | 1.1.1.1.1.3.3.4.1 | Draft SBNA RAS and SCUSA RAS |  | 5d | 2015-11-09 | 2015-11-13 | 140d | finish no earlier than 2015-11-13 | Late |  |
| 121 | 1.1.1.1.1.3.3.4.2 | Socialize SBNA RAS and SCUSA RAS with stakeholders (SHUSA, SBNA, SCUSA) |  | 5d | 2015-11-16 | 2015-11-20 | 135d | finish no earlier than 2015-11-20 | Late |  |
| 122 | 1.1.1.1.1.3.3.4.3 | Final drafts of SBNA RAS and SCUSA RAS | milestone | 0d | 2015-11-20 | 2015-11-20 | 135d | finish no earlier than 2015-11-20 | Late |  |
| 123 | 1.1.1.1.1.3.3.5 | **Secure Board approval of RAS for priority subsidiaries** |  | 30d | 2015-11-20 | 2015-12-31 | 106d |  |  |  |
| 124 | 1.1.1.1.1.3.3.5.1 | 6-week buffer for governance process |  | 30d | 2015-11-20 | 2015-12-31 | 106d | finish no earlier than 2015-12-31 | Late |  |
| 125 | 1.1.1.1.1.3.3.5.2 | Board-approved SHUSA-level RAS | milestone | 0d | 2015-12-31 | 2015-12-31 | 106d | finish no earlier than 2015-12-31 | Late |  |
| 126 | 1.1.1.1.1.3.3.6 | **Communicate SHUSA, SBNA, and SCUSA RAS to enterprise** |  | 40d | 2015-12-31 | 2016-02-24 | 67d |  |  |  |
| 127 | 1.1.1.1.1.3.3.6.1 | Create communication materials to aid in socialization process |  | 10d | 2015-12-31 | 2016-01-13 | 97d | finish no earlier than 2016-01-13 | Late |  |
| 128 | 1.1.1.1.1.3.3.6.2 | Facilitate training, town halls, etc. to communicate RAS to enterprise |  | 30d | 2016-01-14 | 2016-02-24 | 67d | finish no earlier than 2016-02-24 | Late |  |
| 129 | 1.1.1.1.1.3.3.6.3 | Completed formal communication process to enterprise | milestone | 0d | 2016-02-24 | 2016-02-24 | 67d | finish no earlier than 2016-02-24 | Late |  |
| 130 | 1.1.1.1.1.3.4 | **RAS for remainder of subsidiaries and select BUs** |  | 85d | 2016-02-01 | 2016-05-27 | 0d |  |  |  |
| 131 | 1.1.1.1.1.3.4.1 | Same cascading process as above |  | 17w | 2016-02-01 | 2016-05-27 | 0d | finish no earlier than 2016-05-27 | Late |  |

| ID | WBS | Task | Type | Duration | Start | Finish | Predecessors | Total slack | Free slack | Constraint | Entity | Tracking Status |
| --- | --- | --- | --- | --- | --- | --- | --- | --- | --- | --- | --- | --- |
| 132 | 1.1.1.1.1.4 | **Embedded RAS in material processes across the enterprise** |  | 106d | 2015-08-17 | 2016-01-11 |  | 99d |  |  |  |  |
| 133 | 1.1.1.1.1.4.1 | **Initialized embedding of RAS in material processes** |  | 75d | 2015-08-17 | 2015-11-27 |  | 130d |  |  |  |  |
| 134 | 1.1.1.1.1.4.1.1 | **Test strategic plan against SHUSA-level RAS** |  | 15d | 2015-08-17 | 2015-09-04 |  | 190d |  |  |  |  |
| 135 | 1.1.1.1.1.4.1.1.1 | Compare draft of SHUSA-level RAS against draft of strategic plan |  | 5d | 2015-08-17 | 2015-08-21 |  | 200d |  | finish no earlier than 2015-08-21 | ܁ࢹ | Late |
| 136 | 1.1.1.1.1.4.1.1.2 | Identify gaps and adjust strategic plan as necessary |  | 5d | 2015-08-24 | 2015-08-28 |  | 195d |  | finish no earlier than 2015-08-28 | ܁ࢹ | Late |
| 137 | 1.1.1.1.1.4.1.1.3 | Socialize with key stakeholders (SHUSA, SBNA, SCUSA) |  | 5d | 2015-08-31 | 2015-09-04 |  | 190d |  | finish no earlier than 2015-09-04 |  | Late |
| 138 | 1.1.1.1.1.4.1.1.4 | Updated strategic plan, aligned with SHUSA-level RAS | milestone | 0d | 2015-09-04 | 2015-09-04 |  | 190d |  | finish no earlier than 2015-09-04 |  | Late |
| 139 | 1.1.1.1.1.4.1.2 | **Update process maps for key processes with explicit RAS links** |  | 20d | 2015-11-02 | 2015-11-27 |  | 130d |  |  |  |  |
| 140 | 1.1.1.1.1.4.1.2.1 | Identify processes that should be explicitly linked to RAS (e.g. strategic planning, capital planning) |  | 5d | 2015-11-02 | 2015-11-06 |  | 145d |  | finish no earlier than 2015-11-06 |  | Late |
| 141 | 1.1.1.1.1.4.1.2.2 | Detail nature of process linkage, including alignment to statements, metrics and limits described in the RAS |  | 5d | 2015-11-02 | 2015-11-06 |  | 145d |  | finish no earlier than 2015-11-06 |  | Late |
| 142 | 1.1.1.1.1.4.1.2.3 | Assess degree to which RAS considerations are already embedded in key processes |  | 5d | 2015-11-02 | 2015-11-06 |  | 145d |  | finish no earlier than 2015-11-06 |  | Late |
| 143 | 1.1.1.1.1.4.1.2.4 | Identify gaps and update key process maps accordingly |  | 15d | 2015-11-09 | 2015-11-27 |  | 130d |  | finish no earlier than 2015-11-27 |  | Late |
| 144 | 1.1.1.1.1.4.1.2.5 | Updated process maps for key processes | milestone | 0d | 2015-11-27 | 2015-11-27 |  | 130d |  | finish no earlier than 2015-11-27 |  | Late |
| 145 | 1.1.1.1.1.4.2 | **Plan implementation of RAS in all material processes** |  | 31d | 2015-11-30 | 2016-01-11 |  | 99d |  |  |  |  |
| 146 | 1.1.1.1.1.4.2.1 | Detail plan for implementation of RAS in material processes (e.g. new product and business activity approval process) |  | 20d | 2015-11-30 | 2015-12-25 |  | 110d |  | finish no earlier than 2015-12-25 |  | Late |
| 147 | 1.1.1.1.1.4.2.2 | Detail processes/controls to ensure that RAS is being further integrated into all processes until BAU |  | 10d | 2015-12-28 | 2016-01-08 |  | 100d |  | finish no earlier than 2016-01-08 |  | Late |
| 148 | 1.1.1.1.1.4.2.3 | Completed plan for implementation in material processes | milestone | 0d | 2016-01-11 | 2016-01-11 |  | 99d |  | finish no earlier than 2016-01-11 |  | Late |
| 149 | 1.1.1.2 | **Risk Governance and Organization** |  | 441d | 2014-09-19 | 2016-05-27 |  | 0d |  |  |  | Late |
| 150 | 1.1.1.2.1 | **Board and Management Committee Oversight** |  | 441d | 2014-09-19 | 2016-05-27 |  | 0d |  |  |  | Late |
| 151 | 1.1.1.2.1.1 | **Strengthen Board and Management Committee Oversight Deliverables** |  | 0d | 2014-09-19 | 2014-09-19 |  | 441d |  |  |  | Late |
| 152 | 1.1.1.2.1.1.1 | example deliverable (linked to the detail below) | milestone | 0d | 2014-09-19 | 2014-09-19 |  | 441d |  |  |  | Late |
| 153 | 1.1.1.2.1.2 | Diagnostic of Risk Mgt. Committee effectiveness |  | 15d | 2014-09-19 | 2014-10-09 |  | 406d | 0d |  |  | Late |
| 154 | 1.1.1.2.1.3 | Delivery of Board Training (session 1) |  | 20d | 2015-06-22 | 2015-07-17 |  | 130d | 0d | finish no earlier than 2015-07-17 |  | Late |
| 155 | 1.1.1.2.1.4 | Board risk training curriculum and schedule |  | 25d | 2016-04-25 | 2016-05-27 | 156SF | 0d |  | as late as possible |  | Late |
| 156 | 1.1.1.2.1.5 | Delivery of Board Training (session 2) |  | 15d | 2015-08-10 | 2015-08-28 |  | 195d |  | finish no earlier than 2015-08-28 |  | Late |
| 157 | 1.1.1.2.1.6 | Governance and coordination mechanisms between SHUSA and parent |  | 20d | 2014-10-10 | 2014-11-06 | 153 | 406d |  |  |  | Late |
| 158 | 1.1.1.2.1.7 | Definition of composition / mandates / charters for BERC and Level 1 Risk Committees |  | 45d | 2015-07-20 | 2015-09-18 | 154 | 130d | 0d |  |  | Late |
| 159 | 1.1.1.2.1.8 | Definition of composition / mandates / charters for Level 2 Risk Committees |  | 45d | 2015-08-31 | 2015-10-30 | 158FS-15d | 130d | 0d |  |  | Late |
| 160 | 1.1.1.2.1.9 | High level assessment and remediation of performance scorecards |  | 20d | 2015-11-02 | 2015-11-27 | 159 | 130d |  |  |  | Late |

Notes:
- 152: Description of Deliverable

| ID | WBS | Task | Type | Duration | Start | Finish | Predecessors | Total slack | Free slack | Deadline | Tracking Status |
| --- | --- | --- | --- | --- | --- | --- | --- | --- | --- | --- | --- |
| 161 | 1.1.1.2.2 | **Target Operating Model** |  | 255d | 2014-09-19 | 2015-09-10 |  | 62d |  |  | Late |
| 162 | 1.1.1.2.2.1 | **Target Operating Model Deliverables** |  | 0d | 2014-09-19 | 2014-09-19 |  | 441d |  |  | Late |
| 163 | 1.1.1.2.2.1.1 | example deliverable (linked to the detail below) | milestone | 0d | 2014-09-19 | 2014-09-19 |  | 441d |  |  | Late |
| 164 | 1.1.1.2.2.2 | **Update High-level risk leadership structure** |  | 25d | 2014-09-19 | 2014-10-23 |  | 416d |  |  | Late |
| 165 | 1.1.1.2.2.2.1 | Formalize subsidiary CRO reporting lines, socialize and refine solution |  | 10d | 2014-09-19 | 2014-10-02 |  | 426d | 0d |  | Late |
| 166 | 1.1.1.2.2.2.2 | Define implications of reporting lines (Performance assessment, hiring/firing authority) |  | 10d | 2014-09-26 | 2014-10-09 | 165FS-5d | 426d |  |  | Late |
| 167 | 1.1.1.2.2.2.3 | Design High-level risk organization structure including the role of RCO |  | 25d | 2014-09-19 | 2014-10-23 |  | 416d |  |  | Late |
| 168 | 1.1.1.2.2.3 | **Design Target Operating Model by risk type** |  | 255d | 2014-09-19 | 2015-09-10 |  | 62d |  |  | Late |
| 169 | 1.1.1.2.2.3.1 | Review of existing 1st LoD capabilities |  | 20d | 2014-09-19 | 2014-10-16 |  | 62d | 0d |  | Late |
| 170 | 1.1.1.2.2.3.2 | **Risk Data Aggregation** |  | 70d | 2014-09-19 | 2014-12-25 |  | 72d |  |  | Late |
| 171 | 1.1.1.2.2.3.2.1 | Refining frameworks |  | 15d | 2014-09-19 | 2014-10-09 |  | 72d | 0d |  | Late |
| 172 | 1.1.1.2.2.3.2.2 | Org. Structure and Talent Assessment |  | 30d | 2014-10-10 | 2014-11-20 | 171 | 177d | 0d |  | Late |
| 173 | 1.1.1.2.2.3.2.3 | Implementation Planning |  | 25d | 2014-11-21 | 2014-12-25 | 172 | 177d | 0d |  | Late |
| 174 | 1.1.1.2.2.3.2.4 | MILESTONE | milestone | 0d | 2014-12-25 | 2014-12-25 | 173 | 177d |  | 2015-08-31 | Late |
| 175 | 1.1.1.2.2.3.3 | **Enterprise Risk Management** |  | 55d | 2014-10-03 | 2014-12-18 |  | 62d |  |  | Late |
| 176 | 1.1.1.2.2.3.3.1 | Refining frameworks |  | 10d | 2014-10-03 | 2014-10-16 | 169SS+10d | 62d | 0d |  | Late |
| 177 | 1.1.1.2.2.3.3.2 | Org. Structure and Talent Assessment |  | 20d | 2014-10-17 | 2014-11-13 | 176 | 182d | 0d |  | Late |
| 178 | 1.1.1.2.2.3.3.3 | Implementation Planning |  | 25d | 2014-11-14 | 2014-12-18 | 177 | 182d | 0d |  | Late |
| 179 | 1.1.1.2.2.3.3.4 | MILESTONE | milestone | 0d | 2014-12-18 | 2014-12-18 | 178 | 182d |  | 2015-08-31 | Late |
| 180 | 1.1.1.2.2.3.4 | **Market and liquidity risk** |  | 55d | 2014-10-03 | 2014-12-18 |  | 62d |  |  | Late |
| 181 | 1.1.1.2.2.3.4.1 | Refining frameworks |  | 10d | 2014-10-03 | 2014-10-16 | 171SS, 176SS | 62d | 0d |  | Late |
| 182 | 1.1.1.2.2.3.4.2 | Org. Structure and Talent Assessment |  | 20d | 2014-10-17 | 2014-11-13 | 181 | 62d | 0d |  | Late |
| 183 | 1.1.1.2.2.3.4.3 | Implementation Planning |  | 25d | 2014-11-14 | 2014-12-18 | 182 | 62d | 0d |  | Late |
| 184 | 1.1.1.2.2.3.4.4 | MILESTONE | milestone | 0d | 2014-12-18 | 2014-12-18 | 183 | 182d |  | 2015-08-31 | Late |

Notes:
- 163: Description of Deliverable

| ID | WBS | Task | Type | Duration | Start | Finish | Predecessors | Total slack | Free slack | Deadline | Tracking Status |
| --- | --- | --- | --- | --- | --- | --- | --- | --- | --- | --- | --- |
| 185 | 1.1.1.2.2.3.5 | **Credit Risk** |  | 70d | 2014-12-12 | 2015-03-19 |  | 62d |  |  | Late |
| 186 | 1.1.1.2.2.3.5.1 | Refining frameworks |  | 15d | 2014-12-12 | 2015-01-01 | 183FS-5d | 62d | 0d |  | Late |
| 187 | 1.1.1.2.2.3.5.2 | Org. Structure and Talent Assessment |  | 30d | 2015-01-02 | 2015-02-12 | 186 | 117d | 0d |  | Late |
| 188 | 1.1.1.2.2.3.5.3 | Implementation Planning |  | 25d | 2015-02-13 | 2015-03-19 | 187 | 117d | 0d |  | Late |
| 189 | 1.1.1.2.2.3.5.4 | MILESTONE | milestone | 0d | 2015-03-19 | 2015-03-19 | 188 | 117d |  | 2015-08-31 | Late |
| 190 | 1.1.1.2.2.3.6 | **Compliance Risk** |  | 75d | 2014-12-12 | 2015-03-26 |  | 62d |  |  | Late |
| 191 | 1.1.1.2.2.3.6.1 | Refining frameworks |  | 20d | 2014-12-12 | 2015-01-08 | 186SS | 62d | 0d |  | Late |
| 192 | 1.1.1.2.2.3.6.2 | Org. Structure and Talent Assessment |  | 30d | 2015-01-09 | 2015-02-19 | 191 | 62d | 0d |  | Late |
| 193 | 1.1.1.2.2.3.6.3 | Implementation Planning |  | 25d | 2015-02-20 | 2015-03-26 | 192 | 62d | 0d |  | Late |
| 194 | 1.1.1.2.2.3.6.4 | MILESTONE | milestone | 0d | 2015-03-26 | 2015-03-26 | 193 | 112d |  | 2015-08-31 | Late |
| 195 | 1.1.1.2.2.3.7 | **Capital Risk** |  | 120d | 2014-12-19 | 2015-06-04 |  | 62d |  |  | Late |
| 196 | 1.1.1.2.2.3.7.1 | Refining frameworks |  | 15d | 2014-12-19 | 2015-01-08 | 191SS+5d | 117d | 0d |  | Late |
| 197 | 1.1.1.2.2.3.7.2 | Org. Structure and Talent Assessment |  | 25d | 2015-03-27 | 2015-04-30 | 193, 196 | 62d | 0d |  | Late |
| 198 | 1.1.1.2.2.3.7.3 | Implementation Planning |  | 25d | 2015-05-01 | 2015-06-04 | 197 | 62d | 0d |  | Late |
| 199 | 1.1.1.2.2.3.7.4 | MILESTONE | milestone | 0d | 2015-06-04 | 2015-06-04 | 198 | 62d |  | 2015-08-31 | Late |
| 200 | 1.1.1.2.2.3.8 | **Strategic Risk** |  | 120d | 2014-12-19 | 2015-06-04 |  | 62d |  |  | Late |
| 201 | 1.1.1.2.2.3.8.1 | Refining frameworks |  | 15d | 2014-12-19 | 2015-01-08 | 196SS | 117d | 0d |  | Late |
| 202 | 1.1.1.2.2.3.8.2 | Org. Structure and Talent Assessment |  | 25d | 2015-03-27 | 2015-04-30 | 193, 201 | 62d | 0d |  | Late |
| 203 | 1.1.1.2.2.3.8.3 | Implementation Planning |  | 25d | 2015-05-01 | 2015-06-04 | 202 | 62d | 0d |  | Late |
| 204 | 1.1.1.2.2.3.8.4 | MILESTONE | milestone | 0d | 2015-06-04 | 2015-06-04 | 203 | 62d |  | 2015-08-31 | Late |
| 205 | 1.1.1.2.2.3.9 | **RAS Framework** |  | 190d | 2014-12-19 | 2015-09-10 |  | 147d |  |  | Late |
| 206 | 1.1.1.2.2.3.9.1 | Refining frameworks |  | 10d | 2014-12-19 | 2015-01-01 | 201SS | 147d | 0d |  | Late |
| 207 | 1.1.1.2.2.3.9.2 | Org. Structure and Talent Assessment |  | 10d | 2015-01-02 | 2015-01-15 | 206 | 147d | 0d |  | Late |
| 208 | 1.1.1.2.2.3.9.3 | Implementation Planning |  | 15d | 2015-01-16 | 2015-02-05 | 207 | 147d | 0d |  | Late |
| 209 | 1.1.1.2.2.3.9.4 | MILESTONE | milestone | 0d | 2015-02-05 | 2015-02-05 | 208 | 147d |  | 2015-08-31 | Late |
| 210 | 1.1.1.2.2.3.9.5 | Post Implementation Review (First Round) |  | 30d | 2015-03-27 | 2015-05-07 | 193 | 186d | 0d |  | Late |
| 211 | 1.1.1.2.2.3.9.6 | Post Implementation Review (Second Round) |  | 35d | 2015-07-24 | 2015-09-10 | 210FS+55d | 186d |  |  | Late |
| 212 | 1.1.1.2.2.3.9.7 | Strong and desired culture |  | 35d | 2015-06-05 | 2015-07-23 | 203 | 221d |  |  | Late |

| ID | WBS | Task | Type | Duration | Start | Finish | Predecessors | Total slack | Constraint | Resources | Work | Tracking Status | Entity |
| --- | --- | --- | --- | --- | --- | --- | --- | --- | --- | --- | --- | --- | --- |
| 213 | 1.1.1.3 | **Risk Measurement** |  | 141d | 2015-05-28 | 2015-12-10 |  | 0d |  |  | 6080h | Late |  |
| 214 | 1.1.1.3.1 | **Risk Measurement** |  | 141d | 2015-05-28 | 2015-12-10 |  | 0d |  |  | 6080h |  |  |
| 215 | 1.1.1.3.1.1 | **Risk Measurement Deliverables** |  | 97d | 2015-07-28 | 2015-12-10 |  | 122d |  |  |  |  |  |
| 216 | 1.1.1.3.1.1.1 | Business Entity Material Risk Program Established for SHUSA | milestone | 0d | 2015-12-10 | 2015-12-10 | 293 | 122d |  |  |  | Late | ܁ࢹ |
| 217 | 1.1.1.3.1.1.2 | Business Entity Material Risk Program Established for SBNA | milestone | 0d | 2015-07-28 | 2015-07-28 | 331 | 219d |  |  |  | Late | ܁ࢺ |
| 218 | 1.1.1.3.1.1.3 | Business Entity Material Risk Program Established for SCUSA | milestone | 0d | 2015-07-28 | 2015-07-28 | 372 | 219d |  |  |  | Late | ܁ࢻ |
| 219 | 1.1.1.3.1.1.4 | Business Entity Material Risk Program Established for New York(SIS) | milestone | 0d | 2015-07-28 | 2015-07-28 | 413 | 219d |  |  |  | Late | ܁ࣅ |
| 220 | 1.1.1.3.1.1.5 | Business Entity Material Risk Program Established for Puerto Rico | milestone | 0d | 2015-07-28 | 2015-07-28 | 454 | 219d |  |  |  | Late | ܁ࢾ |
| 221 | 1.1.1.3.1.1.6 | Business Entity Material Risk Program Established for Miami | milestone | 0d | 2015-07-28 | 2015-07-28 | 495 | 219d |  |  |  | Late | ܁ࣄ |
| 222 | 1.1.1.3.1.2 | **SHUSA - Business Entity Material Risk Program** |  | 45d | 2015-09-01 | 2015-10-31 |  |  |  | David Mael | 360h |  | ܁ࢹ |
| 223 | 1.1.1.3.1.2.1 | **Preparation for Aggregation to Create SHUSA Material Risk Inventory** |  | 11d | 2015-09-01 | 2015-09-15 |  |  |  |  |  |  | ܁ࢹ |
| 224 | 1.1.1.3.1.2.1.1 | ERM Collects Risk Inventories from Entity Risk Managers |  | 6d? | 2015-09-01 | 2015-09-08 |  | 188d | finish no earlier than 2015-09-08 |  |  | Late | ܁ࢹ |
| 225 | 1.1.1.3.1.2.1.2 | ERM Sorts risks and groups by Risk Type |  | 6d? | 2015-09-01 | 2015-09-08 |  | 188d | finish no earlier than 2015-09-08 |  |  | Late | ܁ࢹ |
| 226 | 1.1.1.3.1.2.1.3 | ERM Creates pre-Workshop, pre-read Materials and instructions for SHUSA Risk Managers |  | 6d? | 2015-09-01 | 2015-09-08 |  | 188d | finish no earlier than 2015-09-08 |  |  | Late | ܁ࢹ |
| 227 | 1.1.1.3.1.2.1.4 | ERM Distributes Workshop Materials to Responsible parties |  | 2d? | 2015-09-08 | 2015-09-09 |  | 187d | finish no earlier than 2015-09-09 |  |  | Late | ܁ࢹ |
| 228 | 1.1.1.3.1.2.1.5 | Aggregation to Create SHUSA Material Risk Inventory Prepared | milestone | 0d | 2015-09-15 | 2015-09-15 |  | 184d | start no earlier than 2015-09-15 |  |  | Late | ܁ࢹ |
| 229 | 1.1.1.3.1.2.2 | **SHUSA Aggregation Workshops** |  | 13d | 2015-09-09 | 2015-09-25 |  |  |  |  |  |  | ܁ࢹ |
| 230 | 1.1.1.3.1.2.2.1 | **Credit Risk Material Risk Aggregation** |  | 13d | 2015-09-09 | 2015-09-25 |  |  |  |  |  |  | ܁ࢹ |
| 231 | 1.1.1.3.1.2.2.1.1 | Credit Risk performs pre-Read and analysis |  | 5d? | 2015-09-09 | 2015-09-15 |  | 183d | finish no earlier than 2015-09-15 |  |  | Late | ܁ࢹ |
| 232 | 1.1.1.3.1.2.2.1.2 | Risk Managers Conduct Credit pre-Workshop Enrichment and Aggregation Activites |  | 5d? | 2015-09-09 | 2015-09-15 |  | 183d | finish no earlier than 2015-09-15 |  |  | Late | ܁ࢹ |
| 233 | 1.1.1.3.1.2.2.1.3 | ERM facilitates Credit Aggregation and Enrichment Workshop |  | 7d? | 2015-09-15 | 2015-09-23 |  | 177d | finish no earlier than 2015-09-23 |  |  | Late | ܁ࢹ |
| 234 | 1.1.1.3.1.2.2.1.4 | Present to Level II Subcommittees |  | 3d? | 2015-09-23 | 2015-09-25 |  | 175d | finish no earlier than 2015-09-25 |  |  | Late | ܁ࢹ |
| 235 | 1.1.1.3.1.2.2.1.5 | Credit Risk Material Risk Aggregation Prepared | milestone | 0d | 2015-09-25 | 2015-09-25 |  | 176d | start no earlier than 2015-09-25 |  |  | Late | ܁ࢹ |
| 236 | 1.1.1.3.1.2.2.2 | **Operational Risk Material Risk Aggregation** |  | 13d | 2015-09-09 | 2015-09-25 |  |  |  |  |  |  | ܁ࢹ |
| 237 | 1.1.1.3.1.2.2.2.1 | Operational Risk performs pre-Read and analysis |  | 5d? | 2015-09-09 | 2015-09-15 |  | 183d | finish no earlier than 2015-09-15 |  |  | Late | ܁ࢹ |
| 238 | 1.1.1.3.1.2.2.2.2 | Risk Managers Conduct Operational Risk pre-Workshop Enrichment and Aggregation Activites |  | 5d? | 2015-09-09 | 2015-09-15 |  | 183d | finish no earlier than 2015-09-15 |  |  | Late | ܁ࢹ |
| 239 | 1.1.1.3.1.2.2.2.3 | ERM facilitates Operational Risk Aggregation and Enrichment Workshop |  | 7d? | 2015-09-15 | 2015-09-23 |  | 177d | finish no earlier than 2015-09-23 |  |  | Late | ܁ࢹ |
| 240 | 1.1.1.3.1.2.2.2.4 | Present to Level II Subcommittees |  | 3d? | 2015-09-23 | 2015-09-25 |  | 175d | finish no earlier than 2015-09-25 |  |  | Late | ܁ࢹ |
| 241 | 1.1.1.3.1.2.2.2.5 | Operational Risk Material Risk Aggregation Prepared | milestone | 0d | 2015-09-25 | 2015-09-25 |  | 176d | start no earlier than 2015-09-25 |  |  | Late | ܁ࢹ |

| ID | WBS | Task | Type | Duration | Start | Finish | Total slack | Constraint | Entity | Tracking Status |
| --- | --- | --- | --- | --- | --- | --- | --- | --- | --- | --- |
| 242 | 1.1.1.3.1.2.2.3 | **Compliance Material Risk Aggregation** |  | 13d | 2015-09-09 | 2015-09-25 |  |  | ܁ࢹ |  |
| 243 | 1.1.1.3.1.2.2.3.1 | Compliance performs pre-Read and analysis |  | 5d? | 2015-09-09 | 2015-09-15 | 183d | finish no earlier than 2015-09-15 | ܁ࢹ | Late |
| 244 | 1.1.1.3.1.2.2.3.2 | Risk Managers Conduct Compliance pre-Workshop Enrichment and Aggregation Activites |  | 5d? | 2015-09-09 | 2015-09-15 | 183d | finish no earlier than 2015-09-15 | ܁ࢹ | Late |
| 245 | 1.1.1.3.1.2.2.3.3 | ERM facilitates Compliance Aggregation and Enrichment Workshop |  | 7d? | 2015-09-15 | 2015-09-23 | 177d | finish no earlier than 2015-09-23 | ܁ࢹ | Late |
| 246 | 1.1.1.3.1.2.2.3.4 | Present to Level II Subcommittees |  | 3d? | 2015-09-23 | 2015-09-25 | 175d | finish no earlier than 2015-09-25 | ܁ࢹ | Late |
| 247 | 1.1.1.3.1.2.2.3.5 | Compliance Material Risk Aggregation Prepared | milestone | 0d | 2015-09-25 | 2015-09-25 | 176d | start no earlier than 2015-09-25 | ܁ࢹ | Late |
| 248 | 1.1.1.3.1.2.2.4 | **Model Material Risk Aggregation** |  | 13d | 2015-09-09 | 2015-09-25 |  |  | ܁ࢹ |  |
| 249 | 1.1.1.3.1.2.2.4.1 | Model Risk performs pre-Read and analysis |  | 5d? | 2015-09-09 | 2015-09-15 | 183d | finish no earlier than 2015-09-15 | ܁ࢹ | Late |
| 250 | 1.1.1.3.1.2.2.4.2 | Risk Managers Conduct Model pre-Workshop Enrichment and Aggregation Activites |  | 5d? | 2015-09-09 | 2015-09-15 | 183d | finish no earlier than 2015-09-15 | ܁ࢹ | Late |
| 251 | 1.1.1.3.1.2.2.4.3 | ERM facilitates Model Aggregation and Enrichment Workshop |  | 7d? | 2015-09-15 | 2015-09-23 | 177d | finish no earlier than 2015-09-23 | ܁ࢹ | Late |
| 252 | 1.1.1.3.1.2.2.4.4 | Present to Level II Subcommittees |  | 3d? | 2015-09-23 | 2015-09-25 | 175d | finish no earlier than 2015-09-25 | ܁ࢹ | Late |
| 253 | 1.1.1.3.1.2.2.4.5 | Model Material Risk Aggregation Prepared | milestone | 0d | 2015-09-25 | 2015-09-25 | 176d | start no earlier than 2015-09-25 | ܁ࢹ | Late |
| 254 | 1.1.1.3.1.2.2.5 | **Market Material Risk Aggregation** |  | 13d | 2015-09-09 | 2015-09-25 |  |  | ܁ࢹ |  |
| 255 | 1.1.1.3.1.2.2.5.1 | Market Risk performs pre-Read and analysis |  | 5d? | 2015-09-09 | 2015-09-15 | 183d | finish no earlier than 2015-09-15 | ܁ࢹ | Late |
| 256 | 1.1.1.3.1.2.2.5.2 | Risk Managers Conduct Market pre-Workshop Enrichment and Aggregation Activites |  | 5d? | 2015-09-09 | 2015-09-15 | 183d | finish no earlier than 2015-09-15 | ܁ࢹ | Late |
| 257 | 1.1.1.3.1.2.2.5.3 | ERM facilitates Market Aggregation and Enrichment Workshop |  | 7d? | 2015-09-15 | 2015-09-23 | 177d | finish no earlier than 2015-09-23 | ܁ࢹ | Late |
| 258 | 1.1.1.3.1.2.2.5.4 | Present to Level II Subcommittees |  | 3d? | 2015-09-23 | 2015-09-25 | 175d | finish no earlier than 2015-09-25 | ܁ࢹ | Late |
| 259 | 1.1.1.3.1.2.2.5.5 | Market Material Risk Aggregation Prepared | milestone | 0d | 2015-09-25 | 2015-09-25 | 176d | start no earlier than 2015-09-25 | ܁ࢹ | Late |
| 260 | 1.1.1.3.1.2.2.6 | **Liquidity Material Risk Aggregation** |  | 13d | 2015-09-09 | 2015-09-25 |  |  | ܁ࢹ |  |
| 261 | 1.1.1.3.1.2.2.6.1 | Liquidity Risk performs pre-Read and analysis |  | 5d? | 2015-09-09 | 2015-09-15 | 183d | finish no earlier than 2015-09-15 | ܁ࢹ | Late |
| 262 | 1.1.1.3.1.2.2.6.2 | Risk Managers Conduct Liquidity pre-Workshop Enrichment and Aggregation Activites |  | 5d? | 2015-09-09 | 2015-09-15 | 183d | finish no earlier than 2015-09-15 | ܁ࢹ | Late |
| 263 | 1.1.1.3.1.2.2.6.3 | ERM facilitates Liquidity Aggregation and Enrichment Workshop |  | 7d? | 2015-09-15 | 2015-09-23 | 177d | finish no earlier than 2015-09-23 | ܁ࢹ | Late |
| 264 | 1.1.1.3.1.2.2.6.4 | Present to Level II Subcommittees |  | 3d? | 2015-09-23 | 2015-09-25 | 175d | finish no earlier than 2015-09-25 | ܁ࢹ | Late |
| 265 | 1.1.1.3.1.2.2.6.5 | Liquidity Material Risk Aggregation Prepared | milestone | 0d | 2015-09-25 | 2015-09-25 | 176d | start no earlier than 2015-09-25 | ܁ࢹ | Late |

| ID | WBS | Task | Type | Duration | Start | Finish | Total slack | Free slack | Constraint | Entity | Tracking Status |
| --- | --- | --- | --- | --- | --- | --- | --- | --- | --- | --- | --- |
| 266 | 1.1.1.3.1.2.2.7 | **Strategic Material Risk Aggregation** |  | 13d | 2015-09-09 | 2015-09-25 |  |  |  | ܁ࢹ |  |
| 267 | 1.1.1.3.1.2.2.7.1 | Strategic Risk performs pre-Read and analysis |  | 5d? | 2015-09-09 | 2015-09-15 | 183d |  | finish no earlier than 2015-09-15 | ܁ࢹ | Late |
| 268 | 1.1.1.3.1.2.2.7.2 | Risk Managers Conduct Strategic pre-Workshop Enrichment and Aggregation Activites |  | 5d? | 2015-09-09 | 2015-09-15 | 183d |  | finish no earlier than 2015-09-15 | ܁ࢹ | Late |
| 269 | 1.1.1.3.1.2.2.7.3 | ERM facilitates Strategic Aggregation and Enrichment Workshop |  | 7d? | 2015-09-15 | 2015-09-23 | 177d |  | finish no earlier than 2015-09-23 | ܁ࢹ | Late |
| 270 | 1.1.1.3.1.2.2.7.4 | Present to Level II Subcommittees |  | 3d? | 2015-09-23 | 2015-09-25 | 175d |  | finish no earlier than 2015-09-25 | ܁ࢹ | Late |
| 271 | 1.1.1.3.1.2.2.7.5 | Strategic Material Risk Aggregation Prepared | milestone | 0d | 2015-09-25 | 2015-09-25 | 176d |  | start no earlier than 2015-09-25 | ܁ࢹ | Late |
| 272 | 1.1.1.3.1.2.2.8 | **Reputational Material Risk Aggregation** |  | 13d | 2015-09-09 | 2015-09-25 |  |  |  | ܁ࢹ |  |
| 273 | 1.1.1.3.1.2.2.8.1 | Reputational Risk performs pre-Read and analysis |  | 5d? | 2015-09-09 | 2015-09-15 | 183d |  | finish no earlier than 2015-09-15 | ܁ࢹ | Late |
| 274 | 1.1.1.3.1.2.2.8.2 | Risk Managers Conduct Reputational pre-Workshop Enrichment and Aggregation Activites |  | 5d? | 2015-09-09 | 2015-09-15 | 183d |  | finish no earlier than 2015-09-15 | ܁ࢹ | Late |
| 275 | 1.1.1.3.1.2.2.8.3 | ERM facilitates Reputational Aggregation and Enrichment Workshop |  | 7d? | 2015-09-15 | 2015-09-23 | 177d |  | finish no earlier than 2015-09-23 | ܁ࢹ | Late |
| 276 | 1.1.1.3.1.2.2.8.4 | Present to Level II Subcommittees |  | 3d? | 2015-09-23 | 2015-09-25 | 175d |  | finish no earlier than 2015-09-25 | ܁ࢹ | Late |
| 277 | 1.1.1.3.1.2.2.8.5 | Reputational Material Risk Aggregation Prepared | milestone | 0d | 2015-09-25 | 2015-09-25 | 176d |  | start no earlier than 2015-09-25 | ܁ࢹ | Late |
| 278 | 1.1.1.3.1.2.3 | **SHUSA Top Down Aggregation** |  | 11d | 2015-09-25 | 2015-10-09 |  |  |  | ܁ࢹ |  |
| 279 | 1.1.1.3.1.2.3.1 | ERM consolidates risks into SHUSA Inventory |  | 2d? | 2015-09-25 | 2015-09-28 | 174d |  | finish no earlier than 2015-09-28 | ܁ࢹ | Late |
| 280 | 1.1.1.3.1.2.3.2 | ERM distributes inventory to SHUSA Business and Risk executives |  | 3d? | 2015-09-28 | 2015-09-30 | 172d |  | finish no earlier than 2015-09-30 | ܁ࢹ | Late |
| 281 | 1.1.1.3.1.2.3.3 | ERM facilitates top down risk aggregation |  | 8d? | 2015-09-30 | 2015-10-09 | 165d |  | finish no earlier than 2015-10-09 | ܁ࢹ | Late |
| 282 | 1.1.1.3.1.2.3.4 | ERM incorporates final risks into SHUSA Inventory |  | 8d? | 2015-09-30 | 2015-10-09 | 165d |  | finish no earlier than 2015-10-09 | ܁ࢹ | Late |
| 283 | 1.1.1.3.1.2.3.5 | SHUSA Top Down Aggregation Prepared | milestone | 0d | 2015-10-09 | 2015-10-09 | 166d |  | start no earlier than 2015-10-09 | ܁ࢹ | Late |
| 284 | 1.1.1.3.1.2.4 | **Material Risk SHUSA Approval** |  | 16d | 2015-10-09 | 2015-10-30 |  |  |  | ܁ࢹ |  |
| 285 | 1.1.1.3.1.2.4.1 | Present SHUSA Material Risks to BERC |  | 6d? | 2015-10-09 | 2015-10-16 | 160d |  | finish no earlier than 2015-10-16 | ܁ࢹ | Late |
| 286 | 1.1.1.3.1.2.4.2 | Present SHUSA Material Risks to ERMC |  | 11d? | 2015-10-16 | 2015-10-30 | 150d |  | finish no earlier than 2015-10-30 | ܁ࢹ | Late |
| 287 | 1.1.1.3.1.2.4.3 | Present SHUSA Material Risks to CCAR |  | 1d? | 2015-10-30 | 2015-10-30 | 150d |  | start no earlier than 2015-10-30 | ܁ࢹ | Late |
| 288 | 1.1.1.3.1.2.4.4 | Material Risk SHUSA Approval | milestone | 0d | 2015-10-30 | 2015-10-30 | 151d |  | start no earlier than 2015-10-30 | ܁ࢹ | Late |
| 289 | 1.1.1.3.1.2.5 | **Risk ID and Assessment Policy** |  | 55d | 2015-09-25 | 2015-12-10 |  |  |  | ܁ࢹ |  |
| 290 | 1.1.1.3.1.2.5.1 | Risk ID and Assessment group drafts policy |  | 26d? | 2015-09-25 | 2015-10-30 | 150d |  | finish no earlier than 2015-10-30 | ܁ࢹ | Late |
| 291 | 1.1.1.3.1.2.5.2 | Risk ID and Assessment group presents draft to ERMC for approval |  | 6d? | 2015-10-30 | 2015-11-08 | 145d |  | finish no earlier than 2015-11-08 | ܁ࢹ | Late |
| 292 | 1.1.1.3.1.2.5.3 | Risk ID and Assessment group presents to Risk Committee (BERC) |  | 29d? | 2015-11-02 | 2015-12-10 | 121d |  | finish no earlier than 2015-12-10 | ܁ࢹ | Late |
| 293 | 1.1.1.3.1.2.5.4 | Risk ID and Assessment Policy | milestone | 0d | 2015-12-10 | 2015-12-10 | 122d | 0d | start no earlier than 2015-12-10 | ܁ࢹ | Late |

| ID | WBS | Task | Type | Duration | Start | Finish | Total slack | Constraint | Resources | Work | Entity | Tracking Status |
| --- | --- | --- | --- | --- | --- | --- | --- | --- | --- | --- | --- | --- |
| 294 | 1.1.1.3.1.3 | **SBNA - Business Entity Material Risk Program** |  | 68d | 2015-05-28 | 2015-08-31 |  |  | R. Alhadeff/M. Carbone | 1144h | ܁ࢺ |  |
| 295 | 1.1.1.3.1.3.1 | **SBNA Aggregation** |  | 20d | 2015-07-01 | 2015-07-28 |  |  |  |  | ܁ࢺ |  |
| 296 | 1.1.1.3.1.3.1.1 | **Credit Risk Aggregation** |  | 20d? | 2015-07-01 | 2015-07-28 |  |  |  |  | ܁ࢺ |  |
| 297 | 1.1.1.3.1.3.1.1.1 | ERM disseminates Workshop Pre-Read Materials to Risk Managers |  | 8d? | 2015-07-01 | 2015-07-10 | 230d | finish no earlier than 2015-07-10 |  |  | ܁ࢺ | Late |
| 298 | 1.1.1.3.1.3.1.1.2 | Risk Manager conducts Pre-workshop Enrichment and Aggregation activities |  | 5d? | 2015-07-13 | 2015-07-17 | 225d | finish no earlier than 2015-07-17 |  |  | ܁ࢺ | Late |
| 299 | 1.1.1.3.1.3.1.1.3 | ERM facilitates Aggregation and Enrichment Workshop |  | 5d? | 2015-07-20 | 2015-07-24 | 220d | finish no earlier than 2015-07-24 |  |  | ܁ࢺ | Late |
| 300 | 1.1.1.3.1.3.1.1.4 | Risk Manager presents inventory to level II subcommittee |  | 2d? | 2015-07-27 | 2015-07-28 | 218d | finish no earlier than 2015-07-28 |  |  | ܁ࢺ | Late |
| 301 | 1.1.1.3.1.3.1.1.5 | Credit Risk Aggregation Prepared | milestone | 0d | 2015-07-28 | 2015-07-28 | 219d | start no earlier than 2015-07-28 |  |  | ܁ࢺ | Late |
| 302 | 1.1.1.3.1.3.1.2 | **Operational Risk Material Risk Aggregation** |  | 20d | 2015-07-01 | 2015-07-28 |  |  |  |  | ܁ࢺ |  |
| 303 | 1.1.1.3.1.3.1.2.1 | ERM disseminates Workshop Pre-Read Materials to Risk Managers |  | 8d? | 2015-07-01 | 2015-07-10 | 230d | finish no earlier than 2015-07-10 |  |  | ܁ࢺ | Late |
| 304 | 1.1.1.3.1.3.1.2.2 | Risk Manager conducts Pre-workshop Enrichment and Aggregation activities |  | 5d? | 2015-07-13 | 2015-07-17 | 225d | finish no earlier than 2015-07-17 |  |  | ܁ࢺ | Late |
| 305 | 1.1.1.3.1.3.1.2.3 | ERM facilitates Aggregation and Enrichment Workshop |  | 5d? | 2015-07-20 | 2015-07-24 | 220d | finish no earlier than 2015-07-24 |  |  | ܁ࢺ | Late |
| 306 | 1.1.1.3.1.3.1.2.4 | Risk Manager presents inventory to level II subcommittee |  | 2d? | 2015-07-27 | 2015-07-28 | 218d | finish no earlier than 2015-07-28 |  |  | ܁ࢺ | Late |
| 307 | 1.1.1.3.1.3.1.2.5 | Operational Risk Material Risk Aggregation Prepared | milestone | 0d | 2015-07-28 | 2015-07-28 | 219d | start no earlier than 2015-07-28 |  |  | ܁ࢺ | Late |
| 308 | 1.1.1.3.1.3.1.3 | **Compliance Material Risk Aggregation** |  | 20d | 2015-07-01 | 2015-07-28 |  |  |  |  | ܁ࢺ |  |
| 309 | 1.1.1.3.1.3.1.3.1 | ERM disseminates Workshop Pre-Read Materials to Risk Managers |  | 8d? | 2015-07-01 | 2015-07-10 | 230d | finish no earlier than 2015-07-10 |  |  | ܁ࢺ | Late |
| 310 | 1.1.1.3.1.3.1.3.2 | Risk Manager conducts Pre-workshop Enrichment and Aggregation activities |  | 5d? | 2015-07-13 | 2015-07-17 | 225d | finish no earlier than 2015-07-17 |  |  | ܁ࢺ | Late |
| 311 | 1.1.1.3.1.3.1.3.3 | ERM facilitates Aggregation and Enrichment Workshop |  | 5d? | 2015-07-20 | 2015-07-24 | 220d | finish no earlier than 2015-07-24 |  |  | ܁ࢺ | Late |
| 312 | 1.1.1.3.1.3.1.3.4 | Risk Manager presents inventory to level II subcommittee |  | 2d? | 2015-07-27 | 2015-07-28 | 218d | finish no earlier than 2015-07-28 |  |  | ܁ࢺ | Late |
| 313 | 1.1.1.3.1.3.1.3.5 | Compliance Material Risk Aggregation Prepared | milestone | 0d | 2015-07-28 | 2015-07-28 | 219d | start no earlier than 2015-07-28 |  |  | ܁ࢺ | Late |
| 314 | 1.1.1.3.1.3.1.4 | **Model Material Risk Aggregation** |  | 20d | 2015-07-01 | 2015-07-28 |  |  |  |  | ܁ࢺ |  |
| 315 | 1.1.1.3.1.3.1.4.1 | ERM disseminates Workshop Pre-Read Materials to Risk Managers |  | 8d? | 2015-07-01 | 2015-07-10 | 230d | finish no earlier than 2015-07-10 |  |  | ܁ࢺ | Late |
| 316 | 1.1.1.3.1.3.1.4.2 | Risk Manager conducts Pre-workshop Enrichment and Aggregation activities |  | 5d? | 2015-07-13 | 2015-07-17 | 225d | finish no earlier than 2015-07-17 |  |  | ܁ࢺ | Late |
| 317 | 1.1.1.3.1.3.1.4.3 | ERM facilitates Aggregation and Enrichment Workshop |  | 5d? | 2015-07-20 | 2015-07-24 | 220d | finish no earlier than 2015-07-24 |  |  | ܁ࢺ | Late |
| 318 | 1.1.1.3.1.3.1.4.4 | Risk Manager presents inventory to level II subcommittee |  | 2d? | 2015-07-27 | 2015-07-28 | 218d | finish no earlier than 2015-07-28 |  |  | ܁ࢺ | Late |
| 319 | 1.1.1.3.1.3.1.4.5 | Model Material Risk Aggregation Prepared | milestone | 0d | 2015-07-28 | 2015-07-28 | 219d | start no earlier than 2015-07-28 |  |  | ܁ࢺ | Late |

| ID | WBS | Task | Type | Duration | Start | Finish | Total slack | Free slack | Constraint | Resources | Work | Entity | Tracking Status | Text13 |
| --- | --- | --- | --- | --- | --- | --- | --- | --- | --- | --- | --- | --- | --- | --- |
| 320 | 1.1.1.3.1.3.1.5 | **Liquidity/Market Material Risk Aggregation** |  | 20d | 2015-07-01 | 2015-07-28 |  |  |  |  |  | ܁ࢺ |  |  |
| 321 | 1.1.1.3.1.3.1.5.1 | ERM disseminates Workshop Pre-Read Materials to Risk Managers |  | 8d? | 2015-07-01 | 2015-07-10 | 230d |  | finish no earlier than 2015-07-10 |  |  | ܁ࢺ | Late |  |
| 322 | 1.1.1.3.1.3.1.5.2 | Risk Manager conducts Pre-workshop Enrichment and Aggregation activities |  | 5d? | 2015-07-13 | 2015-07-17 | 225d |  | finish no earlier than 2015-07-17 |  |  | ܁ࢺ | Late |  |
| 323 | 1.1.1.3.1.3.1.5.3 | ERM facilitates Aggregation and Enrichment Workshop |  | 5d? | 2015-07-20 | 2015-07-24 | 220d |  | finish no earlier than 2015-07-24 |  |  | ܁ࢺ | Late |  |
| 324 | 1.1.1.3.1.3.1.5.4 | Risk Manager presents inventory to level II subcommittee |  | 2d? | 2015-07-27 | 2015-07-28 | 218d |  | finish no earlier than 2015-07-28 |  |  | ܁ࢺ | Late |  |
| 325 | 1.1.1.3.1.3.1.5.5 | Liquidity/Market Material Risk Aggregation Prepared | milestone | 0d | 2015-07-28 | 2015-07-28 | 219d |  | start no earlier than 2015-07-28 |  |  | ܁ࢺ | Late |  |
| 326 | 1.1.1.3.1.3.1.6 | **Reputational/Strategic Material Risk Aggregation** |  | 20d | 2015-07-01 | 2015-07-28 |  |  |  |  |  | ܁ࢺ |  |  |
| 327 | 1.1.1.3.1.3.1.6.1 | ERM disseminates Workshop Pre-Read Materials to Risk Managers |  | 8d? | 2015-07-01 | 2015-07-10 | 230d |  | finish no earlier than 2015-07-10 |  |  | ܁ࢺ | Late |  |
| 328 | 1.1.1.3.1.3.1.6.2 | Risk Manager conducts Pre-workshop Enrichment and Aggregation activities |  | 5d? | 2015-07-13 | 2015-07-17 | 225d |  | finish no earlier than 2015-07-17 |  |  | ܁ࢺ | Late |  |
| 329 | 1.1.1.3.1.3.1.6.3 | ERM facilitates Aggregation and Enrichment Workshop |  | 5d? | 2015-07-20 | 2015-07-24 | 220d |  | finish no earlier than 2015-07-24 |  |  | ܁ࢺ | Late |  |
| 330 | 1.1.1.3.1.3.1.6.4 | Risk Manager presents inventory to level II subcommittee |  | 2d? | 2015-07-27 | 2015-07-28 | 218d |  | finish no earlier than 2015-07-28 |  |  | ܁ࢺ | Late |  |
| 331 | 1.1.1.3.1.3.1.6.5 | Reputational/Strategic Material Risk Aggregation Prepared | milestone | 0d | 2015-07-28 | 2015-07-28 | 219d | 0d | start no earlier than 2015-07-28 |  |  | ܁ࢺ | Late |  |
| 332 | 1.1.1.3.1.3.2 | Conduct SBNA Top Down Review |  | 25d | 2015-07-28 | 2015-08-31 | 194d |  | start no earlier than 2015-07-28 | R. Alhadeff/M. Carbone | 200h | ܁ࢺ | Late |  |
| 333 | 1.1.1.3.1.3.3 | Present Results to SBNA ERMC |  | 25d | 2015-07-28 | 2015-08-31 | 194d |  | start no earlier than 2015-07-28 | R. Alhadeff/M. Carbone | 200h | ܁ࢺ | Late |  |
| 334 | 1.1.1.3.1.3.4 | Present Results to SBNA BERC |  | 25d | 2015-07-28 | 2015-08-31 | 194d |  | start no earlier than 2015-07-28 | R. Alhadeff/M. Carbone | 200h | ܁ࢺ | Late |  |
| 335 | 1.1.1.3.1.4 | **SCUSA - Business Entity Material Risk Program** |  | 68d | 2015-05-28 | 2015-08-31 |  |  |  | J. Smith/T. Ploetz | 1144h | ܁ࢻ |  | J. Smith |
| 336 | 1.1.1.3.1.4.1 | **SCUSA Aggregation Workshops** |  | 20d | 2015-07-01 | 2015-07-28 |  |  |  |  |  | ܁ࢻ |  | J. Smith |
| 337 | 1.1.1.3.1.4.1.1 | **Credit Risk Aggregation** |  | 20d | 2015-07-01 | 2015-07-28 |  |  |  |  |  | ܁ࢻ |  | J. Smith |
| 338 | 1.1.1.3.1.4.1.1.1 | ERM disseminates Workshop Pre-Read Materials to Risk Managers |  | 8d? | 2015-07-01 | 2015-07-10 | 230d |  | finish no earlier than 2015-07-10 |  |  | ܁ࢻ | Late | J. Smith |
| 339 | 1.1.1.3.1.4.1.1.2 | Risk Manager conducts Pre-workshop Enrichment and Aggregation activities |  | 5d? | 2015-07-13 | 2015-07-17 | 225d |  | finish no earlier than 2015-07-17 |  |  | ܁ࢻ | Late | J. Smith |
| 340 | 1.1.1.3.1.4.1.1.3 | ERM facilitates Aggregation and Enrichment Workshop |  | 5d? | 2015-07-20 | 2015-07-24 | 220d |  | finish no earlier than 2015-07-24 |  |  | ܁ࢻ | Late | J. Smith |
| 341 | 1.1.1.3.1.4.1.1.4 | Risk Manager presents inventory to level II subcommittee |  | 2d? | 2015-07-27 | 2015-07-28 | 218d |  | finish no earlier than 2015-07-28 |  |  | ܁ࢻ | Late | J. Smith |
| 342 | 1.1.1.3.1.4.1.1.5 | Credit Risk Aggregation Prepared | milestone | 0d | 2015-07-28 | 2015-07-28 | 219d |  | start no earlier than 2015-07-28 |  |  | ܁ࢻ | Late |  |
| 343 | 1.1.1.3.1.4.1.2 | **Operational Risk Material Risk Aggregation** |  | 20d | 2015-07-01 | 2015-07-28 |  |  |  |  |  | ܁ࢻ |  | J. Smith |
| 344 | 1.1.1.3.1.4.1.2.1 | ERM disseminates Workshop Pre-Read Materials to Risk Managers |  | 8d? | 2015-07-01 | 2015-07-10 | 230d |  | finish no earlier than 2015-07-10 |  |  | ܁ࢻ | Late | J. Smith |
| 345 | 1.1.1.3.1.4.1.2.2 | Risk Manager conducts Pre-workshop Enrichment and Aggregation activities |  | 5d? | 2015-07-13 | 2015-07-17 | 225d |  | finish no earlier than 2015-07-17 |  |  | ܁ࢻ | Late | J. Smith |
| 346 | 1.1.1.3.1.4.1.2.3 | ERM facilitates Aggregation and Enrichment Workshop |  | 5d? | 2015-07-20 | 2015-07-24 | 220d |  | finish no earlier than 2015-07-24 |  |  | ܁ࢻ | Late | J. Smith |
| 347 | 1.1.1.3.1.4.1.2.4 | Risk Manager presents inventory to level II subcommittee |  | 2d? | 2015-07-27 | 2015-07-28 | 218d |  | finish no earlier than 2015-07-28 |  |  | ܁ࢻ | Late | J. Smith |
| 348 | 1.1.1.3.1.4.1.2.5 | Operational Risk Material Risk Aggregation Prepared | milestone | 0d | 2015-07-28 | 2015-07-28 | 219d |  | start no earlier than 2015-07-28 |  |  | ܁ࢻ | Late |  |

Notes:
- 332: no owner name in Excel template

| ID | WBS | Task | Type | Duration | Start | Finish | Total slack | Free slack | Constraint | Resources | Work | Entity | Text13 | Tracking Status |
| --- | --- | --- | --- | --- | --- | --- | --- | --- | --- | --- | --- | --- | --- | --- |
| 349 | 1.1.1.3.1.4.1.3 | **Compliance Material Risk Aggregation** |  | 20d | 2015-07-01 | 2015-07-28 |  |  |  |  |  | ܁ࢻ | J. Smith |  |
| 350 | 1.1.1.3.1.4.1.3.1 | ERM disseminates Workshop Pre-Read Materials to Risk Managers |  | 8d? | 2015-07-01 | 2015-07-10 | 230d |  | finish no earlier than 2015-07-10 |  |  | ܁ࢻ | J. Smith | Late |
| 351 | 1.1.1.3.1.4.1.3.2 | Risk Manager conducts Pre-workshop Enrichment and Aggregation activities |  | 5d? | 2015-07-13 | 2015-07-17 | 225d |  | finish no earlier than 2015-07-17 |  |  | ܁ࢻ | J. Smith | Late |
| 352 | 1.1.1.3.1.4.1.3.3 | ERM facilitates Aggregation and Enrichment Workshop |  | 5d? | 2015-07-20 | 2015-07-24 | 220d |  | finish no earlier than 2015-07-24 |  |  | ܁ࢻ | J. Smith | Late |
| 353 | 1.1.1.3.1.4.1.3.4 | Risk Manager presents inventory to level II subcommittee |  | 2d? | 2015-07-27 | 2015-07-28 | 218d |  | finish no earlier than 2015-07-28 |  |  | ܁ࢻ | J. Smith | Late |
| 354 | 1.1.1.3.1.4.1.3.5 | Compliance Material Risk Aggregation Prepared | milestone | 0d | 2015-07-28 | 2015-07-28 | 219d |  | start no earlier than 2015-07-28 |  |  | ܁ࢻ |  | Late |
| 355 | 1.1.1.3.1.4.1.4 | **Model Material Risk Aggregation** |  | 20d | 2015-07-01 | 2015-07-28 |  |  |  |  |  | ܁ࢻ | J. Smith |  |
| 356 | 1.1.1.3.1.4.1.4.1 | ERM disseminates Workshop Pre-Read Materials to Risk Managers |  | 8d? | 2015-07-01 | 2015-07-10 | 230d |  | finish no earlier than 2015-07-10 |  |  | ܁ࢻ | J. Smith | Late |
| 357 | 1.1.1.3.1.4.1.4.2 | Risk Manager conducts Pre-workshop Enrichment and Aggregation activities |  | 5d? | 2015-07-13 | 2015-07-17 | 225d |  | finish no earlier than 2015-07-17 |  |  | ܁ࢻ | J. Smith | Late |
| 358 | 1.1.1.3.1.4.1.4.3 | ERM facilitates Aggregation and Enrichment Workshop |  | 5d? | 2015-07-20 | 2015-07-24 | 220d |  | finish no earlier than 2015-07-24 |  |  | ܁ࢻ | J. Smith | Late |
| 359 | 1.1.1.3.1.4.1.4.4 | Risk Manager presents inventory to level II subcommittee |  | 2d? | 2015-07-27 | 2015-07-28 | 218d |  | finish no earlier than 2015-07-28 |  |  | ܁ࢻ | J. Smith | Late |
| 360 | 1.1.1.3.1.4.1.4.5 | Model Material Risk Aggregation Prepared | milestone | 0d | 2015-07-28 | 2015-07-28 | 219d |  | start no earlier than 2015-07-28 |  |  | ܁ࢻ |  | Late |
| 361 | 1.1.1.3.1.4.1.5 | **Liquidity/Market Material Risk Aggregation** |  | 20d | 2015-07-01 | 2015-07-28 |  |  |  |  |  | ܁ࢻ | J. Smith |  |
| 362 | 1.1.1.3.1.4.1.5.1 | ERM disseminates Workshop Pre-Read Materials to Risk Managers |  | 8d? | 2015-07-01 | 2015-07-10 | 230d |  | finish no earlier than 2015-07-10 |  |  | ܁ࢻ | J. Smith | Late |
| 363 | 1.1.1.3.1.4.1.5.2 | Risk Manager conducts Pre-workshop Enrichment and Aggregation activities |  | 5d? | 2015-07-13 | 2015-07-17 | 225d |  | finish no earlier than 2015-07-17 |  |  | ܁ࢻ | J. Smith | Late |
| 364 | 1.1.1.3.1.4.1.5.3 | ERM facilitates Aggregation and Enrichment Workshop |  | 5d? | 2015-07-20 | 2015-07-24 | 220d |  | finish no earlier than 2015-07-24 |  |  | ܁ࢻ | J. Smith | Late |
| 365 | 1.1.1.3.1.4.1.5.4 | Risk Manager presents inventory to level II subcommittee |  | 2d? | 2015-07-27 | 2015-07-28 | 218d |  | finish no earlier than 2015-07-28 |  |  | ܁ࢻ | J. Smith | Late |
| 366 | 1.1.1.3.1.4.1.5.5 | Liquidity/Market Material Risk Aggregation Prepared | milestone | 0d | 2015-07-28 | 2015-07-28 | 219d |  | start no earlier than 2015-07-28 |  |  | ܁ࢻ |  | Late |
| 367 | 1.1.1.3.1.4.1.6 | **Reputational/Strategic Material Risk Aggregation** |  | 20d | 2015-07-01 | 2015-07-28 |  |  |  |  |  | ܁ࢻ | J. Smith |  |
| 368 | 1.1.1.3.1.4.1.6.1 | ERM disseminates Workshop Pre-Read Materials to Risk Managers |  | 8d? | 2015-07-01 | 2015-07-10 | 230d |  | finish no earlier than 2015-07-10 |  |  | ܁ࢻ | J. Smith | Late |
| 369 | 1.1.1.3.1.4.1.6.2 | Risk Manager conducts Pre-workshop Enrichment and Aggregation activities |  | 5d? | 2015-07-13 | 2015-07-17 | 225d |  | finish no earlier than 2015-07-17 |  |  | ܁ࢻ | J. Smith | Late |
| 370 | 1.1.1.3.1.4.1.6.3 | ERM facilitates Aggregation and Enrichment Workshop |  | 5d? | 2015-07-20 | 2015-07-24 | 220d |  | finish no earlier than 2015-07-24 |  |  | ܁ࢻ | J. Smith | Late |
| 371 | 1.1.1.3.1.4.1.6.4 | Risk Manager presents inventory to level II subcommittee |  | 2d? | 2015-07-27 | 2015-07-28 | 218d |  | finish no earlier than 2015-07-28 |  |  | ܁ࢻ | J. Smith | Late |
| 372 | 1.1.1.3.1.4.1.6.5 | Reputational/Strategic Material Risk Aggregation Prepared | milestone | 0d | 2015-07-28 | 2015-07-28 | 219d | 0d | start no earlier than 2015-07-28 |  |  | ܁ࢻ |  | Late |
| 373 | 1.1.1.3.1.4.2 | Conduct SCUSA Top Down Review |  | 25d | 2015-07-28 | 2015-08-31 | 194d |  | finish no earlier than 2015-08-31 | J. Smith/T. Ploetz | 200h | ܁ࢻ | J. Smith | Late |
| 374 | 1.1.1.3.1.4.3 | Present Results to SCUSA ERMC |  | 25d | 2015-07-28 | 2015-08-31 | 194d |  | finish no earlier than 2015-08-31 | J. Smith/T. Ploetz | 200h | ܁ࢻ | J. Smith | Late |
| 375 | 1.1.1.3.1.4.4 | Present Results to SCUSA BERC |  | 25d | 2015-07-28 | 2015-08-31 | 194d |  | finish no earlier than 2015-08-31 | J. Smith/T. Ploetz | 200h | ܁ࢻ | J. Smith | Late |

| ID | WBS | Task | Type | Duration | Start | Finish | Total slack | Constraint | Resources | Work | Entity | Text13 | Tracking Status |
| --- | --- | --- | --- | --- | --- | --- | --- | --- | --- | --- | --- | --- | --- |
| 376 | 1.1.1.3.1.5 | **New York Santander Investment Securities (SIS) - Business Entity Material Risk Program** |  | 68d | 2015-05-28 | 2015-08-31 |  |  | M. Murphy | 1144h | ܁ࣅ | M. Murphy |  |
| 377 | 1.1.1.3.1.5.1 | **NY SIS Aggregation Workshops** |  | 20d? | 2015-07-01 | 2015-07-28 | 24d |  |  |  | ܁ࣅ | M. Murphy |  |
| 378 | 1.1.1.3.1.5.1.1 | **Credit Risk Aggregation** |  | 20d? | 2015-07-01 | 2015-07-28 | 24d |  |  |  | ܁ࣅ | M. Murphy |  |
| 379 | 1.1.1.3.1.5.1.1.1 | ERM disseminates Workshop Pre-Read Materials to Risk Managers |  | 8d? | 2015-07-01 | 2015-07-10 | 36d | finish no earlier than 2015-07-10 |  |  | ܁ࣅ | M. Murphy | Late |
| 380 | 1.1.1.3.1.5.1.1.2 | Risk Manager conducts Pre-workshop Enrichment and Aggregation activities |  | 5d? | 2015-07-13 | 2015-07-17 | 31d | finish no earlier than 2015-07-17 |  |  | ܁ࣅ | M. Murphy | Late |
| 381 | 1.1.1.3.1.5.1.1.3 | ERM facilitates Aggregation and Enrichment Workshop |  | 5d? | 2015-07-20 | 2015-07-24 | 26d | finish no earlier than 2015-07-24 |  |  | ܁ࣅ | M. Murphy | Late |
| 382 | 1.1.1.3.1.5.1.1.4 | Risk Manager presents inventory to level II subcommittee |  | 2d? | 2015-07-27 | 2015-07-28 | 24d | finish no earlier than 2015-07-28 |  |  | ܁ࣅ | M. Murphy | Late |
| 383 | 1.1.1.3.1.5.1.1.5 | Credit Risk Aggregation Prepared | milestone | 0d | 2015-07-28 | 2015-07-28 | 25d | start no earlier than 2015-07-28 |  |  | ܁ࣅ |  | Late |
| 384 | 1.1.1.3.1.5.1.2 | **Operational Risk Material Risk Aggregation** |  | 20d? | 2015-07-01 | 2015-07-28 | 24d |  |  |  | ܁ࣅ | M. Murphy |  |
| 385 | 1.1.1.3.1.5.1.2.1 | ERM disseminates Workshop Pre-Read Materials to Risk Managers |  | 8d? | 2015-07-01 | 2015-07-10 | 36d | finish no earlier than 2015-07-10 |  |  | ܁ࣅ | M. Murphy | Late |
| 386 | 1.1.1.3.1.5.1.2.2 | Risk Manager conducts Pre-workshop Enrichment and Aggregation activities |  | 5d? | 2015-07-13 | 2015-07-17 | 31d | finish no earlier than 2015-07-17 |  |  | ܁ࣅ | M. Murphy | Late |
| 387 | 1.1.1.3.1.5.1.2.3 | ERM facilitates Aggregation and Enrichment Workshop |  | 5d? | 2015-07-20 | 2015-07-24 | 26d | finish no earlier than 2015-07-24 |  |  | ܁ࣅ | M. Murphy | Late |
| 388 | 1.1.1.3.1.5.1.2.4 | Risk Manager presents inventory to level II subcommittee |  | 2d? | 2015-07-27 | 2015-07-28 | 24d | finish no earlier than 2015-07-28 |  |  | ܁ࣅ | M. Murphy | Late |
| 389 | 1.1.1.3.1.5.1.2.5 | Operational Risk Material Risk Aggregation Prepared | milestone | 0d | 2015-07-28 | 2015-07-28 | 25d | start no earlier than 2015-07-28 |  |  | ܁ࣅ |  | Late |
| 390 | 1.1.1.3.1.5.1.3 | **Compliance Material Risk Aggregation** |  | 20d? | 2015-07-01 | 2015-07-28 | 24d |  |  |  | ܁ࣅ | M. Murphy |  |
| 391 | 1.1.1.3.1.5.1.3.1 | ERM disseminates Workshop Pre-Read Materials to Risk Managers |  | 8d? | 2015-07-01 | 2015-07-10 | 36d | finish no earlier than 2015-07-10 |  |  | ܁ࣅ | M. Murphy | Late |
| 392 | 1.1.1.3.1.5.1.3.2 | Risk Manager conducts Pre-workshop Enrichment and Aggregation activities |  | 5d? | 2015-07-13 | 2015-07-17 | 31d | finish no earlier than 2015-07-17 |  |  | ܁ࣅ | M. Murphy | Late |
| 393 | 1.1.1.3.1.5.1.3.3 | ERM facilitates Aggregation and Enrichment Workshop |  | 5d? | 2015-07-20 | 2015-07-24 | 26d | finish no earlier than 2015-07-24 |  |  | ܁ࣅ | M. Murphy | Late |
| 394 | 1.1.1.3.1.5.1.3.4 | Risk Manager presents inventory to level II subcommittee |  | 2d? | 2015-07-27 | 2015-07-28 | 24d | finish no earlier than 2015-07-28 |  |  | ܁ࣅ | M. Murphy | Late |
| 395 | 1.1.1.3.1.5.1.3.5 | Compliance Material Risk Aggregation Prepared | milestone | 0d | 2015-07-28 | 2015-07-28 | 25d | start no earlier than 2015-07-28 |  |  | ܁ࣅ |  | Late |
| 396 | 1.1.1.3.1.5.1.4 | **Model Material Risk Aggregation** |  | 20d? | 2015-07-01 | 2015-07-28 | 24d |  |  |  | ܁ࣅ | M. Murphy |  |
| 397 | 1.1.1.3.1.5.1.4.1 | ERM disseminates Workshop Pre-Read Materials to Risk Managers |  | 8d? | 2015-07-01 | 2015-07-10 | 36d | finish no earlier than 2015-07-10 |  |  | ܁ࣅ | M. Murphy | Late |
| 398 | 1.1.1.3.1.5.1.4.2 | Risk Manager conducts Pre-workshop Enrichment and Aggregation activities |  | 5d? | 2015-07-13 | 2015-07-17 | 31d | finish no earlier than 2015-07-17 |  |  | ܁ࣅ | M. Murphy | Late |
| 399 | 1.1.1.3.1.5.1.4.3 | ERM facilitates Aggregation and Enrichment Workshop |  | 5d? | 2015-07-20 | 2015-07-24 | 26d | finish no earlier than 2015-07-24 |  |  | ܁ࣅ | M. Murphy | Late |
| 400 | 1.1.1.3.1.5.1.4.4 | Risk Manager presents inventory to level II subcommittee |  | 2d? | 2015-07-27 | 2015-07-28 | 24d | finish no earlier than 2015-07-28 |  |  | ܁ࣅ | M. Murphy | Late |
| 401 | 1.1.1.3.1.5.1.4.5 | Model Material Risk Aggregation Prepared | milestone | 0d | 2015-07-28 | 2015-07-28 | 25d | start no earlier than 2015-07-28 |  |  | ܁ࣅ |  | Late |

| ID | WBS | Task | Type | Duration | Start | Finish | Total slack | Free slack | Constraint | Resources | Work | Entity | Text13 | Tracking Status |
| --- | --- | --- | --- | --- | --- | --- | --- | --- | --- | --- | --- | --- | --- | --- |
| 402 | 1.1.1.3.1.5.1.5 | **Liquidity/Market Material Risk Aggregation** |  | 20d? | 2015-07-01 | 2015-07-28 | 24d |  |  |  |  | ܁ࣅ | M. Murphy |  |
| 403 | 1.1.1.3.1.5.1.5.1 | ERM disseminates Workshop Pre-Read Materials to Risk Managers |  | 8d? | 2015-07-01 | 2015-07-10 | 36d |  | finish no earlier than 2015-07-10 |  |  | ܁ࣅ | M. Murphy | Late |
| 404 | 1.1.1.3.1.5.1.5.2 | Risk Manager conducts Pre-workshop Enrichment and Aggregation activities |  | 5d? | 2015-07-13 | 2015-07-17 | 31d |  | finish no earlier than 2015-07-17 |  |  | ܁ࣅ | M. Murphy | Late |
| 405 | 1.1.1.3.1.5.1.5.3 | ERM facilitates Aggregation and Enrichment Workshop |  | 5d? | 2015-07-20 | 2015-07-24 | 26d |  | finish no earlier than 2015-07-24 |  |  | ܁ࣅ | M. Murphy | Late |
| 406 | 1.1.1.3.1.5.1.5.4 | Risk Manager presents inventory to level II subcommittee |  | 2d? | 2015-07-27 | 2015-07-28 | 24d |  | finish no earlier than 2015-07-28 |  |  | ܁ࣅ | M. Murphy | Late |
| 407 | 1.1.1.3.1.5.1.5.5 | Liquidity/Market Material Risk Aggregation Prepared | milestone | 0d | 2015-07-28 | 2015-07-28 | 25d |  | start no earlier than 2015-07-28 |  |  | ܁ࣅ |  | Late |
| 408 | 1.1.1.3.1.5.1.6 | **Reputational/Strategic Material Risk Aggregation** |  | 20d? | 2015-07-01 | 2015-07-28 | 24d |  |  |  |  | ܁ࣅ | M. Murphy |  |
| 409 | 1.1.1.3.1.5.1.6.1 | ERM disseminates Workshop Pre-Read Materials to Risk Managers |  | 8d? | 2015-07-01 | 2015-07-10 | 36d |  | finish no earlier than 2015-07-10 |  |  | ܁ࣅ | M. Murphy | Late |
| 410 | 1.1.1.3.1.5.1.6.2 | Risk Manager conducts Pre-workshop Enrichment and Aggregation activities |  | 5d? | 2015-07-13 | 2015-07-17 | 31d |  | finish no earlier than 2015-07-17 |  |  | ܁ࣅ | M. Murphy | Late |
| 411 | 1.1.1.3.1.5.1.6.3 | ERM facilitates Aggregation and Enrichment Workshop |  | 5d? | 2015-07-20 | 2015-07-24 | 26d |  | finish no earlier than 2015-07-24 |  |  | ܁ࣅ | M. Murphy | Late |
| 412 | 1.1.1.3.1.5.1.6.4 | Risk Manager presents inventory to level II subcommittee |  | 2d? | 2015-07-27 | 2015-07-28 | 24d |  | finish no earlier than 2015-07-28 |  |  | ܁ࣅ | M. Murphy | Late |
| 413 | 1.1.1.3.1.5.1.6.5 | Reputational/Strategic Material Risk Aggregation Prepared | milestone | 0d | 2015-07-28 | 2015-07-28 | 25d | 0d | start no earlier than 2015-07-28 |  |  | ܁ࣅ |  | Late |
| 414 | 1.1.1.3.1.5.2 | Conduct NY SIS Top Down Review |  | 25d | 2015-07-28 | 2015-08-31 | 194d |  | start no earlier than 2015-07-28 | M. Murphy | 200h | ܁ࣅ | M. Murphy | Late |
| 415 | 1.1.1.3.1.5.3 | Present Results to NY SIS ERMC |  | 25d | 2015-07-28 | 2015-08-31 | 194d |  | finish no earlier than 2015-08-31 | M. Murphy | 200h | ܁ࣅ | M. Murphy | Late |
| 416 | 1.1.1.3.1.5.4 | Present Results to NY SIS BERC |  | 25d | 2015-07-28 | 2015-08-31 | 194d |  | finish no earlier than 2015-08-31 | M. Murphy | 200h | ܁ࣅ | M. Murphy | Late |
| 417 | 1.1.1.3.1.6 | **Puerto Rico - Business Entity Material Risk Program** |  | 68d | 2015-05-28 | 2015-08-31 |  |  |  | D. Fabrizio | 1144h | ܁ࢾ | D. Fabricio |  |
| 418 | 1.1.1.3.1.6.1 | **Puerto Rico - Santander Bancorp Aggregation Workshops** |  | 20d | 2015-07-01 | 2015-07-28 |  |  |  |  |  | ܁ࢾ | D. Fabricio |  |
| 419 | 1.1.1.3.1.6.1.1 | **Credit Risk Aggregation** |  | 20d | 2015-07-01 | 2015-07-28 |  |  |  |  |  | ܁ࢾ | D. Fabricio |  |
| 420 | 1.1.1.3.1.6.1.1.1 | ERM disseminates Workshop Pre-Read Materials to Risk Managers |  | 8d? | 2015-07-01 | 2015-07-10 | 230d |  | finish no earlier than 2015-07-10 |  |  | ܁ࢾ | D. Fabricio | Late |
| 421 | 1.1.1.3.1.6.1.1.2 | Risk Manager conducts Pre-workshop Enrichment and Aggregation activities |  | 5d? | 2015-07-13 | 2015-07-17 | 225d |  | finish no earlier than 2015-07-17 |  |  | ܁ࢾ | D. Fabricio | Late |
| 422 | 1.1.1.3.1.6.1.1.3 | ERM facilitates Aggregation and Enrichment Workshop |  | 5d? | 2015-07-20 | 2015-07-24 | 220d |  | finish no earlier than 2015-07-24 |  |  | ܁ࢾ | D. Fabricio | Late |
| 423 | 1.1.1.3.1.6.1.1.4 | Risk Manager presents inventory to level II subcommittee |  | 2d? | 2015-07-27 | 2015-07-28 | 218d |  | finish no earlier than 2015-07-28 |  |  | ܁ࢾ | D. Fabricio | Late |
| 424 | 1.1.1.3.1.6.1.1.5 | Credit Risk Aggregation Prepared | milestone | 0d | 2015-07-28 | 2015-07-28 | 219d |  | start no earlier than 2015-07-28 |  |  | ܁ࢾ |  | Late |
| 425 | 1.1.1.3.1.6.1.2 | **Operational Risk Material Risk Aggregation** |  | 20d | 2015-07-01 | 2015-07-28 |  |  |  |  |  | ܁ࢾ | D. Fabricio |  |
| 426 | 1.1.1.3.1.6.1.2.1 | ERM disseminates Workshop Pre-Read Materials to Risk Managers |  | 8d? | 2015-07-01 | 2015-07-10 | 230d |  | finish no earlier than 2015-07-10 |  |  | ܁ࢾ | D. Fabricio | Late |
| 427 | 1.1.1.3.1.6.1.2.2 | Risk Manager conducts Pre-workshop Enrichment and Aggregation activities |  | 5d? | 2015-07-13 | 2015-07-17 | 225d |  | finish no earlier than 2015-07-17 |  |  | ܁ࢾ | D. Fabricio | Late |
| 428 | 1.1.1.3.1.6.1.2.3 | ERM facilitates Aggregation and Enrichment Workshop |  | 5d? | 2015-07-20 | 2015-07-24 | 220d |  | finish no earlier than 2015-07-24 |  |  | ܁ࢾ | D. Fabricio | Late |
| 429 | 1.1.1.3.1.6.1.2.4 | Risk Manager presents inventory to level II subcommittee |  | 2d? | 2015-07-27 | 2015-07-28 | 218d |  | finish no earlier than 2015-07-28 |  |  | ܁ࢾ | D. Fabricio | Late |
| 430 | 1.1.1.3.1.6.1.2.5 | Operational Risk Material Risk Aggregation Prepared | milestone | 0d | 2015-07-28 | 2015-07-28 | 219d |  | start no earlier than 2015-07-28 |  |  | ܁ࢾ |  | Late |

| ID | WBS | Task | Type | Duration | Start | Finish | Total slack | Free slack | Constraint | Resources | Work | Entity | Text13 | Tracking Status |
| --- | --- | --- | --- | --- | --- | --- | --- | --- | --- | --- | --- | --- | --- | --- |
| 431 | 1.1.1.3.1.6.1.3 | **Compliance Material Risk Aggregation** |  | 20d | 2015-07-01 | 2015-07-28 |  |  |  |  |  | ܁ࢾ | D. Fabricio |  |
| 432 | 1.1.1.3.1.6.1.3.1 | ERM disseminates Workshop Pre-Read Materials to Risk Managers |  | 8d? | 2015-07-01 | 2015-07-10 | 230d |  | finish no earlier than 2015-07-10 |  |  | ܁ࢾ | D. Fabricio | Late |
| 433 | 1.1.1.3.1.6.1.3.2 | Risk Manager conducts Pre-workshop Enrichment and Aggregation activities |  | 5d? | 2015-07-13 | 2015-07-17 | 225d |  | finish no earlier than 2015-07-17 |  |  | ܁ࢾ | D. Fabricio | Late |
| 434 | 1.1.1.3.1.6.1.3.3 | ERM facilitates Aggregation and Enrichment Workshop |  | 5d? | 2015-07-20 | 2015-07-24 | 220d |  | finish no earlier than 2015-07-24 |  |  | ܁ࢾ | D. Fabricio | Late |
| 435 | 1.1.1.3.1.6.1.3.4 | Risk Manager presents inventory to level II subcommittee |  | 2d? | 2015-07-27 | 2015-07-28 | 218d |  | finish no earlier than 2015-07-28 |  |  | ܁ࢾ | D. Fabricio | Late |
| 436 | 1.1.1.3.1.6.1.3.5 | Compliance Material Risk Aggregation Prepared | milestone | 0d | 2015-07-28 | 2015-07-28 | 219d |  | start no earlier than 2015-07-28 |  |  | ܁ࢾ |  | Late |
| 437 | 1.1.1.3.1.6.1.4 | **Model Material Risk Aggregation** |  | 20d | 2015-07-01 | 2015-07-28 |  |  |  |  |  | ܁ࢾ | D. Fabricio |  |
| 438 | 1.1.1.3.1.6.1.4.1 | ERM disseminates Workshop Pre-Read Materials to Risk Managers |  | 8d? | 2015-07-01 | 2015-07-10 | 230d |  | finish no earlier than 2015-07-10 |  |  | ܁ࢾ | D. Fabricio | Late |
| 439 | 1.1.1.3.1.6.1.4.2 | Risk Manager conducts Pre-workshop Enrichment and Aggregation activities |  | 5d? | 2015-07-13 | 2015-07-17 | 225d |  | finish no earlier than 2015-07-17 |  |  | ܁ࢾ | D. Fabricio | Late |
| 440 | 1.1.1.3.1.6.1.4.3 | ERM facilitates Aggregation and Enrichment Workshop |  | 5d? | 2015-07-20 | 2015-07-24 | 220d |  | finish no earlier than 2015-07-24 |  |  | ܁ࢾ | D. Fabricio | Late |
| 441 | 1.1.1.3.1.6.1.4.4 | Risk Manager presents inventory to level II subcommittee |  | 2d? | 2015-07-27 | 2015-07-28 | 218d |  | finish no earlier than 2015-07-28 |  |  | ܁ࢾ | D. Fabricio | Late |
| 442 | 1.1.1.3.1.6.1.4.5 | Model Material Risk Aggregation Prepared | milestone | 0d | 2015-07-28 | 2015-07-28 | 219d |  | start no earlier than 2015-07-28 |  |  | ܁ࢾ |  | Late |
| 443 | 1.1.1.3.1.6.1.5 | **Liquidity/Market Material Risk Aggregation** |  | 20d | 2015-07-01 | 2015-07-28 |  |  |  |  |  | ܁ࢾ | D. Fabricio |  |
| 444 | 1.1.1.3.1.6.1.5.1 | ERM disseminates Workshop Pre-Read Materials to Risk Managers |  | 8d? | 2015-07-01 | 2015-07-10 | 230d |  | finish no earlier than 2015-07-10 |  |  | ܁ࢾ | D. Fabricio | Late |
| 445 | 1.1.1.3.1.6.1.5.2 | Risk Manager conducts Pre-workshop Enrichment and Aggregation activities |  | 5d? | 2015-07-13 | 2015-07-17 | 225d |  | finish no earlier than 2015-07-17 |  |  | ܁ࢾ | D. Fabricio | Late |
| 446 | 1.1.1.3.1.6.1.5.3 | ERM facilitates Aggregation and Enrichment Workshop |  | 5d? | 2015-07-20 | 2015-07-24 | 220d |  | finish no earlier than 2015-07-24 |  |  | ܁ࢾ | D. Fabricio | Late |
| 447 | 1.1.1.3.1.6.1.5.4 | Risk Manager presents inventory to level II subcommittee |  | 2d? | 2015-07-27 | 2015-07-28 | 218d |  | finish no earlier than 2015-07-28 |  |  | ܁ࢾ | D. Fabricio | Late |
| 448 | 1.1.1.3.1.6.1.5.5 | Liquidity/Market Material Risk Aggregation Prepared | milestone | 0d | 2015-07-28 | 2015-07-28 | 219d |  | start no earlier than 2015-07-28 |  |  | ܁ࢾ |  | Late |
| 449 | 1.1.1.3.1.6.1.6 | **Reputational/Strategic Material Risk Aggregation** |  | 20d | 2015-07-01 | 2015-07-28 |  |  |  |  |  | ܁ࢾ | D. Fabricio |  |
| 450 | 1.1.1.3.1.6.1.6.1 | ERM disseminates Workshop Pre-Read Materials to Risk Managers |  | 8d? | 2015-07-01 | 2015-07-10 | 230d |  | finish no earlier than 2015-07-10 |  |  | ܁ࢾ | D. Fabricio | Late |
| 451 | 1.1.1.3.1.6.1.6.2 | Risk Manager conducts Pre-workshop Enrichment and Aggregation activities |  | 5d? | 2015-07-13 | 2015-07-17 | 225d |  | finish no earlier than 2015-07-17 |  |  | ܁ࢾ | D. Fabricio | Late |
| 452 | 1.1.1.3.1.6.1.6.3 | ERM facilitates Aggregation and Enrichment Workshop |  | 5d? | 2015-07-20 | 2015-07-24 | 220d |  | finish no earlier than 2015-07-24 |  |  | ܁ࢾ | D. Fabricio | Late |
| 453 | 1.1.1.3.1.6.1.6.4 | Risk Manager presents inventory to level II subcommittee |  | 2d? | 2015-07-27 | 2015-07-28 | 218d |  | finish no earlier than 2015-07-28 |  |  | ܁ࢾ | D. Fabricio | Late |
| 454 | 1.1.1.3.1.6.1.6.5 | Reputational/Strategic Material Risk Aggregation Prepared | milestone | 0d | 2015-07-28 | 2015-07-28 | 219d | 0d | start no earlier than 2015-07-28 |  |  | ܁ࢾ |  | Late |
| 455 | 1.1.1.3.1.6.2 | Conduct PR Santander Bancorp Top Down Review |  | 25d | 2015-07-28 | 2015-08-31 | 194d |  | start no earlier than 2015-07-28 | D. Fabrizio | 200h | ܁ࢾ | D. Fabricio | Late |
| 456 | 1.1.1.3.1.6.3 | Present Results to PR Santander Bancorp ERMC |  | 25d | 2015-07-28 | 2015-08-31 | 194d |  | start no earlier than 2015-07-28 | D. Fabrizio | 200h | ܁ࢾ | D. Fabricio | Late |
| 457 | 1.1.1.3.1.6.4 | Present Results to PR Santander Bancorp BERC |  | 25d | 2015-07-28 | 2015-08-31 | 194d |  | start no earlier than 2015-07-28 | D. Fabrizio | 200h | ܁ࢾ | D. Fabricio | Late |

| ID | WBS | Task | Type | Duration | Start | Finish | Total slack | Constraint | Resources | Work | Entity | Text13 | Tracking Status |
| --- | --- | --- | --- | --- | --- | --- | --- | --- | --- | --- | --- | --- | --- |
| 458 | 1.1.1.3.1.7 | **Miami - Business Entity Material Risk Program** |  | 68d | 2015-05-28 | 2015-08-31 |  |  | L. Madariaga | 1144h | ܁ࣄ | L. Madargia |  |
| 459 | 1.1.1.3.1.7.1 | **Miami Aggregation Workshops** |  | 20d | 2015-07-01 | 2015-07-28 |  |  |  |  | ܁ࣄ | L. Madargia |  |
| 460 | 1.1.1.3.1.7.1.1 | **Credit Risk Aggregation** |  | 20d | 2015-07-01 | 2015-07-28 |  |  |  |  | ܁ࣄ | L. Madargia |  |
| 461 | 1.1.1.3.1.7.1.1.1 | ERM disseminates Workshop Pre-Read Materials to Risk Managers |  | 8d? | 2015-07-01 | 2015-07-10 | 230d | finish no earlier than 2015-07-10 |  |  | ܁ࣄ | L. Madargia | Late |
| 462 | 1.1.1.3.1.7.1.1.2 | Risk Manager conducts Pre-workshop Enrichment and Aggregation activities |  | 5d? | 2015-07-13 | 2015-07-17 | 225d | finish no earlier than 2015-07-17 |  |  | ܁ࣄ | L. Madargia | Late |
| 463 | 1.1.1.3.1.7.1.1.3 | ERM facilitates Aggregation and Enrichment Workshop |  | 5d? | 2015-07-20 | 2015-07-24 | 220d | finish no earlier than 2015-07-24 |  |  | ܁ࣄ | L. Madargia | Late |
| 464 | 1.1.1.3.1.7.1.1.4 | Risk Manager presents inventory to level II subcommittee |  | 2d? | 2015-07-27 | 2015-07-28 | 218d | finish no earlier than 2015-07-28 |  |  | ܁ࣄ | L. Madargia | Late |
| 465 | 1.1.1.3.1.7.1.1.5 | Credit Risk Aggregation Prepared | milestone | 0d | 2015-07-28 | 2015-07-28 | 219d | start no earlier than 2015-07-28 |  |  | ܁ࣄ |  | Late |
| 466 | 1.1.1.3.1.7.1.2 | **Operational Risk Material Risk Aggregation** |  | 20d | 2015-07-01 | 2015-07-28 |  |  |  |  | ܁ࣄ | L. Madargia |  |
| 467 | 1.1.1.3.1.7.1.2.1 | ERM disseminates Workshop Pre-Read Materials to Risk Managers |  | 8d? | 2015-07-01 | 2015-07-10 | 230d | finish no earlier than 2015-07-10 |  |  | ܁ࣄ | L. Madargia | Late |
| 468 | 1.1.1.3.1.7.1.2.2 | Risk Manager conducts Pre-workshop Enrichment and Aggregation activities |  | 5d? | 2015-07-13 | 2015-07-17 | 225d | finish no earlier than 2015-07-17 |  |  | ܁ࣄ | L. Madargia | Late |
| 469 | 1.1.1.3.1.7.1.2.3 | ERM facilitates Aggregation and Enrichment Workshop |  | 5d? | 2015-07-20 | 2015-07-24 | 220d | finish no earlier than 2015-07-24 |  |  | ܁ࣄ | L. Madargia | Late |
| 470 | 1.1.1.3.1.7.1.2.4 | Risk Manager presents inventory to level II subcommittee |  | 2d? | 2015-07-27 | 2015-07-28 | 218d | finish no earlier than 2015-07-28 |  |  | ܁ࣄ | L. Madargia | Late |
| 471 | 1.1.1.3.1.7.1.2.5 | Operational Risk Material Risk Aggregation Prepared | milestone | 0d | 2015-07-28 | 2015-07-28 | 219d | start no earlier than 2015-07-28 |  |  | ܁ࣄ |  | Late |
| 472 | 1.1.1.3.1.7.1.3 | **Compliance Material Risk Aggregation** |  | 20d | 2015-07-01 | 2015-07-28 |  |  |  |  | ܁ࣄ | L. Madargia |  |
| 473 | 1.1.1.3.1.7.1.3.1 | ERM disseminates Workshop Pre-Read Materials to Risk Managers |  | 8d? | 2015-07-01 | 2015-07-10 | 230d | finish no earlier than 2015-07-10 |  |  | ܁ࣄ | L. Madargia | Late |
| 474 | 1.1.1.3.1.7.1.3.2 | Risk Manager conducts Pre-workshop Enrichment and Aggregation activities |  | 5d? | 2015-07-13 | 2015-07-17 | 225d | finish no earlier than 2015-07-17 |  |  | ܁ࣄ | L. Madargia | Late |
| 475 | 1.1.1.3.1.7.1.3.3 | ERM facilitates Aggregation and Enrichment Workshop |  | 5d? | 2015-07-20 | 2015-07-24 | 220d | finish no earlier than 2015-07-24 |  |  | ܁ࣄ | L. Madargia | Late |
| 476 | 1.1.1.3.1.7.1.3.4 | Risk Manager presents inventory to level II subcommittee |  | 2d? | 2015-07-27 | 2015-07-28 | 218d | finish no earlier than 2015-07-28 |  |  | ܁ࣄ | L. Madargia | Late |
| 477 | 1.1.1.3.1.7.1.3.5 | Compliance Material Risk Aggregation Prepared | milestone | 0d | 2015-07-28 | 2015-07-28 | 219d | start no earlier than 2015-07-28 |  |  | ܁ࣄ |  | Late |
| 478 | 1.1.1.3.1.7.1.4 | **Model Material Risk Aggregation** |  | 20d | 2015-07-01 | 2015-07-28 |  |  |  |  | ܁ࣄ | L. Madargia |  |
| 479 | 1.1.1.3.1.7.1.4.1 | ERM disseminates Workshop Pre-Read Materials to Risk Managers |  | 8d? | 2015-07-01 | 2015-07-10 | 230d | finish no earlier than 2015-07-10 |  |  | ܁ࣄ | L. Madargia | Late |
| 480 | 1.1.1.3.1.7.1.4.2 | Risk Manager conducts Pre-workshop Enrichment and Aggregation activities |  | 5d? | 2015-07-13 | 2015-07-17 | 225d | finish no earlier than 2015-07-17 |  |  | ܁ࣄ | L. Madargia | Late |
| 481 | 1.1.1.3.1.7.1.4.3 | ERM facilitates Aggregation and Enrichment Workshop |  | 5d? | 2015-07-20 | 2015-07-24 | 220d | finish no earlier than 2015-07-24 |  |  | ܁ࣄ | L. Madargia | Late |
| 482 | 1.1.1.3.1.7.1.4.4 | Risk Manager presents inventory to level II subcommittee |  | 2d? | 2015-07-27 | 2015-07-28 | 218d | finish no earlier than 2015-07-28 |  |  | ܁ࣄ | L. Madargia | Late |
| 483 | 1.1.1.3.1.7.1.4.5 | Model Material Risk Aggregation Prepared | milestone | 0d | 2015-07-28 | 2015-07-28 | 219d | start no earlier than 2015-07-28 |  |  | ܁ࣄ |  | Late |

| ID | WBS | Task | Type | Duration | Start | Finish | Total slack | Free slack | Constraint | Resources | Work | Entity | Text13 | Tracking Status |
| --- | --- | --- | --- | --- | --- | --- | --- | --- | --- | --- | --- | --- | --- | --- |
| 484 | 1.1.1.3.1.7.1.5 | **Liquidity/Market Material Risk Aggregation** |  | 20d | 2015-07-01 | 2015-07-28 |  |  |  |  |  | ܁ࣄ | L. Madargia |  |
| 485 | 1.1.1.3.1.7.1.5.1 | ERM disseminates Workshop Pre-Read Materials to Risk Managers |  | 8d? | 2015-07-01 | 2015-07-10 | 230d |  | finish no earlier than 2015-07-10 |  |  | ܁ࣄ | L. Madargia | Late |
| 486 | 1.1.1.3.1.7.1.5.2 | Risk Manager conducts Pre-workshop Enrichment and Aggregation activities |  | 5d? | 2015-07-13 | 2015-07-17 | 225d |  | finish no earlier than 2015-07-17 |  |  | ܁ࣄ | L. Madargia | Late |
| 487 | 1.1.1.3.1.7.1.5.3 | ERM facilitates Aggregation and Enrichment Workshop |  | 5d? | 2015-07-20 | 2015-07-24 | 220d |  | finish no earlier than 2015-07-24 |  |  | ܁ࣄ | L. Madargia | Late |
| 488 | 1.1.1.3.1.7.1.5.4 | Risk Manager presents inventory to level II subcommittee |  | 2d? | 2015-07-27 | 2015-07-28 | 218d |  | finish no earlier than 2015-07-28 |  |  | ܁ࣄ | L. Madargia | Late |
| 489 | 1.1.1.3.1.7.1.5.5 | Liquidity/Market Material Risk Aggregation Prepared | milestone | 0d | 2015-07-28 | 2015-07-28 | 219d |  | start no earlier than 2015-07-28 |  |  | ܁ࣄ |  | Late |
| 490 | 1.1.1.3.1.7.1.6 | **Reputational/Strategic Material Risk Aggregation** |  | 20d | 2015-07-01 | 2015-07-28 |  |  |  |  |  | ܁ࣄ | L. Madargia |  |
| 491 | 1.1.1.3.1.7.1.6.1 | ERM disseminates Workshop Pre-Read Materials to Risk Managers |  | 8d? | 2015-07-01 | 2015-07-10 | 230d |  | finish no earlier than 2015-07-10 |  |  | ܁ࣄ | L. Madargia | Late |
| 492 | 1.1.1.3.1.7.1.6.2 | Risk Manager conducts Pre-workshop Enrichment and Aggregation activities |  | 5d? | 2015-07-13 | 2015-07-17 | 225d |  | finish no earlier than 2015-07-17 |  |  | ܁ࣄ | L. Madargia | Late |
| 493 | 1.1.1.3.1.7.1.6.3 | ERM facilitates Aggregation and Enrichment Workshop |  | 5d? | 2015-07-20 | 2015-07-24 | 220d |  | finish no earlier than 2015-07-24 |  |  | ܁ࣄ | L. Madargia | Late |
| 494 | 1.1.1.3.1.7.1.6.4 | Risk Manager presents inventory to level II subcommittee |  | 2d? | 2015-07-27 | 2015-07-28 | 218d |  | finish no earlier than 2015-07-28 |  |  | ܁ࣄ | L. Madargia | Late |
| 495 | 1.1.1.3.1.7.1.6.5 | Reputational/Strategic Material Risk Aggregation Prepared | milestone | 0d | 2015-07-28 | 2015-07-28 | 219d | 0d | start no earlier than 2015-07-28 |  |  | ܁ࣄ |  | Late |
| 496 | 1.1.1.3.1.7.2 | Conduct Miami Top Down Review |  | 25d | 2015-07-28 | 2015-08-31 | 194d |  | start no earlier than 2015-07-28 | L. Madariaga | 200h | ܁ࣄ | L. Madargia | Late |
| 497 | 1.1.1.3.1.7.3 | Present Miami to SCUSA ERMC |  | 25d | 2015-07-28 | 2015-08-31 | 194d |  | finish no earlier than 2015-08-31 | L. Madariaga | 200h | ܁ࣄ | L. Madargia | Late |
| 498 | 1.1.1.3.1.7.4 | Present Miami to SCUSA BERC |  | 25d | 2015-07-28 | 2015-08-31 | 194d |  | finish no earlier than 2015-08-31 | L. Madariaga | 200h | ܁ࣄ | L. Madargia | Late |
| 499 | 1.1.1.4 | **Risk Management Processes** |  | 1d? | 2014-09-19 | 2014-09-19 | 440d |  |  |  |  |  |  | Late |
| 500 | 1.1.1.4.1 | **Financial Risk Mgmt-Design and Operationalize** |  | 1d? | 2014-09-19 | 2014-09-19 | 440d |  |  |  |  |  |  |  |
| 501 | 1.1.1.4.1.1 | **Conduct high level of credit risk management** |  | 1d? | 2014-09-19 | 2014-09-19 | 440d |  |  |  |  |  |  |  |
| 502 | 1.1.1.4.1.1.1 | High level wholesale credit process review incl. limits / controls and DoA at SCUSA and SBNA |  | 1d? | 2014-09-19 | 2014-09-19 | 440d |  |  |  |  |  |  | Late |
| 503 | 1.1.1.4.1.1.2 | MILESTONE |  | 1d? | 2014-09-19 | 2014-09-19 | 440d |  |  |  |  |  |  | Late |
| 504 | 1.1.1.4.1.2 | **Conduct liquidity risk gap analysis** |  | 1d? | 2014-09-19 | 2014-09-19 | 440d |  |  |  |  |  |  |  |
| 505 | 1.1.1.4.1.2.1 | Definition of target liq. risk capabilities, current state review and remediation plan |  | 1d? | 2014-09-19 | 2014-09-19 | 440d |  |  |  |  |  |  | Late |
| 506 | 1.1.1.4.1.2.2 | MILESTONE |  | 1d? | 2014-09-19 | 2014-09-19 | 440d |  |  |  |  |  |  | Late |
| 507 | 1.1.1.5 | **Risk Monitoring** |  | 1d? | 2014-09-19 | 2014-09-19 | 440d |  |  |  |  |  |  | Late |
| 508 | 1.1.1.5.1 | **Internal Reporting** |  | 1d? | 2014-09-19 | 2014-09-19 | 440d |  |  |  |  |  |  |  |
| 509 | 1.1.1.5.1.1 | **Enhance internal reporting** |  | 1d? | 2014-09-19 | 2014-09-19 | 440d |  |  |  |  |  |  |  |
| 510 | 1.1.1.5.1.1.1 | Assessment of current reporting landscape with quick win enhancements |  | 1d? | 2014-09-19 | 2014-09-19 | 440d |  |  |  |  |  |  | Late |
| 511 | 1.1.1.5.1.1.2 | Definition of target risk reporting landscape |  | 1d? | 2014-09-19 | 2014-09-19 | 440d |  |  |  |  |  |  | Late |
| 512 | 1.1.1.5.1.1.3 | Template reports and socialization of high priority reports |  | 1d? | 2014-09-19 | 2014-09-19 | 440d |  |  |  |  |  |  | Late |
| 513 | 1.1.1.5.1.1.4 | Operationalization of high priority reports e.g. allocate reporting resources |  | 1d? | 2014-09-19 | 2014-09-19 | 440d |  |  |  |  |  |  | Late |
| 514 | 1.1.1.5.1.1.5 | Template reports and socialization of low priority reports |  | 1d? | 2014-09-19 | 2014-09-19 | 440d |  |  |  |  |  |  | Late |
| 515 | 1.1.1.5.1.1.6 | MILESTONE |  | 1d? | 2014-09-19 | 2014-09-19 | 440d |  |  |  |  |  |  | Late |
| 516 | 1.1.1.6 | Risk Data and Systems |  | 1d? | 2014-09-19 | 2014-09-19 | 440d |  |  |  |  |  |  | Late |
