# CART Template 06102015 RT

Schedule from MS Project, 2015-06-01 to 2016-05-27.

## Calendars

- Standard: Mon-Fri 08:00-12:00, 13:00-17:00; Sat-Sun off.

## Schedule

| ID | WBS | Task | Type | Duration | Start | Finish | Total slack | Constraint | Tracking Status | Entity |
| --- | --- | --- | --- | --- | --- | --- | --- | --- | --- | --- |
| 1 | 1 | **Capital and Risk Transformation SHUSA** |  | 260d | 2015-06-01 | 2016-05-27 | 0d |  |  |  |
| 2 | 1.1 | **Risk Transformation** |  | 260d | 2015-06-01 | 2016-05-27 | 0d |  |  |  |
| 3 | 1.1.1 | **Risk Appetite Statement(RAS)** |  | 260d | 2015-06-01 | 2016-05-27 | 0d |  |  |  |
| 4 | 1.1.1.1 | **List of Deliverables for Sub Work-Stream** |  | 0d | 2015-12-31 | 2015-12-31 | 106d |  |  |  |
| 5 | 1.1.1.1.1 | example deliverable (linked to the detail below) | milestone | 0d | 2015-12-31 | 2015-12-31 | 106d | finish no earlier than 2015-12-31 | Late |  |
| 6 | 1.1.1.2 | **Re-designed SHUSA RAS framework** |  | 105d | 2015-06-08 | 2015-10-30 | 150d |  |  |  |
| 7 | 1.1.1.2.1 | **SHUSA-level RAS** |  | 60d | 2015-06-08 | 2015-08-28 | 195d |  |  | ܁ࢹ |
| 8 | 1.1.1.2.1.1 | **Finalize project plan and communicate to CART stakeholders** |  | 10d | 2015-06-08 | 2015-06-19 | 245d |  |  | ܁ࢹ |
| 9 | 1.1.1.2.1.1.1 | Finalize CART plan at task-level |  | 1d | 2015-06-08 | 2015-06-08 | 254d | finish no earlier than 2015-06-08 | Late | ܁ࢹ |
| 10 | 1.1.1.2.1.1.2 | Socialize plan with key stakeholders (SHUSA, SBNA, SCUSA) |  | 9d | 2015-06-09 | 2015-06-19 | 245d | finish no earlier than 2015-06-19 | Late | ܁ࢹ |
| 11 | 1.1.1.2.1.1.3 | Communicate plan to CART stakeholders |  | 5d | 2015-06-15 | 2015-06-19 | 245d | finish no earlier than 2015-06-19 | Late | ܁ࢹ |
| 12 | 1.1.1.2.1.1.4 | Plan submitted to CART / Leadership Committee | milestone | 0d | 2015-06-19 | 2015-06-19 | 245d | finish no earlier than 2015-06-19 | Late | ܁ࢹ |
| 13 | 1.1.1.2.1.2 | **Define guidelines and approach for choosing metrics and setting limits** |  | 15d | 2015-06-08 | 2015-06-26 | 240d |  |  | ܁ࢹ |
| 14 | 1.1.1.2.1.2.1 | Draft guidelines and approach for metrics and limits (no Finance metrics, risk profile, risk appetite, stressed metrics) |  | 5d | 2015-06-08 | 2015-06-12 | 250d | finish no earlier than 2015-06-12 | Late | ܁ࢹ |
| 15 | 1.1.1.2.1.2.2 | Socialize Risk Appetite guidelines to stakeholders (SHUSA, SBNA, SCUSA) |  | 5d | 2015-06-15 | 2015-06-19 | 245d | finish no earlier than 2015-06-19 | Late | ܁ࢹ |
| 16 | 1.1.1.2.1.2.3 | Update guidelines per stakeholder feedback |  | 5d | 2015-06-22 | 2015-06-26 | 240d | finish no earlier than 2015-06-26 | Late | ܁ࢹ |
| 17 | 1.1.1.2.1.2.4 | Finalized guidelines and approach for choosing metrics and setting limits | milestone | 0d | 2015-06-26 | 2015-06-26 | 240d | finish no earlier than 2015-06-26 | Late | ܁ࢹ |
| 18 | 1.1.1.2.1.3 | **Articulate enterprise-wide core values, RAS principles and major risk categories** |  | 15d | 2015-06-08 | 2015-06-26 | 240d |  |  | ܁ࢹ |
| 19 | 1.1.1.2.1.3.1 | Draft of enterprise-wide core values, RAS principles and major risk categories (e.g. credit) |  | 5d | 2015-06-08 | 2015-06-12 | 250d | finish no earlier than 2015-06-12 | Late | ܁ࢹ |
| 20 | 1.1.1.2.1.3.2 | Socialize Risk Appetite philosophy to stakeholders (SHUSA, SBNA, SCUSA) |  | 5d | 2015-06-15 | 2015-06-19 | 245d | finish no earlier than 2015-06-19 | Late | ܁ࢹ |
| 21 | 1.1.1.2.1.3.3 | Update values, principles and risk categories per stakeholder feedback |  | 5d | 2015-06-22 | 2015-06-26 | 240d | finish no earlier than 2015-06-26 | Late | ܁ࢹ |
| 22 | 1.1.1.2.1.3.4 | Finalized enterprise-wide RAS philosophy and major risk categories | milestone | 0d | 2015-06-26 | 2015-06-26 | 240d | finish no earlier than 2015-06-26 | Late | ܁ࢹ |
| 23 | 1.1.1.2.1.4 | **Detail material risks and constraints for enterprise** |  | 15d | 2015-06-08 | 2015-06-26 | 240d |  |  | ܁ࢹ |
| 24 | 1.1.1.2.1.4.1 | Identify and document material risks for enterprise, including input from stakeholders (SHUSA, SBNA, SCUSA) |  | 5d | 2015-06-08 | 2015-06-12 | 250d | finish no earlier than 2015-06-12 | Late | ܁ࢹ |
| 25 | 1.1.1.2.1.4.2 | Identify and document constraints from regulators and other stakeholders (i.e. ratings agencies) |  | 5d | 2015-06-15 | 2015-06-19 | 245d | finish no earlier than 2015-06-19 | Late | ܁ࢹ |
| 26 | 1.1.1.2.1.4.3 | Consolidate all requirements from Group, including updated corporate metrics (recalculated with April numbers) |  | 5d | 2015-06-15 | 2015-06-19 | 245d | finish no earlier than 2015-06-19 | Late | ܁ࢹ |
| 27 | 1.1.1.2.1.4.4 | Document owners and rationale for all corporate metrics |  | 5d | 2015-06-15 | 2015-06-19 | 245d | finish no earlier than 2015-06-19 | Late | ܁ࢹ |
| 28 | 1.1.1.2.1.4.5 | Facilitate review and challenge session for list of material risks with key stakeholders (SHUSA, SBNA, SCUSA) |  | 3d | 2015-06-22 | 2015-06-24 | 242d | finish no earlier than 2015-06-24 | Late | ܁ࢹ |
| 29 | 1.1.1.2.1.4.6 | Update documentation of material risks and constraints, given stakeholder input |  | 3d | 2015-06-24 | 2015-06-26 | 240d | finish no earlier than 2015-06-26 | Late | ܁ࢹ |
| 30 | 1.1.1.2.1.4.7 | Finalized documentation of material risks and constraints for enterprise | milestone | 0d | 2015-06-26 | 2015-06-26 | 240d | finish no earlier than 2015-06-26 | Late | ܁ࢹ |

| ID | WBS | Task | Type | Duration | Start | Finish | Total slack | Constraint | Entity | Tracking Status |
| --- | --- | --- | --- | --- | --- | --- | --- | --- | --- | --- |
| 31 | 1.1.1.2.1.5 | **For each risk, determine a qualitative risk appetite statement** |  | 25d | 2015-06-08 | 2015-07-10 | 230d |  | ܁ࢹ |  |
| 32 | 1.1.1.2.1.5.1 | Draft a qualitative risk appetite statement for all risks detailed in documentation of material risks for enterprise, considering documented constraints |  | 20d | 2015-06-08 | 2015-07-03 | 235d | finish no earlier than 2015-07-03 | ܁ࢹ | Late |
| 33 | 1.1.1.2.1.5.2 | Socialize SHUSA-level qualitative statements with stakeholders (SHUSA, SBNA, SCUSA) |  | 5d | 2015-07-06 | 2015-07-10 | 230d | finish no earlier than 2015-07-10 | ܁ࢹ | Late |
| 34 | 1.1.1.2.1.5.3 | Finalized qualitative risk appetite statements for material risks | milestone | 0d | 2015-07-10 | 2015-07-10 | 230d | finish no earlier than 2015-07-10 | ܁ࢹ | Late |
| 35 | 1.1.1.2.1.6 | **For quantifiable statements, identify key metrics and calibrate limits** |  | 45d | 2015-06-15 | 2015-08-14 | 205d |  | ܁ࢹ |  |
| 36 | 1.1.1.2.1.6.1 | Finalize list of proposed SHUSA metrics |  | 1d | 2015-06-15 | 2015-06-15 | 249d | finish no earlier than 2015-06-15 | ܁ࢹ | Late |
| 37 | 1.1.1.2.1.6.2 | Facilitate review and challenge session for proposed metrics, limits and thresholds with key stakeholders (SHUSA, SBNA, SCUSA) |  | 1d | 2015-06-16 | 2015-06-16 | 248d | finish no earlier than 2015-06-16 | ܁ࢹ | Late |
| 38 | 1.1.1.2.1.6.3 | Update list of SHUSA metrics, given stakeholder input, and identify and document owners for each metric |  | 3d | 2015-06-17 | 2015-06-19 | 245d | finish no earlier than 2015-06-19 | ܁ࢹ | Late |
| 39 | 1.1.1.2.1.6.4 | Detail limits and thresholds for list of SHUSA metrics |  | 5d | 2015-06-22 | 2015-06-26 | 240d | finish no earlier than 2015-06-26 | ܁ࢹ | Late |
| 40 | 1.1.1.2.1.6.5 | Calibrate limits based on analysis of historical data, industry benchmarking, etc. |  | 30d | 2015-06-29 | 2015-08-07 | 210d | finish no earlier than 2015-08-07 | ܁ࢹ | Late |
| 41 | 1.1.1.2.1.6.6 | Document rationale for SHUSA metrics |  | 5d | 2015-07-13 | 2015-07-17 | 225d | finish no earlier than 2015-07-17 | ܁ࢹ | Late |
| 42 | 1.1.1.2.1.6.7 | Document IT requirements for SHUSA metrics |  | 15d | 2015-07-13 | 2015-07-31 | 215d | finish no earlier than 2015-07-31 | ܁ࢹ | Late |
| 43 | 1.1.1.2.1.6.8 | Consolidate metrics, limits and thresholds into quantifiable statements for material risks |  | 3d | 2015-08-10 | 2015-08-12 | 207d | finish no earlier than 2015-08-12 | ܁ࢹ | Late |
| 44 | 1.1.1.2.1.6.9 | Socialize quantitative statements with stakeholders (SHUSA, SBNA, SCUSA) |  | 2d | 2015-08-13 | 2015-08-14 | 205d | finish no earlier than 2015-08-14 | ܁ࢹ | Late |
| 45 | 1.1.1.2.1.6.10 | Finalized quantitative risk appetite statements for material risks | milestone | 0d | 2015-08-14 | 2015-08-14 | 205d | finish no earlier than 2015-08-14 | ܁ࢹ | Late |
| 46 | 1.1.1.2.1.7 | **Consolidate qualitative and quantitative statements into SHUSA-level RAS and socialize with stakeholders** |  | 10d | 2015-08-17 | 2015-08-28 | 195d |  | ܁ࢹ |  |
| 47 | 1.1.1.2.1.7.1 | Draft SHUSA-level RAS |  | 5d | 2015-08-17 | 2015-08-21 | 200d | finish no earlier than 2015-08-21 | ܁ࢹ | Late |
| 48 | 1.1.1.2.1.7.2 | Socialize SHUSA-level RAS with stakeholders (SHUSA, SBNA, SCUSA) |  | 5d | 2015-08-24 | 2015-08-28 | 195d | finish no earlier than 2015-08-28 | ܁ࢹ | Late |
| 49 | 1.1.1.2.1.7.3 | Final draft of SHUSA-level RAS | milestone | 0d | 2015-08-28 | 2015-08-28 | 195d | finish no earlier than 2015-08-28 | ܁ࢹ | Late |
| 50 | 1.1.1.2.2 | **SHUSA-level RAS supporting processes and documentation** |  | 30d | 2015-07-06 | 2015-08-14 | 205d |  | ܁ࢹ |  |
| 51 | 1.1.1.2.2.1 | **Document SHUSA-level RAS reporting, monitoring and escalation processes** |  | 20d | 2015-07-06 | 2015-07-31 | 215d |  | ܁ࢹ |  |
| 52 | 1.1.1.2.2.1.1 | Draft SHUSA-level RAS reporting and monitoring process |  | 15d | 2015-07-06 | 2015-07-24 | 220d | finish no earlier than 2015-07-24 | ܁ࢹ | Late |
| 53 | 1.1.1.2.2.1.2 | Draft SHUSA-level RAS breach escalation process and detail consequences |  | 15d | 2015-07-06 | 2015-07-24 | 220d | finish no earlier than 2015-07-24 | ܁ࢹ | Late |
| 54 | 1.1.1.2.2.1.3 | Socialize processes with stakeholders (SHUSA, SBNA, SCUSA) |  | 5d | 2015-07-27 | 2015-07-31 | 215d | finish no earlier than 2015-07-31 | ܁ࢹ | Late |
| 55 | 1.1.1.2.2.1.4 | Finalized SHUSA-level RAS reporting, monitoring and escalation processes | milestone | 0d | 2015-07-31 | 2015-07-31 | 215d | finish no earlier than 2015-07-31 | ܁ࢹ | Late |

| ID | WBS | Task | Type | Duration | Start | Finish | Total slack | Constraint | Entity | Tracking Status |
| --- | --- | --- | --- | --- | --- | --- | --- | --- | --- | --- |
| 56 | 1.1.1.2.2.2 | **Document SHUSA-level RAS development and governance process** |  | 20d | 2015-07-20 | 2015-08-14 | 205d |  | ܁ࢹ |  |
| 57 | 1.1.1.2.2.2.1 | Draft SHUSA-level RAS development documentation and governance process |  | 15d | 2015-07-20 | 2015-08-07 | 210d | finish no earlier than 2015-08-07 | ܁ࢹ | Late |
| 58 | 1.1.1.2.2.2.2 | Socialize documents with stakeholders (SHUSA, SBNA, SCUSA) |  | 5d | 2015-08-10 | 2015-08-14 | 205d | finish no earlier than 2015-08-14 | ܁ࢹ | Late |
| 59 | 1.1.1.2.2.2.3 | Finalized SHUSA-level RAS development documentation and governance process | milestone | 0d | 2015-08-14 | 2015-08-14 | 205d | finish no earlier than 2015-08-14 | ܁ࢹ | Late |
| 60 | 1.1.1.2.3 | **SHUSA-level RAS framework approval process** |  | 45d | 2015-08-31 | 2015-10-30 | 150d |  | ܁ࢹ |  |
| 61 | 1.1.1.2.3.1 | **Educate Board and senior committees on RAS and secure approval** |  | 45d | 2015-08-31 | 2015-10-30 | 150d |  | ܁ࢹ |  |
| 62 | 1.1.1.2.3.1.1 | Create materials for Board training on RAS roles & responsibilities |  | 5d | 2015-08-31 | 2015-09-04 | 190d | finish no earlier than 2015-09-04 | ܁ࢹ | Late |
| 63 | 1.1.1.2.3.1.2 | Create materials for Board training on RAS structure and metrics |  | 5d | 2015-08-31 | 2015-09-04 | 190d | finish no earlier than 2015-09-04 | ܁ࢹ | Late |
| 64 | 1.1.1.2.3.1.3 | Deliver Board training session(s) |  | 5d | 2015-09-21 | 2015-09-25 | 175d | finish no earlier than 2015-09-25 | ܁ࢹ | Late |
| 65 | 1.1.1.2.3.1.4 | Present SHUSA-level RAS to ERMC/EMC |  | 10d | 2015-08-31 | 2015-09-11 | 185d | finish no earlier than 2015-09-11 | ܁ࢹ | Late |
| 66 | 1.1.1.2.3.1.5 | Present CDR presentation to Madrid for review |  | 10d | 2015-08-31 | 2015-09-11 | 185d | finish no earlier than 2015-09-11 | ܁ࢹ | Late |
| 67 | 1.1.1.2.3.1.6 | Update RAS given feedback from SHUSA and Madrid risk committees |  | 5d | 2015-09-14 | 2015-09-18 | 180d | finish no earlier than 2015-09-18 | ܁ࢹ | Late |
| 68 | 1.1.1.2.3.1.7 | Present to Board/BERC for review |  | 10d | 2015-09-21 | 2015-10-02 | 170d | finish no earlier than 2015-10-02 | ܁ࢹ | Late |
| 69 | 1.1.1.2.3.1.8 | Present SHUSA-level RAS to CDR |  | 5d | 2015-10-05 | 2015-10-09 | 165d | finish no earlier than 2015-10-09 | ܁ࢹ | Late |
| 70 | 1.1.1.2.3.1.9 | Update RAS given feedback from CDR |  | 10d | 2015-10-12 | 2015-10-23 | 155d | finish no earlier than 2015-10-23 | ܁ࢹ | Late |
| 71 | 1.1.1.2.3.1.10 | Submit SHUSA-level RAS for Board approval |  | 5d | 2015-10-26 | 2015-10-30 | 150d | finish no earlier than 2015-10-30 | ܁ࢹ | Late |
| 72 | 1.1.1.2.3.1.11 | Board-approved SHUSA-level RAS | milestone | 0d | 2015-10-30 | 2015-10-30 | 150d | finish no earlier than 2015-10-30 | ܁ࢹ | Late |
| 73 | 1.1.1.3 | **Cascaded RAS across enterprise through creation of subsidiary-level and, where ncessary, BU-level statements** |  | 260d | 2015-06-01 | 2016-05-27 | 0d |  | ܁ࢻ |  |
| 74 | 1.1.1.3.1 | **Assessment of short-term SCUSA RAS** |  | 20d | 2015-06-01 | 2015-06-26 | 240d |  | ܁ࢻ |  |
| 75 | 1.1.1.3.1.1 | **Assess SCUSA RAS and determine plan for short-term remediation** |  | 5d | 2015-06-01 | 2015-06-05 | 255d |  | ܁ࢻ |  |
| 76 | 1.1.1.3.1.1.1 | Assess current state of SCUSA RAS, focusing on pre-determined "pain points" (not reviewing RAS in entirety) |  | 1d | 2015-06-01 | 2015-06-01 | 259d | finish no earlier than 2015-06-01 | ܁ࢻ | Late |
| 77 | 1.1.1.3.1.1.2 | Determine plan for short-term remediation |  | 5d | 2015-06-01 | 2015-06-05 | 255d | finish no earlier than 2015-06-05 | ܁ࢻ | Late |
| 78 | 1.1.1.3.1.1.3 | Finalized plan for SCUSA RAS short-term remediation | milestone | 0d | 2015-06-05 | 2015-06-05 | 255d | finish no earlier than 2015-06-05 | ܁ࢻ | Late |
| 79 | 1.1.1.3.1.2 | **Implement remediations in the form of updated key limits** |  | 15d | 2015-06-08 | 2015-06-26 | 240d |  | ܁ࢻ |  |
| 80 | 1.1.1.3.1.2.1 | Redefine SCUSA liquidity limit |  | 5d | 2015-06-08 | 2015-06-12 | 250d | finish no earlier than 2015-06-12 | ܁ࢻ | Late |
| 81 | 1.1.1.3.1.2.2 | Redefine SCUSA RWA limit |  | 5d | 2015-06-08 | 2015-06-12 | 250d | finish no earlier than 2015-06-12 | ܁ࢻ | Late |
| 82 | 1.1.1.3.1.2.3 | Redefine SCUSA total asset limit |  | 5d | 2015-06-08 | 2015-06-12 | 250d | finish no earlier than 2015-06-12 | ܁ࢻ | Late |
| 83 | 1.1.1.3.1.2.4 | Socialize updated limits and all proposed remediations to SCUSA RAS |  | 5d | 2015-06-15 | 2015-06-19 | 245d | finish no earlier than 2015-06-19 | ܁ࢻ | Late |
| 84 | 1.1.1.3.1.2.5 | Update SCUSA RAS based on agreed upon remediations |  | 5d | 2015-06-22 | 2015-06-26 | 240d | finish no earlier than 2015-06-26 | ܁ࢻ | Late |
| 85 | 1.1.1.3.1.2.6 | Finalized SCUSA RAS (for short-term use) | milestone | 0d | 2015-06-26 | 2015-06-26 | 240d | finish no earlier than 2015-06-26 | ܁ࢻ | Late |

| ID | WBS | Task | Type | Duration | Start | Finish | Total slack | Constraint | Tracking Status | Entity |
| --- | --- | --- | --- | --- | --- | --- | --- | --- | --- | --- |
| 86 | 1.1.1.3.2 | **Definition of approach for cascading SHUSA-level RAS to subsidiaries and levels below** |  | 10d | 2015-08-03 | 2015-08-14 | 205d |  |  |  |
| 87 | 1.1.1.3.2.1 | **Document approach for cascading SHUSA-level RAS to subsidiaries and levels below** |  | 10d | 2015-08-03 | 2015-08-14 | 205d |  |  |  |
| 88 | 1.1.1.3.2.1.1 | Determine organizational levels to which cascading is appropriate and draft planned approach |  | 5d | 2015-08-03 | 2015-08-07 | 210d | finish no earlier than 2015-08-07 | Late |  |
| 89 | 1.1.1.3.2.1.2 | Facilitate review and challenge sessions for cascading approach with stakeholders (SHUSA, SBNA, SCUSA) |  | 3d | 2015-08-10 | 2015-08-12 | 207d | finish no earlier than 2015-08-12 | Late |  |
| 90 | 1.1.1.3.2.1.3 | Update documentation for cascading approach, given stakeholder input |  | 3d | 2015-08-12 | 2015-08-14 | 205d | finish no earlier than 2015-08-14 | Late |  |
| 91 | 1.1.1.3.2.1.4 | Finalized plan for cascading SHUSA-level RAS to subsidiaries and levels below | milestone | 0d | 2015-08-14 | 2015-08-14 | 205d | finish no earlier than 2015-08-14 | Late |  |
| 92 | 1.1.1.3.3 | **RAS for priority subsidiaries SBNA & SCUSA – follow similar process as SHUSA** |  | 138d | 2015-08-17 | 2016-02-24 | 67d |  |  |  |
| 93 | 1.1.1.3.3.1 | **Detail material risks specific to SBNA and SCUSA (leveraging SHUSA-level list, but making additions as necessary)** |  | 10d | 2015-08-17 | 2015-08-28 | 195d |  |  |  |
| 94 | 1.1.1.3.3.1.1 | Identify and document subsidiary-specific risks and constraints, including those not captured in SHUSA-level RAS |  | 5d | 2015-08-17 | 2015-08-21 | 200d | finish no earlier than 2015-08-21 | Late |  |
| 95 | 1.1.1.3.3.1.2 | Identify and document constraints from Group, regulators and other stakeholders (i.e. ratings agencies) |  | 5d | 2015-08-17 | 2015-08-21 | 200d | finish no earlier than 2015-08-21 | Late |  |
| 96 | 1.1.1.3.3.1.3 | Facilitate review and challenge session for list of material risks with key stakeholders (SHUSA, SBNA, SCUSA) |  | 3d | 2015-08-24 | 2015-08-26 | 197d | finish no earlier than 2015-08-26 | Late |  |
| 97 | 1.1.1.3.3.1.4 | Update documentation of subsidiary-specific risks and constraints, given stakeholder input |  | 2d | 2015-08-27 | 2015-08-28 | 195d | finish no earlier than 2015-08-28 | Late |  |
| 98 | 1.1.1.3.3.1.5 | Finalized documentation of material risks and constraints specific to priority subsidiaries | milestone | 0d | 2015-08-17 | 2015-08-17 | 204d | finish no earlier than 2015-08-17 | Late |  |
| 99 | 1.1.1.3.3.2 | **For each risk, determine a qualitative risk appetite statement (leveraging SHUSA-level RAS)** |  | 15d | 2015-08-31 | 2015-09-18 | 180d |  |  |  |
| 100 | 1.1.1.3.3.2.1 | Determine SHUSA-level RAS statements relevant to subsidiaries |  | 3d | 2015-08-31 | 2015-09-02 | 192d | finish no earlier than 2015-09-02 | Late |  |
| 101 | 1.1.1.3.3.2.2 | Detail statements for material risks specific to the subsidiary, not captured in SHUSA-level RAS |  | 7d | 2015-09-03 | 2015-09-11 | 185d | finish no earlier than 2015-09-11 | Late |  |
| 102 | 1.1.1.3.3.2.3 | Consolidate into subsidiary specific-list of statements (leverage existing work) |  | 3d | 2015-09-14 | 2015-09-16 | 182d | finish no earlier than 2015-09-16 | Late |  |
| 103 | 1.1.1.3.3.2.4 | Socialize SBNA and SCUSA qualitative statements with key stakeholders (SHUSA, SBNA, SCUSA) |  | 2d | 2015-09-17 | 2015-09-18 | 180d | finish no earlier than 2015-09-18 | Late |  |
| 104 | 1.1.1.3.3.2.5 | Finalized qualitative risk appetite statements for subsidiary-specific risks | milestone | 0d | 2015-09-18 | 2015-09-18 | 180d | finish no earlier than 2015-09-18 | Late |  |
| 105 | 1.1.1.3.3.3 | **For quantifiable statements, identify key metrics and calibrate limits (leveraging SHUSA-level RAS)** |  | 40d | 2015-09-14 | 2015-11-06 | 145d |  |  |  |
| 106 | 1.1.1.3.3.3.1 | Determine SHUSA-level RAS metrics relevant to subsidiaries |  | 3d | 2015-09-14 | 2015-09-16 | 182d | finish no earlier than 2015-09-16 | Late |  |
| 107 | 1.1.1.3.3.3.2 | Identify metrics for material risks specific to the subsidiary, not captured in SHUSA-level RAS, and compile in list with relevant metrics from SHUSA-level RAS |  | 2d | 2015-09-17 | 2015-09-18 | 180d | finish no earlier than 2015-09-18 | Late |  |
| 108 | 1.1.1.3.3.3.3 | Facilitate review and challenge session for proposed metrics, limits and thresholds with key stakeholders (SHUSA, SBNA, SCUSA) |  | 1d | 2015-09-28 | 2015-09-28 | 174d | finish no earlier than 2015-09-28 | Late |  |
| 109 | 1.1.1.3.3.3.4 | Update list of subsidiary-specific metrics, given stakeholder input, and identify and document owners for each metric |  | 4d | 2015-09-29 | 2015-10-02 | 170d | finish no earlier than 2015-10-02 | Late |  |
| 110 | 1.1.1.3.3.3.5 | Detail limits and thresholds for list of subsidiary-specific metrics |  | 5d | 2015-09-21 | 2015-09-25 | 175d | finish no earlier than 2015-09-25 | Late |  |
| 111 | 1.1.1.3.3.3.6 | Calibrate limits for subsidiary risks, ensure subsidiary-level limits align to SHUSA-level limits |  | 30d | 2015-09-21 | 2015-10-30 | 150d | finish no earlier than 2015-10-30 | Late |  |
| 112 | 1.1.1.3.3.3.7 | Document rationale for SHUSA metrics |  | 5d | 2015-09-21 | 2015-09-25 | 175d | finish no earlier than 2015-09-25 | Late | ܁ࢹ |
| 113 | 1.1.1.3.3.3.8 | Document IT requirements for SHUSA metrics |  | 15d | 2015-09-14 | 2015-10-02 | 170d | finish no earlier than 2015-10-02 | Late | ܁ࢹ |
| 114 | 1.1.1.3.3.3.9 | Consolidate metrics, limits and thresholds into quantifiable statements for subsidiary-specific risks |  | 3d | 2015-11-02 | 2015-11-04 | 147d | finish no earlier than 2015-11-04 | Late |  |
| 115 | 1.1.1.3.3.3.10 | Socialize SBNA and SCUSA quantitative statements with stakeholders (SHUSA, SBNA, SCUSA) |  | 2d | 2015-11-05 | 2015-11-06 | 145d | finish no earlier than 2015-11-06 | Late |  |
| 116 | 1.1.1.3.3.3.11 | Finalized quantitative risk appetite statements for subsidiary-specific risks | milestone | 0d | 2015-11-06 | 2015-11-06 | 145d | finish no earlier than 2015-11-06 | Late |  |

| ID | WBS | Task | Type | Duration | Start | Finish | Total slack | Constraint | Tracking Status | Entity |
| --- | --- | --- | --- | --- | --- | --- | --- | --- | --- | --- |
| 117 | 1.1.1.3.3.4 | **Consolidate qualitative and quantitative statements into SBNA RAS and SCUSA RAS and socialize with stakeholders** |  | 10d | 2015-11-09 | 2015-11-20 | 135d |  |  |  |
| 118 | 1.1.1.3.3.4.1 | Draft SBNA RAS and SCUSA RAS |  | 5d | 2015-11-09 | 2015-11-13 | 140d | finish no earlier than 2015-11-13 | Late |  |
| 119 | 1.1.1.3.3.4.2 | Socialize SBNA RAS and SCUSA RAS with stakeholders (SHUSA, SBNA, SCUSA) |  | 5d | 2015-11-16 | 2015-11-20 | 135d | finish no earlier than 2015-11-20 | Late |  |
| 120 | 1.1.1.3.3.4.3 | Final drafts of SBNA RAS and SCUSA RAS | milestone | 0d | 2015-11-20 | 2015-11-20 | 135d | finish no earlier than 2015-11-20 | Late |  |
| 121 | 1.1.1.3.3.5 | **Secure Board approval of RAS for priority subsidiaries** |  | 30d | 2015-11-20 | 2015-12-31 | 106d |  |  |  |
| 122 | 1.1.1.3.3.5.1 | 6-week buffer for governance process |  | 30d | 2015-11-20 | 2015-12-31 | 106d | finish no earlier than 2015-12-31 | Late |  |
| 123 | 1.1.1.3.3.5.2 | Board-approved SHUSA-level RAS | milestone | 0d | 2015-12-31 | 2015-12-31 | 106d | finish no earlier than 2015-12-31 | Late |  |
| 124 | 1.1.1.3.3.6 | **Communicate SHUSA, SBNA, and SCUSA RAS to enterprise** |  | 40d | 2015-12-31 | 2016-02-24 | 67d |  |  |  |
| 125 | 1.1.1.3.3.6.1 | Create communication materials to aid in socialization process |  | 10d | 2015-12-31 | 2016-01-13 | 97d | finish no earlier than 2016-01-13 | Late |  |
| 126 | 1.1.1.3.3.6.2 | Facilitate training, town halls, etc. to communicate RAS to enterprise |  | 30d | 2016-01-14 | 2016-02-24 | 67d | finish no earlier than 2016-02-24 | Late |  |
| 127 | 1.1.1.3.3.6.3 | Completed formal communication process to enterprise | milestone | 0d | 2016-02-24 | 2016-02-24 | 67d | finish no earlier than 2016-02-24 | Late |  |
| 128 | 1.1.1.3.4 | **RAS for remainder of subsidiaries and select BUs** |  | 85d | 2016-02-01 | 2016-05-27 | 0d |  |  |  |
| 129 | 1.1.1.3.4.1 | Same cascading process as above |  | 17w | 2016-02-01 | 2016-05-27 | 0d | finish no earlier than 2016-05-27 | Late |  |
| 130 | 1.1.1.4 | **Embedded RAS in material processes across the enterprise** |  | 106d | 2015-08-17 | 2016-01-11 | 99d |  |  |  |
| 131 | 1.1.1.4.1 | **Initialized embedding of RAS in material processes** |  | 75d | 2015-08-17 | 2015-11-27 | 130d |  |  |  |
| 132 | 1.1.1.4.1.1 | **Test strategic plan against SHUSA-level RAS** |  | 15d | 2015-08-17 | 2015-09-04 | 190d |  |  |  |
| 133 | 1.1.1.4.1.1.1 | Compare draft of SHUSA-level RAS against draft of strategic plan |  | 5d | 2015-08-17 | 2015-08-21 | 200d | finish no earlier than 2015-08-21 | Late | ܁ࢹ |
| 134 | 1.1.1.4.1.1.2 | Identify gaps and adjust strategic plan as necessary |  | 5d | 2015-08-24 | 2015-08-28 | 195d | finish no earlier than 2015-08-28 | Late | ܁ࢹ |
| 135 | 1.1.1.4.1.1.3 | Socialize with key stakeholders (SHUSA, SBNA, SCUSA) |  | 5d | 2015-08-31 | 2015-09-04 | 190d | finish no earlier than 2015-09-04 | Late |  |
| 136 | 1.1.1.4.1.1.4 | Updated strategic plan, aligned with SHUSA-level RAS | milestone | 0d | 2015-09-04 | 2015-09-04 | 190d | finish no earlier than 2015-09-04 | Late |  |
| 137 | 1.1.1.4.1.2 | **Update process maps for key processes with explicit RAS links** |  | 20d | 2015-11-02 | 2015-11-27 | 130d |  |  |  |
| 138 | 1.1.1.4.1.2.1 | Identify processes that should be explicitly linked to RAS (e.g. strategic planning, capital planning) |  | 5d | 2015-11-02 | 2015-11-06 | 145d | finish no earlier than 2015-11-06 | Late |  |
| 139 | 1.1.1.4.1.2.2 | Detail nature of process linkage, including alignment to statements, metrics and limits described in the RAS |  | 5d | 2015-11-02 | 2015-11-06 | 145d | finish no earlier than 2015-11-06 | Late |  |
| 140 | 1.1.1.4.1.2.3 | Assess degree to which RAS considerations are already embedded in key processes |  | 5d | 2015-11-02 | 2015-11-06 | 145d | finish no earlier than 2015-11-06 | Late |  |
| 141 | 1.1.1.4.1.2.4 | Identify gaps and update key process maps accordingly |  | 15d | 2015-11-09 | 2015-11-27 | 130d | finish no earlier than 2015-11-27 | Late |  |
| 142 | 1.1.1.4.1.2.5 | Updated process maps for key processes | milestone | 0d | 2015-11-27 | 2015-11-27 | 130d | finish no earlier than 2015-11-27 | Late |  |

| ID | WBS | Task | Type | Duration | Start | Finish | Total slack | Constraint | Tracking Status |
| --- | --- | --- | --- | --- | --- | --- | --- | --- | --- |
| 143 | 1.1.1.4.2 | **Plan implementation of RAS in all material processes** |  | 31d | 2015-11-30 | 2016-01-11 | 99d |  |  |
| 144 | 1.1.1.4.2.1 | Detail plan for implementation of RAS in material processes (e.g. new product and business activity approval process) |  | 20d | 2015-11-30 | 2015-12-25 | 110d | finish no earlier than 2015-12-25 | Late |
| 145 | 1.1.1.4.2.2 | Detail processes/controls to ensure that RAS is being further integrated into all processes until BAU |  | 10d | 2015-12-28 | 2016-01-08 | 100d | finish no earlier than 2016-01-08 | Late |
| 146 | 1.1.1.4.2.3 | Completed plan for implementation in material processes | milestone | 0d | 2016-01-11 | 2016-01-11 | 99d | finish no earlier than 2016-01-11 | Late |
