# CART- Risk Transformation Deliverable Inventory_0611

Schedule from MS Project, 2015-05-28 to 2015-12-10.
Sovereign Bank

## Calendars

- Standard: Mon-Fri 08:00-12:00, 13:00-17:00; Sat-Sun off.

## Resources

| Resource |
| --- |
| David Mael |
| R. Alhadeff/M. Carbone |
| J. Smith/T. Ploetz |
| M. Murphy |
| D. Fabrizio |
| L. Madariaga |

## Schedule

| ID | WBS | Task | Type | Duration | Start | Finish | Predecessors | Total slack | Constraint | Resources | Work | Execution |
| --- | --- | --- | --- | --- | --- | --- | --- | --- | --- | --- | --- | --- |
| 1 | 1 | **Capital and Risk Transformation SHUSA** |  | 141d | 2015-05-28 | 2015-12-10 |  | 0d |  |  | 6080h |  |
| 2 | 1.1 | **Risk Transformation** |  | 141d | 2015-05-28 | 2015-12-10 |  | 0d |  |  | 6080h |  |
| 3 | 1.1.1 | **Risk Measurement** |  | 141d | 2015-05-28 | 2015-12-10 |  | 0d |  |  | 6080h |  |
| 4 | 1.1.1.1 | **Risk Measurement Deliverables** |  | 97d | 2015-07-28 | 2015-12-10 |  | 1d |  |  |  |  |
| 5 | 1.1.1.1.1 | Business Entity Material Risk Program Established for SHUSA | milestone | 0d | 2015-12-10 | 2015-12-10 | 82 | 1d |  |  |  |  |
| 6 | 1.1.1.1.2 | Business Entity Material Risk Program Established for SBNA | milestone | 0d | 2015-07-28 | 2015-07-28 | 120 | 98d |  |  |  |  |
| 7 | 1.1.1.1.3 | Business Entity Material Risk Program Established for SCUSA | milestone | 0d | 2015-07-28 | 2015-07-28 | 161 | 98d |  |  |  |  |
| 8 | 1.1.1.1.4 | Business Entity Material Risk Program Established for New York(SIS) | milestone | 0d | 2015-07-28 | 2015-07-28 | 202 | 98d |  |  |  |  |
| 9 | 1.1.1.1.5 | Business Entity Material Risk Program Established for Puerto Rico | milestone | 0d | 2015-07-28 | 2015-07-28 | 243 | 98d |  |  |  |  |
| 10 | 1.1.1.1.6 | Business Entity Material Risk Program Established for Miami | milestone | 0d | 2015-07-28 | 2015-07-28 | 284 | 98d |  |  |  |  |
| 11 | 1.1.1.2 | **SHUSA - Business Entity Material Risk Program** |  | 45d | 2015-09-01 | 2015-10-31 |  |  |  | David Mael | 360h |  |
| 12 | 1.1.1.2.1 | **Preparation for Aggregation to Create SHUSA Material Risk Inventory** |  | 11d | 2015-09-01 | 2015-09-15 |  |  |  |  |  |  |
| 13 | 1.1.1.2.1.1 | ERM Collects Risk Inventories from Entity Risk Managers |  | 6d? | 2015-09-01 | 2015-09-08 |  | 67d | finish no earlier than 2015-09-08 |  |  |  |
| 14 | 1.1.1.2.1.2 | ERM Sorts risks and groups by Risk Type |  | 6d? | 2015-09-01 | 2015-09-08 |  | 67d | finish no earlier than 2015-09-08 |  |  |  |
| 15 | 1.1.1.2.1.3 | ERM Creates pre-Workshop, pre-read Materials and instructions for SHUSA Risk Managers |  | 6d? | 2015-09-01 | 2015-09-08 |  | 67d | finish no earlier than 2015-09-08 |  |  |  |
| 16 | 1.1.1.2.1.4 | ERM Distributes Workshop Materials to Responsible parties |  | 2d? | 2015-09-08 | 2015-09-09 |  | 66d | finish no earlier than 2015-09-09 |  |  |  |
| 17 | 1.1.1.2.1.5 | Aggregation to Create SHUSA Material Risk Inventory Prepared | milestone | 0d | 2015-09-15 | 2015-09-15 |  | 63d | start no earlier than 2015-09-15 |  |  |  |
| 18 | 1.1.1.2.2 | **SHUSA Aggregation Workshops** |  | 13d | 2015-09-09 | 2015-09-25 |  |  |  |  |  |  |
| 19 | 1.1.1.2.2.1 | **Credit Risk Material Risk Aggregation** |  | 13d | 2015-09-09 | 2015-09-25 |  |  |  |  |  | A. Gonzales |
| 20 | 1.1.1.2.2.1.1 | Credit Risk performs pre-Read and analysis |  | 5d? | 2015-09-09 | 2015-09-15 |  | 62d | finish no earlier than 2015-09-15 |  |  |  |
| 21 | 1.1.1.2.2.1.2 | Risk Managers Conduct Credit pre-Workshop Enrichment and Aggregation Activites |  | 5d? | 2015-09-09 | 2015-09-15 |  | 62d | finish no earlier than 2015-09-15 |  |  |  |
| 22 | 1.1.1.2.2.1.3 | ERM facilitates Credit Aggregation and Enrichment Workshop |  | 7d? | 2015-09-15 | 2015-09-23 |  | 56d | finish no earlier than 2015-09-23 |  |  |  |
| 23 | 1.1.1.2.2.1.4 | Present to Level II Subcommittees |  | 3d? | 2015-09-23 | 2015-09-25 |  | 54d | finish no earlier than 2015-09-25 |  |  |  |
| 24 | 1.1.1.2.2.1.5 | Credit Risk Material Risk Aggregation Prepared | milestone | 0d | 2015-09-25 | 2015-09-25 |  | 55d | start no earlier than 2015-09-25 |  |  |  |

| ID | WBS | Task | Type | Duration | Start | Finish | Total slack | Constraint | Execution |
| --- | --- | --- | --- | --- | --- | --- | --- | --- | --- |
| 25 | 1.1.1.2.2.2 | **Operational Risk Material Risk Aggregation** |  | 13d | 2015-09-09 | 2015-09-25 |  |  | S. Bhatti |
| 26 | 1.1.1.2.2.2.1 | Operational Risk performs pre-Read and analysis |  | 5d? | 2015-09-09 | 2015-09-15 | 62d | finish no earlier than 2015-09-15 |  |
| 27 | 1.1.1.2.2.2.2 | Risk Managers Conduct Operational Risk pre-Workshop Enrichment and Aggregation Activites |  | 5d? | 2015-09-09 | 2015-09-15 | 62d | finish no earlier than 2015-09-15 |  |
| 28 | 1.1.1.2.2.2.3 | ERM facilitates Operational Risk Aggregation and Enrichment Workshop |  | 7d? | 2015-09-15 | 2015-09-23 | 56d | finish no earlier than 2015-09-23 |  |
| 29 | 1.1.1.2.2.2.4 | Present to Level II Subcommittees |  | 3d? | 2015-09-23 | 2015-09-25 | 54d | finish no earlier than 2015-09-25 |  |
| 30 | 1.1.1.2.2.2.5 | Operational Risk Material Risk Aggregation Prepared | milestone | 0d | 2015-09-25 | 2015-09-25 | 55d | start no earlier than 2015-09-25 |  |
| 31 | 1.1.1.2.2.3 | **Compliance Material Risk Aggregation** |  | 13d | 2015-09-09 | 2015-09-25 |  |  | C. Hunley |
| 32 | 1.1.1.2.2.3.1 | Compliance performs pre-Read and analysis |  | 5d? | 2015-09-09 | 2015-09-15 | 62d | finish no earlier than 2015-09-15 |  |
| 33 | 1.1.1.2.2.3.2 | Risk Managers Conduct Compliance pre-Workshop Enrichment and Aggregation Activites |  | 5d? | 2015-09-09 | 2015-09-15 | 62d | finish no earlier than 2015-09-15 |  |
| 34 | 1.1.1.2.2.3.3 | ERM facilitates Compliance Aggregation and Enrichment Workshop |  | 7d? | 2015-09-15 | 2015-09-23 | 56d | finish no earlier than 2015-09-23 |  |
| 35 | 1.1.1.2.2.3.4 | Present to Level II Subcommittees |  | 3d? | 2015-09-23 | 2015-09-25 | 54d | finish no earlier than 2015-09-25 |  |
| 36 | 1.1.1.2.2.3.5 | Compliance Material Risk Aggregation Prepared | milestone | 0d | 2015-09-25 | 2015-09-25 | 55d | start no earlier than 2015-09-25 |  |
| 37 | 1.1.1.2.2.4 | **Model Material Risk Aggregation** |  | 13d | 2015-09-09 | 2015-09-25 |  |  | R. Fahs |
| 38 | 1.1.1.2.2.4.1 | Model Risk performs pre-Read and analysis |  | 5d? | 2015-09-09 | 2015-09-15 | 62d | finish no earlier than 2015-09-15 |  |
| 39 | 1.1.1.2.2.4.2 | Risk Managers Conduct Model pre-Workshop Enrichment and Aggregation Activites |  | 5d? | 2015-09-09 | 2015-09-15 | 62d | finish no earlier than 2015-09-15 |  |
| 40 | 1.1.1.2.2.4.3 | ERM facilitates Model Aggregation and Enrichment Workshop |  | 7d? | 2015-09-15 | 2015-09-23 | 56d | finish no earlier than 2015-09-23 |  |
| 41 | 1.1.1.2.2.4.4 | Present to Level II Subcommittees |  | 3d? | 2015-09-23 | 2015-09-25 | 54d | finish no earlier than 2015-09-25 |  |
| 42 | 1.1.1.2.2.4.5 | Model Material Risk Aggregation Prepared | milestone | 0d | 2015-09-25 | 2015-09-25 | 55d | start no earlier than 2015-09-25 |  |
| 43 | 1.1.1.2.2.5 | **Market Material Risk Aggregation** |  | 13d | 2015-09-09 | 2015-09-25 |  |  | M. Lasso |
| 44 | 1.1.1.2.2.5.1 | Market Risk performs pre-Read and analysis |  | 5d? | 2015-09-09 | 2015-09-15 | 62d | finish no earlier than 2015-09-15 |  |
| 45 | 1.1.1.2.2.5.2 | Risk Managers Conduct Market pre-Workshop Enrichment and Aggregation Activites |  | 5d? | 2015-09-09 | 2015-09-15 | 62d | finish no earlier than 2015-09-15 |  |
| 46 | 1.1.1.2.2.5.3 | ERM facilitates Market Aggregation and Enrichment Workshop |  | 7d? | 2015-09-15 | 2015-09-23 | 56d | finish no earlier than 2015-09-23 |  |
| 47 | 1.1.1.2.2.5.4 | Present to Level II Subcommittees |  | 3d? | 2015-09-23 | 2015-09-25 | 54d | finish no earlier than 2015-09-25 |  |
| 48 | 1.1.1.2.2.5.5 | Market Material Risk Aggregation Prepared | milestone | 0d | 2015-09-25 | 2015-09-25 | 55d | start no earlier than 2015-09-25 |  |

| ID | WBS | Task | Type | Duration | Start | Finish | Total slack | Constraint | Execution |
| --- | --- | --- | --- | --- | --- | --- | --- | --- | --- |
| 49 | 1.1.1.2.2.6 | **Liquidity Material Risk Aggregation** |  | 13d | 2015-09-09 | 2015-09-25 |  |  | M. Lasso |
| 50 | 1.1.1.2.2.6.1 | Liquidity Risk performs pre-Read and analysis |  | 5d? | 2015-09-09 | 2015-09-15 | 62d | finish no earlier than 2015-09-15 |  |
| 51 | 1.1.1.2.2.6.2 | Risk Managers Conduct Liquidity pre-Workshop Enrichment and Aggregation Activites |  | 5d? | 2015-09-09 | 2015-09-15 | 62d | finish no earlier than 2015-09-15 |  |
| 52 | 1.1.1.2.2.6.3 | ERM facilitates Liquidity Aggregation and Enrichment Workshop |  | 7d? | 2015-09-15 | 2015-09-23 | 56d | finish no earlier than 2015-09-23 |  |
| 53 | 1.1.1.2.2.6.4 | Present to Level II Subcommittees |  | 3d? | 2015-09-23 | 2015-09-25 | 54d | finish no earlier than 2015-09-25 |  |
| 54 | 1.1.1.2.2.6.5 | Liquidity Material Risk Aggregation Prepared | milestone | 0d | 2015-09-25 | 2015-09-25 | 55d | start no earlier than 2015-09-25 |  |
| 55 | 1.1.1.2.2.7 | **Strategic Material Risk Aggregation** |  | 13d | 2015-09-09 | 2015-09-25 |  |  |  |
| 56 | 1.1.1.2.2.7.1 | Strategic Risk performs pre-Read and analysis |  | 5d? | 2015-09-09 | 2015-09-15 | 62d | finish no earlier than 2015-09-15 |  |
| 57 | 1.1.1.2.2.7.2 | Risk Managers Conduct Strategic pre-Workshop Enrichment and Aggregation Activites |  | 5d? | 2015-09-09 | 2015-09-15 | 62d | finish no earlier than 2015-09-15 |  |
| 58 | 1.1.1.2.2.7.3 | ERM facilitates Strategic Aggregation and Enrichment Workshop |  | 7d? | 2015-09-15 | 2015-09-23 | 56d | finish no earlier than 2015-09-23 |  |
| 59 | 1.1.1.2.2.7.4 | Present to Level II Subcommittees |  | 3d? | 2015-09-23 | 2015-09-25 | 54d | finish no earlier than 2015-09-25 |  |
| 60 | 1.1.1.2.2.7.5 | Strategic Material Risk Aggregation Prepared | milestone | 0d | 2015-09-25 | 2015-09-25 | 55d | start no earlier than 2015-09-25 |  |
| 61 | 1.1.1.2.2.8 | **Reputational Material Risk Aggregation** |  | 13d | 2015-09-09 | 2015-09-25 |  |  |  |
| 62 | 1.1.1.2.2.8.1 | Reputational Risk performs pre-Read and analysis |  | 5d? | 2015-09-09 | 2015-09-15 | 62d | finish no earlier than 2015-09-15 |  |
| 63 | 1.1.1.2.2.8.2 | Risk Managers Conduct Reputational pre-Workshop Enrichment and Aggregation Activites |  | 5d? | 2015-09-09 | 2015-09-15 | 62d | finish no earlier than 2015-09-15 |  |
| 64 | 1.1.1.2.2.8.3 | ERM facilitates Reputational Aggregation and Enrichment Workshop |  | 7d? | 2015-09-15 | 2015-09-23 | 56d | finish no earlier than 2015-09-23 |  |
| 65 | 1.1.1.2.2.8.4 | Present to Level II Subcommittees |  | 3d? | 2015-09-23 | 2015-09-25 | 54d | finish no earlier than 2015-09-25 |  |
| 66 | 1.1.1.2.2.8.5 | Reputational Material Risk Aggregation Prepared | milestone | 0d | 2015-09-25 | 2015-09-25 | 55d | start no earlier than 2015-09-25 |  |
| 67 | 1.1.1.2.3 | **SHUSA Top Down Aggregation** |  | 11d | 2015-09-25 | 2015-10-09 |  |  |  |
| 68 | 1.1.1.2.3.1 | ERM consolidates risks into SHUSA Inventory |  | 2d? | 2015-09-25 | 2015-09-28 | 53d | finish no earlier than 2015-09-28 |  |
| 69 | 1.1.1.2.3.2 | ERM distributes inventory to SHUSA Business and Risk executives |  | 3d? | 2015-09-28 | 2015-09-30 | 51d | finish no earlier than 2015-09-30 |  |
| 70 | 1.1.1.2.3.3 | ERM facilitates top down risk aggregation |  | 8d? | 2015-09-30 | 2015-10-09 | 44d | finish no earlier than 2015-10-09 |  |
| 71 | 1.1.1.2.3.4 | ERM incorporates final risks into SHUSA Inventory |  | 8d? | 2015-09-30 | 2015-10-09 | 44d | finish no earlier than 2015-10-09 |  |
| 72 | 1.1.1.2.3.5 | SHUSA Top Down Aggregation Prepared | milestone | 0d | 2015-10-09 | 2015-10-09 | 45d | start no earlier than 2015-10-09 |  |

| ID | WBS | Task | Type | Duration | Start | Finish | Total slack | Free slack | Constraint | Resources | Work |
| --- | --- | --- | --- | --- | --- | --- | --- | --- | --- | --- | --- |
| 73 | 1.1.1.2.4 | **Material Risk SHUSA Approval** |  | 16d | 2015-10-09 | 2015-10-30 |  |  |  |  |  |
| 74 | 1.1.1.2.4.1 | Present SHUSA Material Risks to BERC |  | 6d? | 2015-10-09 | 2015-10-16 | 39d |  | finish no earlier than 2015-10-16 |  |  |
| 75 | 1.1.1.2.4.2 | Present SHUSA Material Risks to ERMC |  | 11d? | 2015-10-16 | 2015-10-30 | 29d |  | finish no earlier than 2015-10-30 |  |  |
| 76 | 1.1.1.2.4.3 | Present SHUSA Material Risks to CCAR |  | 1d? | 2015-10-30 | 2015-10-30 | 29d |  | start no earlier than 2015-10-30 |  |  |
| 77 | 1.1.1.2.4.4 | Material Risk SHUSA Approval | milestone | 0d | 2015-10-30 | 2015-10-30 | 30d |  | start no earlier than 2015-10-30 |  |  |
| 78 | 1.1.1.2.5 | **Risk ID and Assessment Policy** |  | 55d | 2015-09-25 | 2015-12-10 |  |  |  |  |  |
| 79 | 1.1.1.2.5.1 | Risk ID and Assessment group drafts policy |  | 26d? | 2015-09-25 | 2015-10-30 | 29d |  | finish no earlier than 2015-10-30 |  |  |
| 80 | 1.1.1.2.5.2 | Risk ID and Assessment group presents draft to ERMC for approval |  | 6d? | 2015-10-30 | 2015-11-08 | 24d |  | finish no earlier than 2015-11-08 |  |  |
| 81 | 1.1.1.2.5.3 | Risk ID and Assessment group presents to Risk Committee (BERC) |  | 29d? | 2015-11-02 | 2015-12-10 | 0d |  | finish no earlier than 2015-12-10 |  |  |
| 82 | 1.1.1.2.5.4 | Risk ID and Assessment Policy | milestone | 0d | 2015-12-10 | 2015-12-10 | 1d | 0d | start no earlier than 2015-12-10 |  |  |
| 83 | 1.1.1.3 | **SBNA - Business Entity Material Risk Program** |  | 68d | 2015-05-28 | 2015-08-31 |  |  |  | R. Alhadeff/M. Carbone | 1144h |
| 84 | 1.1.1.3.1 | **SBNA Aggregation** |  | 20d | 2015-07-01 | 2015-07-28 |  |  |  |  |  |
| 85 | 1.1.1.3.1.1 | **Credit Risk Aggregation** |  | 20d? | 2015-07-01 | 2015-07-28 |  |  |  |  |  |
| 86 | 1.1.1.3.1.1.1 | ERM disseminates Workshop Pre-Read Materials to Risk Managers |  | 8d? | 2015-07-01 | 2015-07-10 | 109d |  | finish no earlier than 2015-07-10 |  |  |
| 87 | 1.1.1.3.1.1.2 | Risk Manager conducts Pre-workshop Enrichment and Aggregation activities |  | 5d? | 2015-07-13 | 2015-07-17 | 104d |  | finish no earlier than 2015-07-17 |  |  |
| 88 | 1.1.1.3.1.1.3 | ERM facilitates Aggregation and Enrichment Workshop |  | 5d? | 2015-07-20 | 2015-07-24 | 99d |  | finish no earlier than 2015-07-24 |  |  |
| 89 | 1.1.1.3.1.1.4 | Risk Manager presents inventory to level II subcommittee |  | 2d? | 2015-07-27 | 2015-07-28 | 97d |  | finish no earlier than 2015-07-28 |  |  |
| 90 | 1.1.1.3.1.1.5 | Credit Risk Aggregation Prepared | milestone | 0d | 2015-07-28 | 2015-07-28 | 98d |  | start no earlier than 2015-07-28 |  |  |
| 91 | 1.1.1.3.1.2 | **Operational Risk Material Risk Aggregation** |  | 20d | 2015-07-01 | 2015-07-28 |  |  |  |  |  |
| 92 | 1.1.1.3.1.2.1 | ERM disseminates Workshop Pre-Read Materials to Risk Managers |  | 8d? | 2015-07-01 | 2015-07-10 | 109d |  | finish no earlier than 2015-07-10 |  |  |
| 93 | 1.1.1.3.1.2.2 | Risk Manager conducts Pre-workshop Enrichment and Aggregation activities |  | 5d? | 2015-07-13 | 2015-07-17 | 104d |  | finish no earlier than 2015-07-17 |  |  |
| 94 | 1.1.1.3.1.2.3 | ERM facilitates Aggregation and Enrichment Workshop |  | 5d? | 2015-07-20 | 2015-07-24 | 99d |  | finish no earlier than 2015-07-24 |  |  |
| 95 | 1.1.1.3.1.2.4 | Risk Manager presents inventory to level II subcommittee |  | 2d? | 2015-07-27 | 2015-07-28 | 97d |  | finish no earlier than 2015-07-28 |  |  |
| 96 | 1.1.1.3.1.2.5 | Operational Risk Material Risk Aggregation Prepared | milestone | 0d | 2015-07-28 | 2015-07-28 | 98d |  | start no earlier than 2015-07-28 |  |  |

| ID | WBS | Task | Type | Duration | Start | Finish | Total slack | Free slack | Constraint | Resources | Work |
| --- | --- | --- | --- | --- | --- | --- | --- | --- | --- | --- | --- |
| 97 | 1.1.1.3.1.3 | **Compliance Material Risk Aggregation** |  | 20d | 2015-07-01 | 2015-07-28 |  |  |  |  |  |
| 98 | 1.1.1.3.1.3.1 | ERM disseminates Workshop Pre-Read Materials to Risk Managers |  | 8d? | 2015-07-01 | 2015-07-10 | 109d |  | finish no earlier than 2015-07-10 |  |  |
| 99 | 1.1.1.3.1.3.2 | Risk Manager conducts Pre-workshop Enrichment and Aggregation activities |  | 5d? | 2015-07-13 | 2015-07-17 | 104d |  | finish no earlier than 2015-07-17 |  |  |
| 100 | 1.1.1.3.1.3.3 | ERM facilitates Aggregation and Enrichment Workshop |  | 5d? | 2015-07-20 | 2015-07-24 | 99d |  | finish no earlier than 2015-07-24 |  |  |
| 101 | 1.1.1.3.1.3.4 | Risk Manager presents inventory to level II subcommittee |  | 2d? | 2015-07-27 | 2015-07-28 | 97d |  | finish no earlier than 2015-07-28 |  |  |
| 102 | 1.1.1.3.1.3.5 | Compliance Material Risk Aggregation Prepared | milestone | 0d | 2015-07-28 | 2015-07-28 | 98d |  | start no earlier than 2015-07-28 |  |  |
| 103 | 1.1.1.3.1.4 | **Model Material Risk Aggregation** |  | 20d | 2015-07-01 | 2015-07-28 |  |  |  |  |  |
| 104 | 1.1.1.3.1.4.1 | ERM disseminates Workshop Pre-Read Materials to Risk Managers |  | 8d? | 2015-07-01 | 2015-07-10 | 109d |  | finish no earlier than 2015-07-10 |  |  |
| 105 | 1.1.1.3.1.4.2 | Risk Manager conducts Pre-workshop Enrichment and Aggregation activities |  | 5d? | 2015-07-13 | 2015-07-17 | 104d |  | finish no earlier than 2015-07-17 |  |  |
| 106 | 1.1.1.3.1.4.3 | ERM facilitates Aggregation and Enrichment Workshop |  | 5d? | 2015-07-20 | 2015-07-24 | 99d |  | finish no earlier than 2015-07-24 |  |  |
| 107 | 1.1.1.3.1.4.4 | Risk Manager presents inventory to level II subcommittee |  | 2d? | 2015-07-27 | 2015-07-28 | 97d |  | finish no earlier than 2015-07-28 |  |  |
| 108 | 1.1.1.3.1.4.5 | Model Material Risk Aggregation Prepared | milestone | 0d | 2015-07-28 | 2015-07-28 | 98d |  | start no earlier than 2015-07-28 |  |  |
| 109 | 1.1.1.3.1.5 | **Liquidity/Market Material Risk Aggregation** |  | 20d | 2015-07-01 | 2015-07-28 |  |  |  |  |  |
| 110 | 1.1.1.3.1.5.1 | ERM disseminates Workshop Pre-Read Materials to Risk Managers |  | 8d? | 2015-07-01 | 2015-07-10 | 109d |  | finish no earlier than 2015-07-10 |  |  |
| 111 | 1.1.1.3.1.5.2 | Risk Manager conducts Pre-workshop Enrichment and Aggregation activities |  | 5d? | 2015-07-13 | 2015-07-17 | 104d |  | finish no earlier than 2015-07-17 |  |  |
| 112 | 1.1.1.3.1.5.3 | ERM facilitates Aggregation and Enrichment Workshop |  | 5d? | 2015-07-20 | 2015-07-24 | 99d |  | finish no earlier than 2015-07-24 |  |  |
| 113 | 1.1.1.3.1.5.4 | Risk Manager presents inventory to level II subcommittee |  | 2d? | 2015-07-27 | 2015-07-28 | 97d |  | finish no earlier than 2015-07-28 |  |  |
| 114 | 1.1.1.3.1.5.5 | Liquidity/Market Material Risk Aggregation Prepared | milestone | 0d | 2015-07-28 | 2015-07-28 | 98d |  | start no earlier than 2015-07-28 |  |  |
| 115 | 1.1.1.3.1.6 | **Reputational/Strategic Material Risk Aggregation** |  | 20d | 2015-07-01 | 2015-07-28 |  |  |  |  |  |
| 116 | 1.1.1.3.1.6.1 | ERM disseminates Workshop Pre-Read Materials to Risk Managers |  | 8d? | 2015-07-01 | 2015-07-10 | 109d |  | finish no earlier than 2015-07-10 |  |  |
| 117 | 1.1.1.3.1.6.2 | Risk Manager conducts Pre-workshop Enrichment and Aggregation activities |  | 5d? | 2015-07-13 | 2015-07-17 | 104d |  | finish no earlier than 2015-07-17 |  |  |
| 118 | 1.1.1.3.1.6.3 | ERM facilitates Aggregation and Enrichment Workshop |  | 5d? | 2015-07-20 | 2015-07-24 | 99d |  | finish no earlier than 2015-07-24 |  |  |
| 119 | 1.1.1.3.1.6.4 | Risk Manager presents inventory to level II subcommittee |  | 2d? | 2015-07-27 | 2015-07-28 | 97d |  | finish no earlier than 2015-07-28 |  |  |
| 120 | 1.1.1.3.1.6.5 | Reputational/Strategic Material Risk Aggregation Prepared | milestone | 0d | 2015-07-28 | 2015-07-28 | 98d | 0d | start no earlier than 2015-07-28 |  |  |
| 121 | 1.1.1.3.2 | Conduct SBNA Top Down Review |  | 25d | 2015-07-28 | 2015-08-31 | 73d |  | start no earlier than 2015-07-28 | R. Alhadeff/M. Carbone | 200h |
| 122 | 1.1.1.3.3 | Present Results to SBNA ERMC |  | 25d | 2015-07-28 | 2015-08-31 | 73d |  | start no earlier than 2015-07-28 | R. Alhadeff/M. Carbone | 200h |
| 123 | 1.1.1.3.4 | Present Results to SBNA BERC |  | 25d | 2015-07-28 | 2015-08-31 | 73d |  | start no earlier than 2015-07-28 | R. Alhadeff/M. Carbone | 200h |

Notes:
- 121: no owner name in Excel template

| ID | WBS | Task | Type | Duration | Start | Finish | Total slack | Constraint | Resources | Work | Execution | Tracking |
| --- | --- | --- | --- | --- | --- | --- | --- | --- | --- | --- | --- | --- |
| 124 | 1.1.1.4 | **SCUSA - Business Entity Material Risk Program** |  | 68d | 2015-05-28 | 2015-08-31 |  |  | J. Smith/T. Ploetz | 1144h | T. Ploetz | J. Smith |
| 125 | 1.1.1.4.1 | **SCUSA Aggregation Workshops** |  | 20d | 2015-07-01 | 2015-07-28 |  |  |  |  | T. Ploetz | J. Smith |
| 126 | 1.1.1.4.1.1 | **Credit Risk Aggregation** |  | 20d | 2015-07-01 | 2015-07-28 |  |  |  |  | T. Ploetz | J. Smith |
| 127 | 1.1.1.4.1.1.1 | ERM disseminates Workshop Pre-Read Materials to Risk Managers |  | 8d? | 2015-07-01 | 2015-07-10 | 109d | finish no earlier than 2015-07-10 |  |  | T. Ploetz | J. Smith |
| 128 | 1.1.1.4.1.1.2 | Risk Manager conducts Pre-workshop Enrichment and Aggregation activities |  | 5d? | 2015-07-13 | 2015-07-17 | 104d | finish no earlier than 2015-07-17 |  |  | T. Ploetz | J. Smith |
| 129 | 1.1.1.4.1.1.3 | ERM facilitates Aggregation and Enrichment Workshop |  | 5d? | 2015-07-20 | 2015-07-24 | 99d | finish no earlier than 2015-07-24 |  |  | T. Ploetz | J. Smith |
| 130 | 1.1.1.4.1.1.4 | Risk Manager presents inventory to level II subcommittee |  | 2d? | 2015-07-27 | 2015-07-28 | 97d | finish no earlier than 2015-07-28 |  |  | T. Ploetz | J. Smith |
| 131 | 1.1.1.4.1.1.5 | Credit Risk Aggregation Prepared | milestone | 0d | 2015-07-28 | 2015-07-28 | 98d | start no earlier than 2015-07-28 |  |  |  |  |
| 132 | 1.1.1.4.1.2 | **Operational Risk Material Risk Aggregation** |  | 20d | 2015-07-01 | 2015-07-28 |  |  |  |  | T. Ploetz | J. Smith |
| 133 | 1.1.1.4.1.2.1 | ERM disseminates Workshop Pre-Read Materials to Risk Managers |  | 8d? | 2015-07-01 | 2015-07-10 | 109d | finish no earlier than 2015-07-10 |  |  | T. Ploetz | J. Smith |
| 134 | 1.1.1.4.1.2.2 | Risk Manager conducts Pre-workshop Enrichment and Aggregation activities |  | 5d? | 2015-07-13 | 2015-07-17 | 104d | finish no earlier than 2015-07-17 |  |  | T. Ploetz | J. Smith |
| 135 | 1.1.1.4.1.2.3 | ERM facilitates Aggregation and Enrichment Workshop |  | 5d? | 2015-07-20 | 2015-07-24 | 99d | finish no earlier than 2015-07-24 |  |  | T. Ploetz | J. Smith |
| 136 | 1.1.1.4.1.2.4 | Risk Manager presents inventory to level II subcommittee |  | 2d? | 2015-07-27 | 2015-07-28 | 97d | finish no earlier than 2015-07-28 |  |  | T. Ploetz | J. Smith |
| 137 | 1.1.1.4.1.2.5 | Operational Risk Material Risk Aggregation Prepared | milestone | 0d | 2015-07-28 | 2015-07-28 | 98d | start no earlier than 2015-07-28 |  |  |  |  |
| 138 | 1.1.1.4.1.3 | **Compliance Material Risk Aggregation** |  | 20d | 2015-07-01 | 2015-07-28 |  |  |  |  | T. Ploetz | J. Smith |
| 139 | 1.1.1.4.1.3.1 | ERM disseminates Workshop Pre-Read Materials to Risk Managers |  | 8d? | 2015-07-01 | 2015-07-10 | 109d | finish no earlier than 2015-07-10 |  |  | T. Ploetz | J. Smith |
| 140 | 1.1.1.4.1.3.2 | Risk Manager conducts Pre-workshop Enrichment and Aggregation activities |  | 5d? | 2015-07-13 | 2015-07-17 | 104d | finish no earlier than 2015-07-17 |  |  | T. Ploetz | J. Smith |
| 141 | 1.1.1.4.1.3.3 | ERM facilitates Aggregation and Enrichment Workshop |  | 5d? | 2015-07-20 | 2015-07-24 | 99d | finish no earlier than 2015-07-24 |  |  | T. Ploetz | J. Smith |
| 142 | 1.1.1.4.1.3.4 | Risk Manager presents inventory to level II subcommittee |  | 2d? | 2015-07-27 | 2015-07-28 | 97d | finish no earlier than 2015-07-28 |  |  | T. Ploetz | J. Smith |
| 143 | 1.1.1.4.1.3.5 | Compliance Material Risk Aggregation Prepared | milestone | 0d | 2015-07-28 | 2015-07-28 | 98d | start no earlier than 2015-07-28 |  |  |  |  |
| 144 | 1.1.1.4.1.4 | **Model Material Risk Aggregation** |  | 20d | 2015-07-01 | 2015-07-28 |  |  |  |  | T. Ploetz | J. Smith |
| 145 | 1.1.1.4.1.4.1 | ERM disseminates Workshop Pre-Read Materials to Risk Managers |  | 8d? | 2015-07-01 | 2015-07-10 | 109d | finish no earlier than 2015-07-10 |  |  | T. Ploetz | J. Smith |
| 146 | 1.1.1.4.1.4.2 | Risk Manager conducts Pre-workshop Enrichment and Aggregation activities |  | 5d? | 2015-07-13 | 2015-07-17 | 104d | finish no earlier than 2015-07-17 |  |  | T. Ploetz | J. Smith |
| 147 | 1.1.1.4.1.4.3 | ERM facilitates Aggregation and Enrichment Workshop |  | 5d? | 2015-07-20 | 2015-07-24 | 99d | finish no earlier than 2015-07-24 |  |  | T. Ploetz | J. Smith |
| 148 | 1.1.1.4.1.4.4 | Risk Manager presents inventory to level II subcommittee |  | 2d? | 2015-07-27 | 2015-07-28 | 97d | finish no earlier than 2015-07-28 |  |  | T. Ploetz | J. Smith |
| 149 | 1.1.1.4.1.4.5 | Model Material Risk Aggregation Prepared | milestone | 0d | 2015-07-28 | 2015-07-28 | 98d | start no earlier than 2015-07-28 |  |  |  |  |

| ID | WBS | Task | Type | Duration | Start | Finish | Total slack | Free slack | Constraint | Resources | Work | Execution | Tracking |
| --- | --- | --- | --- | --- | --- | --- | --- | --- | --- | --- | --- | --- | --- |
| 150 | 1.1.1.4.1.5 | **Liquidity/Market Material Risk Aggregation** |  | 20d | 2015-07-01 | 2015-07-28 |  |  |  |  |  | T. Ploetz | J. Smith |
| 151 | 1.1.1.4.1.5.1 | ERM disseminates Workshop Pre-Read Materials to Risk Managers |  | 8d? | 2015-07-01 | 2015-07-10 | 109d |  | finish no earlier than 2015-07-10 |  |  | T. Ploetz | J. Smith |
| 152 | 1.1.1.4.1.5.2 | Risk Manager conducts Pre-workshop Enrichment and Aggregation activities |  | 5d? | 2015-07-13 | 2015-07-17 | 104d |  | finish no earlier than 2015-07-17 |  |  | T. Ploetz | J. Smith |
| 153 | 1.1.1.4.1.5.3 | ERM facilitates Aggregation and Enrichment Workshop |  | 5d? | 2015-07-20 | 2015-07-24 | 99d |  | finish no earlier than 2015-07-24 |  |  | T. Ploetz | J. Smith |
| 154 | 1.1.1.4.1.5.4 | Risk Manager presents inventory to level II subcommittee |  | 2d? | 2015-07-27 | 2015-07-28 | 97d |  | finish no earlier than 2015-07-28 |  |  | T. Ploetz | J. Smith |
| 155 | 1.1.1.4.1.5.5 | Liquidity/Market Material Risk Aggregation Prepared | milestone | 0d | 2015-07-28 | 2015-07-28 | 98d |  | start no earlier than 2015-07-28 |  |  |  |  |
| 156 | 1.1.1.4.1.6 | **Reputational/Strategic Material Risk Aggregation** |  | 20d | 2015-07-01 | 2015-07-28 |  |  |  |  |  | T. Ploetz | J. Smith |
| 157 | 1.1.1.4.1.6.1 | ERM disseminates Workshop Pre-Read Materials to Risk Managers |  | 8d? | 2015-07-01 | 2015-07-10 | 109d |  | finish no earlier than 2015-07-10 |  |  | T. Ploetz | J. Smith |
| 158 | 1.1.1.4.1.6.2 | Risk Manager conducts Pre-workshop Enrichment and Aggregation activities |  | 5d? | 2015-07-13 | 2015-07-17 | 104d |  | finish no earlier than 2015-07-17 |  |  | T. Ploetz | J. Smith |
| 159 | 1.1.1.4.1.6.3 | ERM facilitates Aggregation and Enrichment Workshop |  | 5d? | 2015-07-20 | 2015-07-24 | 99d |  | finish no earlier than 2015-07-24 |  |  | T. Ploetz | J. Smith |
| 160 | 1.1.1.4.1.6.4 | Risk Manager presents inventory to level II subcommittee |  | 2d? | 2015-07-27 | 2015-07-28 | 97d |  | finish no earlier than 2015-07-28 |  |  | T. Ploetz | J. Smith |
| 161 | 1.1.1.4.1.6.5 | Reputational/Strategic Material Risk Aggregation Prepared | milestone | 0d | 2015-07-28 | 2015-07-28 | 98d | 0d | start no earlier than 2015-07-28 |  |  |  |  |
| 162 | 1.1.1.4.2 | Conduct SCUSA Top Down Review |  | 25d | 2015-07-28 | 2015-08-31 | 73d |  | finish no earlier than 2015-08-31 | J. Smith/T. Ploetz | 200h | T. Ploetz | J. Smith |
| 163 | 1.1.1.4.3 | Present Results to SCUSA ERMC |  | 25d | 2015-07-28 | 2015-08-31 | 73d |  | finish no earlier than 2015-08-31 | J. Smith/T. Ploetz | 200h | T. Ploetz | J. Smith |
| 164 | 1.1.1.4.4 | Present Results to SCUSA BERC |  | 25d | 2015-07-28 | 2015-08-31 | 73d |  | finish no earlier than 2015-08-31 | J. Smith/T. Ploetz | 200h | T. Ploetz | J. Smith |
| 165 | 1.1.1.5 | **New York Santander Investment Securities (SIS) - Business Entity Material Risk Program** |  | 68d | 2015-05-28 | 2015-08-31 |  |  |  | M. Murphy | 1144h | J. Bathon | M. Murphy |
| 166 | 1.1.1.5.1 | **NY SIS Aggregation Workshops** |  | 20d? | 2015-07-01 | 2015-07-28 | 24d |  |  |  |  | J. Bathon | M. Murphy |
| 167 | 1.1.1.5.1.1 | **Credit Risk Aggregation** |  | 20d? | 2015-07-01 | 2015-07-28 | 24d |  |  |  |  | J. Bathon | M. Murphy |
| 168 | 1.1.1.5.1.1.1 | ERM disseminates Workshop Pre-Read Materials to Risk Managers |  | 8d? | 2015-07-01 | 2015-07-10 | 36d |  | finish no earlier than 2015-07-10 |  |  | J. Bathon | M. Murphy |
| 169 | 1.1.1.5.1.1.2 | Risk Manager conducts Pre-workshop Enrichment and Aggregation activities |  | 5d? | 2015-07-13 | 2015-07-17 | 31d |  | finish no earlier than 2015-07-17 |  |  | J. Bathon | M. Murphy |
| 170 | 1.1.1.5.1.1.3 | ERM facilitates Aggregation and Enrichment Workshop |  | 5d? | 2015-07-20 | 2015-07-24 | 26d |  | finish no earlier than 2015-07-24 |  |  | J. Bathon | M. Murphy |
| 171 | 1.1.1.5.1.1.4 | Risk Manager presents inventory to level II subcommittee |  | 2d? | 2015-07-27 | 2015-07-28 | 24d |  | finish no earlier than 2015-07-28 |  |  | J. Bathon | M. Murphy |
| 172 | 1.1.1.5.1.1.5 | Credit Risk Aggregation Prepared | milestone | 0d | 2015-07-28 | 2015-07-28 | 25d |  | start no earlier than 2015-07-28 |  |  |  |  |
| 173 | 1.1.1.5.1.2 | **Operational Risk Material Risk Aggregation** |  | 20d? | 2015-07-01 | 2015-07-28 | 24d |  |  |  |  | J. Bathon | M. Murphy |
| 174 | 1.1.1.5.1.2.1 | ERM disseminates Workshop Pre-Read Materials to Risk Managers |  | 8d? | 2015-07-01 | 2015-07-10 | 36d |  | finish no earlier than 2015-07-10 |  |  | J. Bathon | M. Murphy |
| 175 | 1.1.1.5.1.2.2 | Risk Manager conducts Pre-workshop Enrichment and Aggregation activities |  | 5d? | 2015-07-13 | 2015-07-17 | 31d |  | finish no earlier than 2015-07-17 |  |  | J. Bathon | M. Murphy |
| 176 | 1.1.1.5.1.2.3 | ERM facilitates Aggregation and Enrichment Workshop |  | 5d? | 2015-07-20 | 2015-07-24 | 26d |  | finish no earlier than 2015-07-24 |  |  | J. Bathon | M. Murphy |
| 177 | 1.1.1.5.1.2.4 | Risk Manager presents inventory to level II subcommittee |  | 2d? | 2015-07-27 | 2015-07-28 | 24d |  | finish no earlier than 2015-07-28 |  |  | J. Bathon | M. Murphy |
| 178 | 1.1.1.5.1.2.5 | Operational Risk Material Risk Aggregation Prepared | milestone | 0d | 2015-07-28 | 2015-07-28 | 25d |  | start no earlier than 2015-07-28 |  |  |  |  |

| ID | WBS | Task | Type | Duration | Start | Finish | Total slack | Free slack | Constraint | Resources | Work | Execution | Tracking |
| --- | --- | --- | --- | --- | --- | --- | --- | --- | --- | --- | --- | --- | --- |
| 179 | 1.1.1.5.1.3 | **Compliance Material Risk Aggregation** |  | 20d? | 2015-07-01 | 2015-07-28 | 24d |  |  |  |  | J. Bathon | M. Murphy |
| 180 | 1.1.1.5.1.3.1 | ERM disseminates Workshop Pre-Read Materials to Risk Managers |  | 8d? | 2015-07-01 | 2015-07-10 | 36d |  | finish no earlier than 2015-07-10 |  |  | J. Bathon | M. Murphy |
| 181 | 1.1.1.5.1.3.2 | Risk Manager conducts Pre-workshop Enrichment and Aggregation activities |  | 5d? | 2015-07-13 | 2015-07-17 | 31d |  | finish no earlier than 2015-07-17 |  |  | J. Bathon | M. Murphy |
| 182 | 1.1.1.5.1.3.3 | ERM facilitates Aggregation and Enrichment Workshop |  | 5d? | 2015-07-20 | 2015-07-24 | 26d |  | finish no earlier than 2015-07-24 |  |  | J. Bathon | M. Murphy |
| 183 | 1.1.1.5.1.3.4 | Risk Manager presents inventory to level II subcommittee |  | 2d? | 2015-07-27 | 2015-07-28 | 24d |  | finish no earlier than 2015-07-28 |  |  | J. Bathon | M. Murphy |
| 184 | 1.1.1.5.1.3.5 | Compliance Material Risk Aggregation Prepared | milestone | 0d | 2015-07-28 | 2015-07-28 | 25d |  | start no earlier than 2015-07-28 |  |  |  |  |
| 185 | 1.1.1.5.1.4 | **Model Material Risk Aggregation** |  | 20d? | 2015-07-01 | 2015-07-28 | 24d |  |  |  |  | J. Bathon | M. Murphy |
| 186 | 1.1.1.5.1.4.1 | ERM disseminates Workshop Pre-Read Materials to Risk Managers |  | 8d? | 2015-07-01 | 2015-07-10 | 36d |  | finish no earlier than 2015-07-10 |  |  | J. Bathon | M. Murphy |
| 187 | 1.1.1.5.1.4.2 | Risk Manager conducts Pre-workshop Enrichment and Aggregation activities |  | 5d? | 2015-07-13 | 2015-07-17 | 31d |  | finish no earlier than 2015-07-17 |  |  | J. Bathon | M. Murphy |
| 188 | 1.1.1.5.1.4.3 | ERM facilitates Aggregation and Enrichment Workshop |  | 5d? | 2015-07-20 | 2015-07-24 | 26d |  | finish no earlier than 2015-07-24 |  |  | J. Bathon | M. Murphy |
| 189 | 1.1.1.5.1.4.4 | Risk Manager presents inventory to level II subcommittee |  | 2d? | 2015-07-27 | 2015-07-28 | 24d |  | finish no earlier than 2015-07-28 |  |  | J. Bathon | M. Murphy |
| 190 | 1.1.1.5.1.4.5 | Model Material Risk Aggregation Prepared | milestone | 0d | 2015-07-28 | 2015-07-28 | 25d |  | start no earlier than 2015-07-28 |  |  |  |  |
| 191 | 1.1.1.5.1.5 | **Liquidity/Market Material Risk Aggregation** |  | 20d? | 2015-07-01 | 2015-07-28 | 24d |  |  |  |  | J. Bathon | M. Murphy |
| 192 | 1.1.1.5.1.5.1 | ERM disseminates Workshop Pre-Read Materials to Risk Managers |  | 8d? | 2015-07-01 | 2015-07-10 | 36d |  | finish no earlier than 2015-07-10 |  |  | J. Bathon | M. Murphy |
| 193 | 1.1.1.5.1.5.2 | Risk Manager conducts Pre-workshop Enrichment and Aggregation activities |  | 5d? | 2015-07-13 | 2015-07-17 | 31d |  | finish no earlier than 2015-07-17 |  |  | J. Bathon | M. Murphy |
| 194 | 1.1.1.5.1.5.3 | ERM facilitates Aggregation and Enrichment Workshop |  | 5d? | 2015-07-20 | 2015-07-24 | 26d |  | finish no earlier than 2015-07-24 |  |  | J. Bathon | M. Murphy |
| 195 | 1.1.1.5.1.5.4 | Risk Manager presents inventory to level II subcommittee |  | 2d? | 2015-07-27 | 2015-07-28 | 24d |  | finish no earlier than 2015-07-28 |  |  | J. Bathon | M. Murphy |
| 196 | 1.1.1.5.1.5.5 | Liquidity/Market Material Risk Aggregation Prepared | milestone | 0d | 2015-07-28 | 2015-07-28 | 25d |  | start no earlier than 2015-07-28 |  |  |  |  |
| 197 | 1.1.1.5.1.6 | **Reputational/Strategic Material Risk Aggregation** |  | 20d? | 2015-07-01 | 2015-07-28 | 24d |  |  |  |  | J. Bathon | M. Murphy |
| 198 | 1.1.1.5.1.6.1 | ERM disseminates Workshop Pre-Read Materials to Risk Managers |  | 8d? | 2015-07-01 | 2015-07-10 | 36d |  | finish no earlier than 2015-07-10 |  |  | J. Bathon | M. Murphy |
| 199 | 1.1.1.5.1.6.2 | Risk Manager conducts Pre-workshop Enrichment and Aggregation activities |  | 5d? | 2015-07-13 | 2015-07-17 | 31d |  | finish no earlier than 2015-07-17 |  |  | J. Bathon | M. Murphy |
| 200 | 1.1.1.5.1.6.3 | ERM facilitates Aggregation and Enrichment Workshop |  | 5d? | 2015-07-20 | 2015-07-24 | 26d |  | finish no earlier than 2015-07-24 |  |  | J. Bathon | M. Murphy |
| 201 | 1.1.1.5.1.6.4 | Risk Manager presents inventory to level II subcommittee |  | 2d? | 2015-07-27 | 2015-07-28 | 24d |  | finish no earlier than 2015-07-28 |  |  | J. Bathon | M. Murphy |
| 202 | 1.1.1.5.1.6.5 | Reputational/Strategic Material Risk Aggregation Prepared | milestone | 0d | 2015-07-28 | 2015-07-28 | 25d | 0d | start no earlier than 2015-07-28 |  |  |  |  |
| 203 | 1.1.1.5.2 | Conduct NY SIS Top Down Review |  | 25d | 2015-07-28 | 2015-08-31 | 73d |  | start no earlier than 2015-07-28 | M. Murphy | 200h | J. Bathon | M. Murphy |
| 204 | 1.1.1.5.3 | Present Results to NY SIS ERMC |  | 25d | 2015-07-28 | 2015-08-31 | 73d |  | finish no earlier than 2015-08-31 | M. Murphy | 200h | J. Bathon | M. Murphy |
| 205 | 1.1.1.5.4 | Present Results to NY SIS BERC |  | 25d | 2015-07-28 | 2015-08-31 | 73d |  | finish no earlier than 2015-08-31 | M. Murphy | 200h | J. Bathon | M. Murphy |

| ID | WBS | Task | Type | Duration | Start | Finish | Total slack | Constraint | Resources | Work | Execution | Tracking |
| --- | --- | --- | --- | --- | --- | --- | --- | --- | --- | --- | --- | --- |
| 206 | 1.1.1.6 | **Puerto Rico - Business Entity Material Risk Program** |  | 68d | 2015-05-28 | 2015-08-31 |  |  | D. Fabrizio | 1144h | J. Jurado | D. Fabricio |
| 207 | 1.1.1.6.1 | **Puerto Rico - Santander Bancorp Aggregation Workshops** |  | 20d | 2015-07-01 | 2015-07-28 |  |  |  |  | J. Jurado | D. Fabricio |
| 208 | 1.1.1.6.1.1 | **Credit Risk Aggregation** |  | 20d | 2015-07-01 | 2015-07-28 |  |  |  |  | J. Jurado | D. Fabricio |
| 209 | 1.1.1.6.1.1.1 | ERM disseminates Workshop Pre-Read Materials to Risk Managers |  | 8d? | 2015-07-01 | 2015-07-10 | 109d | finish no earlier than 2015-07-10 |  |  | J. Jurado | D. Fabricio |
| 210 | 1.1.1.6.1.1.2 | Risk Manager conducts Pre-workshop Enrichment and Aggregation activities |  | 5d? | 2015-07-13 | 2015-07-17 | 104d | finish no earlier than 2015-07-17 |  |  | J. Jurado | D. Fabricio |
| 211 | 1.1.1.6.1.1.3 | ERM facilitates Aggregation and Enrichment Workshop |  | 5d? | 2015-07-20 | 2015-07-24 | 99d | finish no earlier than 2015-07-24 |  |  | J. Jurado | D. Fabricio |
| 212 | 1.1.1.6.1.1.4 | Risk Manager presents inventory to level II subcommittee |  | 2d? | 2015-07-27 | 2015-07-28 | 97d | finish no earlier than 2015-07-28 |  |  | J. Jurado | D. Fabricio |
| 213 | 1.1.1.6.1.1.5 | Credit Risk Aggregation Prepared | milestone | 0d | 2015-07-28 | 2015-07-28 | 98d | start no earlier than 2015-07-28 |  |  |  |  |
| 214 | 1.1.1.6.1.2 | **Operational Risk Material Risk Aggregation** |  | 20d | 2015-07-01 | 2015-07-28 |  |  |  |  | J. Jurado | D. Fabricio |
| 215 | 1.1.1.6.1.2.1 | ERM disseminates Workshop Pre-Read Materials to Risk Managers |  | 8d? | 2015-07-01 | 2015-07-10 | 109d | finish no earlier than 2015-07-10 |  |  | J. Jurado | D. Fabricio |
| 216 | 1.1.1.6.1.2.2 | Risk Manager conducts Pre-workshop Enrichment and Aggregation activities |  | 5d? | 2015-07-13 | 2015-07-17 | 104d | finish no earlier than 2015-07-17 |  |  | J. Jurado | D. Fabricio |
| 217 | 1.1.1.6.1.2.3 | ERM facilitates Aggregation and Enrichment Workshop |  | 5d? | 2015-07-20 | 2015-07-24 | 99d | finish no earlier than 2015-07-24 |  |  | J. Jurado | D. Fabricio |
| 218 | 1.1.1.6.1.2.4 | Risk Manager presents inventory to level II subcommittee |  | 2d? | 2015-07-27 | 2015-07-28 | 97d | finish no earlier than 2015-07-28 |  |  | J. Jurado | D. Fabricio |
| 219 | 1.1.1.6.1.2.5 | Operational Risk Material Risk Aggregation Prepared | milestone | 0d | 2015-07-28 | 2015-07-28 | 98d | start no earlier than 2015-07-28 |  |  |  |  |
| 220 | 1.1.1.6.1.3 | **Compliance Material Risk Aggregation** |  | 20d | 2015-07-01 | 2015-07-28 |  |  |  |  | J. Jurado | D. Fabricio |
| 221 | 1.1.1.6.1.3.1 | ERM disseminates Workshop Pre-Read Materials to Risk Managers |  | 8d? | 2015-07-01 | 2015-07-10 | 109d | finish no earlier than 2015-07-10 |  |  | J. Jurado | D. Fabricio |
| 222 | 1.1.1.6.1.3.2 | Risk Manager conducts Pre-workshop Enrichment and Aggregation activities |  | 5d? | 2015-07-13 | 2015-07-17 | 104d | finish no earlier than 2015-07-17 |  |  | J. Jurado | D. Fabricio |
| 223 | 1.1.1.6.1.3.3 | ERM facilitates Aggregation and Enrichment Workshop |  | 5d? | 2015-07-20 | 2015-07-24 | 99d | finish no earlier than 2015-07-24 |  |  | J. Jurado | D. Fabricio |
| 224 | 1.1.1.6.1.3.4 | Risk Manager presents inventory to level II subcommittee |  | 2d? | 2015-07-27 | 2015-07-28 | 97d | finish no earlier than 2015-07-28 |  |  | J. Jurado | D. Fabricio |
| 225 | 1.1.1.6.1.3.5 | Compliance Material Risk Aggregation Prepared | milestone | 0d | 2015-07-28 | 2015-07-28 | 98d | start no earlier than 2015-07-28 |  |  |  |  |
| 226 | 1.1.1.6.1.4 | **Model Material Risk Aggregation** |  | 20d | 2015-07-01 | 2015-07-28 |  |  |  |  | J. Jurado | D. Fabricio |
| 227 | 1.1.1.6.1.4.1 | ERM disseminates Workshop Pre-Read Materials to Risk Managers |  | 8d? | 2015-07-01 | 2015-07-10 | 109d | finish no earlier than 2015-07-10 |  |  | J. Jurado | D. Fabricio |
| 228 | 1.1.1.6.1.4.2 | Risk Manager conducts Pre-workshop Enrichment and Aggregation activities |  | 5d? | 2015-07-13 | 2015-07-17 | 104d | finish no earlier than 2015-07-17 |  |  | J. Jurado | D. Fabricio |
| 229 | 1.1.1.6.1.4.3 | ERM facilitates Aggregation and Enrichment Workshop |  | 5d? | 2015-07-20 | 2015-07-24 | 99d | finish no earlier than 2015-07-24 |  |  | J. Jurado | D. Fabricio |
| 230 | 1.1.1.6.1.4.4 | Risk Manager presents inventory to level II subcommittee |  | 2d? | 2015-07-27 | 2015-07-28 | 97d | finish no earlier than 2015-07-28 |  |  | J. Jurado | D. Fabricio |
| 231 | 1.1.1.6.1.4.5 | Model Material Risk Aggregation Prepared | milestone | 0d | 2015-07-28 | 2015-07-28 | 98d | start no earlier than 2015-07-28 |  |  |  |  |

| ID | WBS | Task | Type | Duration | Start | Finish | Total slack | Free slack | Constraint | Resources | Work | Execution | Tracking |
| --- | --- | --- | --- | --- | --- | --- | --- | --- | --- | --- | --- | --- | --- |
| 232 | 1.1.1.6.1.5 | **Liquidity/Market Material Risk Aggregation** |  | 20d | 2015-07-01 | 2015-07-28 |  |  |  |  |  | J. Jurado | D. Fabricio |
| 233 | 1.1.1.6.1.5.1 | ERM disseminates Workshop Pre-Read Materials to Risk Managers |  | 8d? | 2015-07-01 | 2015-07-10 | 109d |  | finish no earlier than 2015-07-10 |  |  | J. Jurado | D. Fabricio |
| 234 | 1.1.1.6.1.5.2 | Risk Manager conducts Pre-workshop Enrichment and Aggregation activities |  | 5d? | 2015-07-13 | 2015-07-17 | 104d |  | finish no earlier than 2015-07-17 |  |  | J. Jurado | D. Fabricio |
| 235 | 1.1.1.6.1.5.3 | ERM facilitates Aggregation and Enrichment Workshop |  | 5d? | 2015-07-20 | 2015-07-24 | 99d |  | finish no earlier than 2015-07-24 |  |  | J. Jurado | D. Fabricio |
| 236 | 1.1.1.6.1.5.4 | Risk Manager presents inventory to level II subcommittee |  | 2d? | 2015-07-27 | 2015-07-28 | 97d |  | finish no earlier than 2015-07-28 |  |  | J. Jurado | D. Fabricio |
| 237 | 1.1.1.6.1.5.5 | Liquidity/Market Material Risk Aggregation Prepared | milestone | 0d | 2015-07-28 | 2015-07-28 | 98d |  | start no earlier than 2015-07-28 |  |  |  |  |
| 238 | 1.1.1.6.1.6 | **Reputational/Strategic Material Risk Aggregation** |  | 20d | 2015-07-01 | 2015-07-28 |  |  |  |  |  | J. Jurado | D. Fabricio |
| 239 | 1.1.1.6.1.6.1 | ERM disseminates Workshop Pre-Read Materials to Risk Managers |  | 8d? | 2015-07-01 | 2015-07-10 | 109d |  | finish no earlier than 2015-07-10 |  |  | J. Jurado | D. Fabricio |
| 240 | 1.1.1.6.1.6.2 | Risk Manager conducts Pre-workshop Enrichment and Aggregation activities |  | 5d? | 2015-07-13 | 2015-07-17 | 104d |  | finish no earlier than 2015-07-17 |  |  | J. Jurado | D. Fabricio |
| 241 | 1.1.1.6.1.6.3 | ERM facilitates Aggregation and Enrichment Workshop |  | 5d? | 2015-07-20 | 2015-07-24 | 99d |  | finish no earlier than 2015-07-24 |  |  | J. Jurado | D. Fabricio |
| 242 | 1.1.1.6.1.6.4 | Risk Manager presents inventory to level II subcommittee |  | 2d? | 2015-07-27 | 2015-07-28 | 97d |  | finish no earlier than 2015-07-28 |  |  | J. Jurado | D. Fabricio |
| 243 | 1.1.1.6.1.6.5 | Reputational/Strategic Material Risk Aggregation Prepared | milestone | 0d | 2015-07-28 | 2015-07-28 | 98d | 0d | start no earlier than 2015-07-28 |  |  |  |  |
| 244 | 1.1.1.6.2 | Conduct PR Santander Bancorp Top Down Review |  | 25d | 2015-07-28 | 2015-08-31 | 73d |  | start no earlier than 2015-07-28 | D. Fabrizio | 200h | J. Jurado | D. Fabricio |
| 245 | 1.1.1.6.3 | Present Results to PR Santander Bancorp ERMC |  | 25d | 2015-07-28 | 2015-08-31 | 73d |  | start no earlier than 2015-07-28 | D. Fabrizio | 200h | J. Jurado | D. Fabricio |
| 246 | 1.1.1.6.4 | Present Results to PR Santander Bancorp BERC |  | 25d | 2015-07-28 | 2015-08-31 | 73d |  | start no earlier than 2015-07-28 | D. Fabrizio | 200h | J. Jurado | D. Fabricio |
| 247 | 1.1.1.7 | **Miami - Business Entity Material Risk Program** |  | 68d | 2015-05-28 | 2015-08-31 |  |  |  | L. Madariaga | 1144h | P. Prado | L. Madargia |
| 248 | 1.1.1.7.1 | **Miami Aggregation Workshops** |  | 20d | 2015-07-01 | 2015-07-28 |  |  |  |  |  | P. Prado | L. Madargia |
| 249 | 1.1.1.7.1.1 | **Credit Risk Aggregation** |  | 20d | 2015-07-01 | 2015-07-28 |  |  |  |  |  | P. Prado | L. Madargia |
| 250 | 1.1.1.7.1.1.1 | ERM disseminates Workshop Pre-Read Materials to Risk Managers |  | 8d? | 2015-07-01 | 2015-07-10 | 109d |  | finish no earlier than 2015-07-10 |  |  | P. Prado | L. Madargia |
| 251 | 1.1.1.7.1.1.2 | Risk Manager conducts Pre-workshop Enrichment and Aggregation activities |  | 5d? | 2015-07-13 | 2015-07-17 | 104d |  | finish no earlier than 2015-07-17 |  |  | P. Prado | L. Madargia |
| 252 | 1.1.1.7.1.1.3 | ERM facilitates Aggregation and Enrichment Workshop |  | 5d? | 2015-07-20 | 2015-07-24 | 99d |  | finish no earlier than 2015-07-24 |  |  | P. Prado | L. Madargia |
| 253 | 1.1.1.7.1.1.4 | Risk Manager presents inventory to level II subcommittee |  | 2d? | 2015-07-27 | 2015-07-28 | 97d |  | finish no earlier than 2015-07-28 |  |  | P. Prado | L. Madargia |
| 254 | 1.1.1.7.1.1.5 | Credit Risk Aggregation Prepared | milestone | 0d | 2015-07-28 | 2015-07-28 | 98d |  | start no earlier than 2015-07-28 |  |  |  |  |
| 255 | 1.1.1.7.1.2 | **Operational Risk Material Risk Aggregation** |  | 20d | 2015-07-01 | 2015-07-28 |  |  |  |  |  | P. Prado | L. Madargia |
| 256 | 1.1.1.7.1.2.1 | ERM disseminates Workshop Pre-Read Materials to Risk Managers |  | 8d? | 2015-07-01 | 2015-07-10 | 109d |  | finish no earlier than 2015-07-10 |  |  | P. Prado | L. Madargia |
| 257 | 1.1.1.7.1.2.2 | Risk Manager conducts Pre-workshop Enrichment and Aggregation activities |  | 5d? | 2015-07-13 | 2015-07-17 | 104d |  | finish no earlier than 2015-07-17 |  |  | P. Prado | L. Madargia |
| 258 | 1.1.1.7.1.2.3 | ERM facilitates Aggregation and Enrichment Workshop |  | 5d? | 2015-07-20 | 2015-07-24 | 99d |  | finish no earlier than 2015-07-24 |  |  | P. Prado | L. Madargia |
| 259 | 1.1.1.7.1.2.4 | Risk Manager presents inventory to level II subcommittee |  | 2d? | 2015-07-27 | 2015-07-28 | 97d |  | finish no earlier than 2015-07-28 |  |  | P. Prado | L. Madargia |
| 260 | 1.1.1.7.1.2.5 | Operational Risk Material Risk Aggregation Prepared | milestone | 0d | 2015-07-28 | 2015-07-28 | 98d |  | start no earlier than 2015-07-28 |  |  |  |  |

| ID | WBS | Task | Type | Duration | Start | Finish | Total slack | Free slack | Constraint | Resources | Work | Execution | Tracking |
| --- | --- | --- | --- | --- | --- | --- | --- | --- | --- | --- | --- | --- | --- |
| 261 | 1.1.1.7.1.3 | **Compliance Material Risk Aggregation** |  | 20d | 2015-07-01 | 2015-07-28 |  |  |  |  |  | P. Prado | L. Madargia |
| 262 | 1.1.1.7.1.3.1 | ERM disseminates Workshop Pre-Read Materials to Risk Managers |  | 8d? | 2015-07-01 | 2015-07-10 | 109d |  | finish no earlier than 2015-07-10 |  |  | P. Prado | L. Madargia |
| 263 | 1.1.1.7.1.3.2 | Risk Manager conducts Pre-workshop Enrichment and Aggregation activities |  | 5d? | 2015-07-13 | 2015-07-17 | 104d |  | finish no earlier than 2015-07-17 |  |  | P. Prado | L. Madargia |
| 264 | 1.1.1.7.1.3.3 | ERM facilitates Aggregation and Enrichment Workshop |  | 5d? | 2015-07-20 | 2015-07-24 | 99d |  | finish no earlier than 2015-07-24 |  |  | P. Prado | L. Madargia |
| 265 | 1.1.1.7.1.3.4 | Risk Manager presents inventory to level II subcommittee |  | 2d? | 2015-07-27 | 2015-07-28 | 97d |  | finish no earlier than 2015-07-28 |  |  | P. Prado | L. Madargia |
| 266 | 1.1.1.7.1.3.5 | Compliance Material Risk Aggregation Prepared | milestone | 0d | 2015-07-28 | 2015-07-28 | 98d |  | start no earlier than 2015-07-28 |  |  |  |  |
| 267 | 1.1.1.7.1.4 | **Model Material Risk Aggregation** |  | 20d | 2015-07-01 | 2015-07-28 |  |  |  |  |  | P. Prado | L. Madargia |
| 268 | 1.1.1.7.1.4.1 | ERM disseminates Workshop Pre-Read Materials to Risk Managers |  | 8d? | 2015-07-01 | 2015-07-10 | 109d |  | finish no earlier than 2015-07-10 |  |  | P. Prado | L. Madargia |
| 269 | 1.1.1.7.1.4.2 | Risk Manager conducts Pre-workshop Enrichment and Aggregation activities |  | 5d? | 2015-07-13 | 2015-07-17 | 104d |  | finish no earlier than 2015-07-17 |  |  | P. Prado | L. Madargia |
| 270 | 1.1.1.7.1.4.3 | ERM facilitates Aggregation and Enrichment Workshop |  | 5d? | 2015-07-20 | 2015-07-24 | 99d |  | finish no earlier than 2015-07-24 |  |  | P. Prado | L. Madargia |
| 271 | 1.1.1.7.1.4.4 | Risk Manager presents inventory to level II subcommittee |  | 2d? | 2015-07-27 | 2015-07-28 | 97d |  | finish no earlier than 2015-07-28 |  |  | P. Prado | L. Madargia |
| 272 | 1.1.1.7.1.4.5 | Model Material Risk Aggregation Prepared | milestone | 0d | 2015-07-28 | 2015-07-28 | 98d |  | start no earlier than 2015-07-28 |  |  |  |  |
| 273 | 1.1.1.7.1.5 | **Liquidity/Market Material Risk Aggregation** |  | 20d | 2015-07-01 | 2015-07-28 |  |  |  |  |  | P. Prado | L. Madargia |
| 274 | 1.1.1.7.1.5.1 | ERM disseminates Workshop Pre-Read Materials to Risk Managers |  | 8d? | 2015-07-01 | 2015-07-10 | 109d |  | finish no earlier than 2015-07-10 |  |  | P. Prado | L. Madargia |
| 275 | 1.1.1.7.1.5.2 | Risk Manager conducts Pre-workshop Enrichment and Aggregation activities |  | 5d? | 2015-07-13 | 2015-07-17 | 104d |  | finish no earlier than 2015-07-17 |  |  | P. Prado | L. Madargia |
| 276 | 1.1.1.7.1.5.3 | ERM facilitates Aggregation and Enrichment Workshop |  | 5d? | 2015-07-20 | 2015-07-24 | 99d |  | finish no earlier than 2015-07-24 |  |  | P. Prado | L. Madargia |
| 277 | 1.1.1.7.1.5.4 | Risk Manager presents inventory to level II subcommittee |  | 2d? | 2015-07-27 | 2015-07-28 | 97d |  | finish no earlier than 2015-07-28 |  |  | P. Prado | L. Madargia |
| 278 | 1.1.1.7.1.5.5 | Liquidity/Market Material Risk Aggregation Prepared | milestone | 0d | 2015-07-28 | 2015-07-28 | 98d |  | start no earlier than 2015-07-28 |  |  |  |  |
| 279 | 1.1.1.7.1.6 | **Reputational/Strategic Material Risk Aggregation** |  | 20d | 2015-07-01 | 2015-07-28 |  |  |  |  |  | P. Prado | L. Madargia |
| 280 | 1.1.1.7.1.6.1 | ERM disseminates Workshop Pre-Read Materials to Risk Managers |  | 8d? | 2015-07-01 | 2015-07-10 | 109d |  | finish no earlier than 2015-07-10 |  |  | P. Prado | L. Madargia |
| 281 | 1.1.1.7.1.6.2 | Risk Manager conducts Pre-workshop Enrichment and Aggregation activities |  | 5d? | 2015-07-13 | 2015-07-17 | 104d |  | finish no earlier than 2015-07-17 |  |  | P. Prado | L. Madargia |
| 282 | 1.1.1.7.1.6.3 | ERM facilitates Aggregation and Enrichment Workshop |  | 5d? | 2015-07-20 | 2015-07-24 | 99d |  | finish no earlier than 2015-07-24 |  |  | P. Prado | L. Madargia |
| 283 | 1.1.1.7.1.6.4 | Risk Manager presents inventory to level II subcommittee |  | 2d? | 2015-07-27 | 2015-07-28 | 97d |  | finish no earlier than 2015-07-28 |  |  | P. Prado | L. Madargia |
| 284 | 1.1.1.7.1.6.5 | Reputational/Strategic Material Risk Aggregation Prepared | milestone | 0d | 2015-07-28 | 2015-07-28 | 98d | 0d | start no earlier than 2015-07-28 |  |  |  |  |
| 285 | 1.1.1.7.2 | Conduct Miami Top Down Review |  | 25d | 2015-07-28 | 2015-08-31 | 73d |  | start no earlier than 2015-07-28 | L. Madariaga | 200h | P. Prado | L. Madargia |
| 286 | 1.1.1.7.3 | Present Miami to SCUSA ERMC |  | 25d | 2015-07-28 | 2015-08-31 | 73d |  | finish no earlier than 2015-08-31 | L. Madariaga | 200h | P. Prado | L. Madargia |
| 287 | 1.1.1.7.4 | Present Miami to SCUSA BERC |  | 25d | 2015-07-28 | 2015-08-31 | 73d |  | finish no earlier than 2015-08-31 | L. Madariaga | 200h | P. Prado | L. Madargia |
